# SDK 4.0.1

Schedule from MS Project, 2007-10-29 to 2008-02-14.
NCI

## Calendars

- Standard: Mon-Fri 08:00-12:00, 13:00-17:00; Sat-Sun off. Exceptions (off unless hours are given): 2007-11-29 to 2007-11-30, 2007-12-25, 2008-01-01.

## Resources

| Resource |
| --- |
| Satish |
| Dan |
| Charles |
| Avinash |
| QA |
| CSM |
| Grid |
| Systems |

## Schedule

| ID | WBS | Task | Duration | Start | Finish | Predecessors | Total slack | Free slack | Constraint | Resources | Work |
| --- | --- | --- | --- | --- | --- | --- | --- | --- | --- | --- | --- |
| 1 | 1 | **caCORE SDK 4.0.1** | 75d | 2007-10-29 | 2008-02-14 |  | 0d |  |  |  | 1332h |
| 2 | 1.1 | **Inception** | 6d | 2007-10-29 | 2007-11-05 |  | 0d |  |  |  | 108h |
| 3 | 1.1.1 | 4.0.1 Kickoff meeting | 0.25d | 2007-10-29 | 2007-10-29 |  | 0d |  | start no earlier than 2007-10-29 | Satish; Dan; Charles | 6h |
| 4 | 1.1.2 | Identify high level items | 1d | 2007-10-29 | 2007-10-30 | 3 | 0d |  |  | Satish | 8h |
| 5 | 1.1.3 | Internal review of high level items | 0.25d | 2007-10-30 | 2007-10-30 | 4 | 0d |  |  | Satish; Dan; Charles | 6h |
| 6 | 1.1.4 | Create initial task plan | 1d | 2007-10-30 | 2007-10-31 | 5 | 0d |  |  | Satish | 8h |
| 7 | 1.1.5 | NCICB review of task plan and high level items | 3d | 2007-10-31 | 2007-11-05 | 6 | 0d |  |  | Satish; Charles; Avinash | 72h |
| 8 | 1.1.6 | Revise task plan | 0.5d | 2007-11-05 | 2007-11-05 | 7 | 0d |  |  | Satish; Charles | 8h |
| 9 | 1.2 | **Eloboration** | 20.75d | 2007-10-29 | 2007-11-26 |  | 5.75d |  |  |  | 256h |
| 10 | 1.2.1 | **Create scope/requirement document** | 9d | 2007-11-06 | 2007-11-16 |  | 0d |  |  |  | 120h |
| 11 | 1.2.1.1 | Prepare list of requirements on Gforge | 1d | 2007-11-06 | 2007-11-06 | 8 | 0d |  |  | Satish | 8h |
| 12 | 1.2.1.2 | Draft scope document | 3d | 2007-11-07 | 2007-11-09 | 11 | 50d | 0d |  | Charles | 24h |
| 13 | 1.2.1.3 | Prepare risk list | 1d | 2007-11-12 | 2007-11-12 | 12 | 50d | 0d |  | Charles | 8h |
| 14 | 1.2.1.4 | NCICB review of scope document | 3d | 2007-11-13 | 2007-11-15 | 13 | 50d | 0d |  | Satish; Charles; Avinash | 72h |
| 15 | 1.2.1.5 | Revise scope document | 1d | 2007-11-16 | 2007-11-16 | 14 | 50d | 0d |  | Charles | 8h |
| 16 | 1.2.2 | **QA Activities** | 6d | 2007-11-19 | 2007-11-26 |  | 50d |  |  |  | 80h |
| 17 | 1.2.2.1 | Prepare test plan/test cases | 3d | 2007-11-19 | 2007-11-21 | 15 | 50d | 0d |  | Satish; QA | 48h |
| 18 | 1.2.2.2 | Review existing test cases/test cases | 0.5d | 2007-11-22 | 2007-11-22 | 17 | 50d | 0d |  | Satish; QA | 8h |
| 19 | 1.2.2.3 | Review new test plan/test cases | 0.5d | 2007-11-22 | 2007-11-22 | 18 | 50d | 0d |  | Satish; QA | 8h |
| 20 | 1.2.2.4 | Revise test plan/test cases | 2d | 2007-11-23 | 2007-11-26 | 19 | 50d |  |  | QA | 16h |
| 21 | 1.2.3 | **Test expansion** | 6d | 2007-10-29 | 2007-11-06 |  | 64.75d |  |  |  | 48h |
| 22 | 1.2.3.1 | Expand Junit for test model | 2d | 2007-10-29 | 2007-10-31 | 3 | 64.75d | 0d |  | Dan | 16h |
| 23 | 1.2.3.2 | Junit for web services | 3d | 2007-10-31 | 2007-11-05 | 22 | 64.75d | 0d |  | Dan | 24h |
| 24 | 1.2.3.3 | ANT HILL Integration | 1d | 2007-11-05 | 2007-11-06 | 23 | 64.75d |  |  | Dan | 8h |
| 25 | 1.2.4 | Revise task plan | 0.5d | 2007-11-16 | 2007-11-16 | 14 | 54.5d |  |  | Satish; Charles | 8h |

| ID | WBS | Task | Duration | Start | Finish | Predecessors | Total slack | Free slack | Resources | Work |
| --- | --- | --- | --- | --- | --- | --- | --- | --- | --- | --- |
| 26 | 1.3 | **Construction** | 56d | 2007-11-07 | 2008-01-29 |  | 0d |  |  | 872h |
| 27 | 1.3.1 | **SDK - Grid integration** | 41d | 2007-11-07 | 2008-01-08 |  | 0d |  |  | 504h |
| 28 | 1.3.1.1 | Kickoff meeting | 1d | 2007-11-07 | 2007-11-07 | 11 | 0d |  | Satish; Dan; Grid | 24h |
| 29 | 1.3.1.2 | **Grid service creation** | 40d | 2007-11-08 | 2008-01-08 |  | 15d |  |  | 320h |
| 30 | 1.3.1.2.1 | Creare sample data service with Introduce | 5d | 2007-11-08 | 2007-11-14 | 28 | 15d | 0d | Satish | 40h |
| 31 | 1.3.1.2.2 | Identify data service artifacts | 5d | 2007-11-15 | 2007-11-21 | 30 | 15d | 0d | Satish | 40h |
| 32 | 1.3.1.2.3 | Document design | 5d | 2007-11-22 | 2007-11-28 | 31 | 15d | 0d | Satish | 40h |
| 33 | 1.3.1.2.4 | Modify code generator for grid service artifacts | 5d | 2007-12-03 | 2007-12-07 | 32 | 15d | 0d | Satish | 40h |
| 34 | 1.3.1.2.5 | Grid CQL integration | 5d | 2007-12-10 | 2007-12-14 | 33 | 15d | 0d | Satish | 40h |
| 35 | 1.3.1.2.6 | Build integration for grid service and security | 5d | 2007-12-17 | 2007-12-21 | 34 | 15d | 0d | Satish | 40h |
| 36 | 1.3.1.2.7 | Develop Junit test cases for grid service | 5d | 2007-12-24 | 2007-12-31 | 35 | 15d | 0d | Satish | 40h |
| 37 | 1.3.1.2.8 | Fix defects | 5d | 2008-01-02 | 2008-01-08 | 36 | 15d | 0d | Satish | 40h |
| 38 | 1.3.1.3 | **XML serialization/deserialization** | 20d | 2007-11-08 | 2007-12-07 |  | 0d |  |  | 160h |
| 39 | 1.3.1.3.1 | Document design | 3d | 2007-11-08 | 2007-11-12 | 28 | 0d |  | Dan | 24h |
| 40 | 1.3.1.3.2 | GME namespace Integration | 6d | 2007-11-13 | 2007-11-20 | 39 | 0d |  | Dan | 48h |
| 41 | 1.3.1.3.3 | XSD import statements | 2d | 2007-11-21 | 2007-11-22 | 40 | 0d |  | Dan | 16h |
| 42 | 1.3.1.3.4 | Junit for XSD | 3d | 2007-11-23 | 2007-11-27 | 41 | 0d |  | Dan | 24h |
| 43 | 1.3.1.3.5 | Junit for XML mapping files | 3d | 2007-11-28 | 2007-12-04 | 42 | 0d |  | Dan | 24h |
| 44 | 1.3.1.3.6 | Fix defects | 3d | 2007-12-05 | 2007-12-07 | 43 | 0d |  | Dan | 24h |
| 45 | 1.3.2 | **Test expansion** | 8d | 2007-12-10 | 2007-12-19 |  | 0d |  |  | 64h |
| 46 | 1.3.2.1 | Junit for performance testing | 6d | 2007-12-10 | 2007-12-17 | 44 | 0d |  | Dan | 48h |
| 47 | 1.3.2.2 | Update database scripts | 1d | 2007-12-18 | 2007-12-18 | 46 | 0d |  | Dan | 8h |
| 48 | 1.3.2.3 | QA database scripts | 1d | 2007-12-19 | 2007-12-19 | 47 | 27d |  | QA | 8h |
| 49 | 1.3.3 | **UML Features** | 28d | 2007-12-19 | 2008-01-29 |  | 0d |  |  | 304h |
| 50 | 1.3.3.1 | Composition (One level) | 10d | 2008-01-09 | 2008-01-22 | 37 | 18d |  | Satish | 80h |
| 51 | 1.3.3.2 | Transient variables | 3d | 2007-12-19 | 2007-12-21 | 47 | 0d |  | Dan | 24h |
| 52 | 1.3.3.3 | Abstract classes | 3d | 2007-12-24 | 2007-12-27 | 51 | 0d |  | Dan | 24h |
| 53 | 1.3.3.4 | Interfaces | 10d | 2007-12-28 | 2008-01-11 | 52 | 0d |  | Dan | 80h |
| 54 | 1.3.3.5 | Build Junit test cases | 3d | 2008-01-14 | 2008-01-16 | 53 | 0d |  | Dan | 24h |
| 55 | 1.3.3.6 | Fix defects | 4d | 2008-01-17 | 2008-01-22 | 54 | 0d |  | Dan | 32h |
| 56 | 1.3.3.7 | Documentation | 5d | 2008-01-23 | 2008-01-29 | 55 | 0d |  | Dan | 40h |

| ID | WBS | Task | Type | Duration | Start | Finish | Predecessors | Total slack | Resources | Work |
| --- | --- | --- | --- | --- | --- | --- | --- | --- | --- | --- |
| 57 | 1.4 | **Transition** |  | 12d | 2008-01-30 | 2008-02-14 |  | 0d |  | 96h |
| 58 | 1.4.1 | Create release packaging |  | 1d | 2008-01-30 | 2008-01-30 | 37, 44, 48, 56 | 0d | Satish | 8h |
| 59 | 1.4.2 | QA release packaging |  | 1d | 2008-01-31 | 2008-01-31 | 58 | 0d | QA | 8h |
| 60 | 1.4.3 | Update documentation |  | 3d | 2008-02-01 | 2008-02-05 | 59 | 0d | Dan | 24h |
| 61 | 1.4.4 | Prepare release notes |  | 1d | 2008-02-06 | 2008-02-06 | 60 | 0d | Dan | 8h |
| 62 | 1.4.5 | Update zope website |  | 1d | 2008-02-07 | 2008-02-07 | 61 | 0d | Dan | 8h |
| 63 | 1.4.6 | Push to production |  | 5d | 2008-02-08 | 2008-02-14 | 62 | 0d | Systems | 40h |
| 64 | 1.5 | 4.0.1 release complete | milestone | 0d | 2008-02-14 | 2008-02-14 | 63 | 0d |  |  |
