# SDK 4.0.1

Schedule from MS Project, 2007-10-29 to 2008-03-24.
NCI

## Calendars

- Standard: Mon-Fri 08:00-12:00, 13:00-17:00; Sat-Sun off. Exceptions (off unless hours are given): 2007-11-29 to 2007-11-30, 2007-12-25, 2008-01-01.

## Resources

| Resource |
| --- |
| Satish |
| Dan |
| Charles |
| Avinash |
| QA |
| CSM |
| Grid |
| Systems |

## Schedule

| ID | WBS | Task | Duration | Start | Finish | Predecessors | Total slack | Free slack | Constraint | Resources | Work |
| --- | --- | --- | --- | --- | --- | --- | --- | --- | --- | --- | --- |
| 1 | 1 | **caCORE SDK** | 102d? | 2007-10-29 | 2008-03-24 |  | 0d |  |  |  | 1896h |
| 2 | 1.1 | **Release 4.1** | 62d | 2007-10-29 | 2008-01-28 |  | 0d |  |  |  | 1252h |
| 3 | 1.1.1 | **Elaboration** | 15d | 2007-10-29 | 2007-11-16 |  | 0d |  |  |  | 292h |
| 4 | 1.1.1.1 | 4.0.1 Kickoff meeting | 0.25d | 2007-10-29 | 2007-10-29 |  | 0d |  | start no earlier than 2007-10-29 | Satish; Dan; Charles | 6h |
| 5 | 1.1.1.2 | Identify high level items | 1d | 2007-10-29 | 2007-10-30 | 4 | 0d |  |  | Satish | 8h |
| 6 | 1.1.1.3 | Internal review of high level items | 0.25d | 2007-10-30 | 2007-10-30 | 5 | 0d |  |  | Satish; Dan; Charles | 6h |
| 7 | 1.1.1.4 | Create initial task plan | 1d | 2007-10-30 | 2007-10-31 | 6 | 0d |  |  | Satish; Charles | 16h |
| 8 | 1.1.1.5 | NCICB review of task plan and high level items | 3d | 2007-10-31 | 2007-11-05 | 7 | 0d |  |  | Satish; Charles; Avinash | 72h |
| 9 | 1.1.1.6 | Revise task plan | 0.5d | 2007-11-05 | 2007-11-05 | 8 | 0d |  |  | Satish; Charles | 8h |
| 10 | 1.1.1.7 | **Create scope/requirement document** | 9d | 2007-11-06 | 2007-11-16 |  | 0d |  |  |  | 120h |
| 11 | 1.1.1.7.1 | Prepare list of requirements on Gforge | 1d | 2007-11-06 | 2007-11-06 | 9 | 0d |  |  | Satish | 8h |
| 12 | 1.1.1.7.2 | Draft scope document | 3d | 2007-11-07 | 2007-11-09 | 11 | 62d | 0d |  | Charles | 24h |
| 13 | 1.1.1.7.3 | Prepare risk list | 1d | 2007-11-12 | 2007-11-12 | 12 | 62d | 0d |  | Charles | 8h |
| 14 | 1.1.1.7.4 | NCICB review of scope document | 3d | 2007-11-13 | 2007-11-15 | 13 | 62d | 0d |  | Satish; Charles; Avinash | 72h |
| 15 | 1.1.1.7.5 | Revise scope document | 1d | 2007-11-16 | 2007-11-16 | 14 | 62d |  |  | Charles | 8h |
| 16 | 1.1.1.9 | **Test expansion** | 6d | 2007-10-29 | 2007-11-06 |  | 95.75d |  |  |  | 48h |
| 17 | 1.1.1.9.1 | Expand Junit for test model | 2d | 2007-10-29 | 2007-10-31 | 4 | 68.75d | 0d |  | Dan | 16h |
| 18 | 1.1.1.9.2 | Junit for web services | 3d | 2007-10-31 | 2007-11-05 | 17 | 68.75d | 0d |  | Dan | 24h |
| 19 | 1.1.1.9.3 | ANT HILL Integration | 1d | 2007-11-05 | 2007-11-06 | 18 | 68.75d |  |  | Dan | 8h |
| 20 | 1.1.1.10 | Revise task plan | 0.5d | 2007-11-16 | 2007-11-16 | 14 | 80.5d |  |  | Satish; Charles | 8h |
| 21 | 1.1.2 | **Construction** | 46d | 2007-11-07 | 2008-01-15 |  | 0d |  |  |  | 848h |
| 22 | 1.1.2.1 | **Iteration 1** | 46d | 2007-11-07 | 2008-01-15 |  | 0d |  |  |  | 848h |
| 23 | 1.1.2.1.1 | Kickoff meeting | 1d | 2007-11-07 | 2007-11-07 | 11 | 0d |  |  | Satish; Dan; Grid | 24h |
| 24 | 1.1.2.1.2 | **Grid service creation** | 40d | 2007-11-08 | 2008-01-08 |  | 0d |  |  |  | 320h |
| 25 | 1.1.2.1.2.1 | Creare sample data service with Introduce | 5d | 2007-11-08 | 2007-11-14 | 23 | 0d |  |  | Satish | 40h |
| 26 | 1.1.2.1.2.2 | Identify data service artifacts | 5d | 2007-11-15 | 2007-11-21 | 25 | 0d |  |  | Satish | 40h |
| 27 | 1.1.2.1.2.3 | Document design | 5d | 2007-11-22 | 2007-11-28 | 26 | 0d |  |  | Satish | 40h |
| 28 | 1.1.2.1.2.4 | Modify code generator for grid service artifacts | 5d | 2007-12-03 | 2007-12-07 | 27 | 0d |  |  | Satish | 40h |
| 29 | 1.1.2.1.2.5 | Grid CQL integration | 5d | 2007-12-10 | 2007-12-14 | 28 | 0d |  |  | Satish | 40h |
| 30 | 1.1.2.1.2.6 | Build integration for grid service and security | 5d | 2007-12-17 | 2007-12-21 | 29 | 0d |  |  | Satish | 40h |
| 31 | 1.1.2.1.2.7 | Develop Junit test cases for grid service | 5d | 2007-12-24 | 2007-12-31 | 30 | 0d |  |  | Satish | 40h |
| 32 | 1.1.2.1.2.8 | Fix defects | 5d | 2008-01-02 | 2008-01-08 | 31 | 0d |  |  | Satish | 40h |

| ID | WBS | Task | Type | Duration | Start | Finish | Predecessors | Total slack | Free slack | Resources | Work |
| --- | --- | --- | --- | --- | --- | --- | --- | --- | --- | --- | --- |
| 33 | 1.1.2.1.3 | **XML serialization/deserialization** |  | 20d | 2007-11-08 | 2007-12-07 |  | 20d |  |  | 184h |
| 34 | 1.1.2.1.3.1 | Document design |  | 3d | 2007-11-08 | 2007-11-12 | 23 | 14d | 0d | Dan | 24h |
| 35 | 1.1.2.1.3.2 | GME namespace Integration |  | 6d | 2007-11-13 | 2007-11-20 | 34 | 14d | 0d | Dan | 48h |
| 36 | 1.1.2.1.3.3 | XSD import statements |  | 2d | 2007-11-21 | 2007-11-22 | 35 | 14d | 0d | Dan | 16h |
| 37 | 1.1.2.1.3.4 | Junit for XSD |  | 3d | 2007-11-23 | 2007-11-27 | 36 | 14d | 0d | Dan | 24h |
| 38 | 1.1.2.1.3.5 | Junit for XML mapping files |  | 3d | 2007-11-28 | 2007-12-04 | 37 | 14d | 0d | Dan | 24h |
| 39 | 1.1.2.1.3.6 | QA Testing |  | 3d | 2007-12-05 | 2007-12-07 | 38 | 37d |  | QA | 24h |
| 40 | 1.1.2.1.3.6 | Fix defects |  | 3d | 2007-12-05 | 2007-12-07 | 38 | 14d | 0d | Dan | 24h |
| 41 | 1.1.2.1.4 | **Test expansion** |  | 8d | 2007-12-10 | 2007-12-19 |  | 62d |  |  | 64h |
| 42 | 1.1.2.1.4.1 | Junit for performance testing |  | 6d | 2007-12-10 | 2007-12-17 | 40 | 14d | 0d | Dan | 48h |
| 43 | 1.1.2.1.4.2 | Update database scripts |  | 1d | 2007-12-18 | 2007-12-18 | 42 | 14d | 0d | Dan | 8h |
| 44 | 1.1.2.1.4.3 | QA database scripts |  | 1d | 2007-12-19 | 2007-12-19 | 43 | 29d |  | QA | 8h |
| 45 | 1.1.1.8 | **QA Activities** |  | 30d | 2007-12-03 | 2008-01-15 |  | 15d |  |  | 256h |
| 46 | 1.1.1.8.1 | Prepare test plan/test cases |  | 5d | 2007-12-03 | 2007-12-07 | 27 | 15d | 0d | Satish; QA | 80h |
| 47 | 1.1.1.8.2 | Review existing test cases/test cases |  | 1d | 2007-12-10 | 2007-12-10 | 46 | 15d | 0d | Satish; QA | 16h |
| 48 | 1.1.1.8.3 | Review new test plan/test cases |  | 1d | 2007-12-11 | 2007-12-11 | 47 | 15d | 0d | Satish; QA | 16h |
| 49 | 1.1.1.8.4 | Revise test plan/test cases |  | 3d | 2007-12-12 | 2007-12-14 | 48 | 15d |  | QA | 24h |
| 50 | 1.1.2.1.5.5 | Test execution |  | 5d | 2008-01-09 | 2008-01-15 | 49, 32, 40 | 12d |  | QA | 40h |
| 51 | 1.1.2.1.5.6 | Test support/Fix defects |  | 5d | 2008-01-09 | 2008-01-15 | 49, 32, 40 | 0d |  | Satish; Dan | 80h |
| 52 | 1.1.3 | **Transition** |  | 27d | 2007-12-19 | 2008-01-28 |  | 18d |  |  | 112h |
| 53 | 1.1.3.3 | Update documentation |  | 5d | 2007-12-19 | 2007-12-26 | 43 | 55d |  | Dan | 40h |
| 54 | 1.1.3.1 | Create release packaging |  | 1d | 2008-01-16 | 2008-01-16 | 51 | 0d |  | Satish | 8h |
| 55 | 1.1.3.2 | QA release packaging |  | 1d | 2008-01-17 | 2008-01-17 | 54 | 0d |  | QA | 8h |
| 56 | 1.1.3.4 | Prepare release notes |  | 1d | 2008-01-18 | 2008-01-18 | 55 | 0d |  | Dan | 8h |
| 57 | 1.1.3.5 | Update zope website |  | 1d | 2008-01-21 | 2008-01-21 | 56 | 0d |  | Dan | 8h |
| 58 | 1.1.3.6 | Push to production |  | 5d | 2008-01-22 | 2008-01-28 | 57 | 0d |  | Systems | 40h |
| 59 | 1.1.4 | 4.0.1 release complete | milestone | 0d | 2008-01-28 | 2008-01-28 | 58 | 0d |  |  |  |

| ID | WBS | Task | Duration | Start | Finish | Predecessors | Total slack | Free slack | Constraint | Resources | Work |
| --- | --- | --- | --- | --- | --- | --- | --- | --- | --- | --- | --- |
| 60 | 1.2 | **Release 4.1.1** | 40d? | 2008-01-29 | 2008-03-24 |  | 0d |  |  |  | 644h |
| 61 | 1.2.1 | **Elaboration** | 6d | 2008-01-29 | 2008-02-05 |  | 0d |  |  |  | 116h |
| 62 | 1.2.1.1 | 4.0.1 Kickoff meeting | 0.25d | 2008-01-29 | 2008-01-29 | 59 | 0d |  | start no earlier than 2007-10-29 | Satish; Dan; Charles | 6h |
| 63 | 1.2.1.2 | Identify high level items | 1d | 2008-01-29 | 2008-01-30 | 62 | 0d |  |  | Satish | 8h |
| 64 | 1.2.1.3 | Internal review of high level items | 0.25d | 2008-01-30 | 2008-01-30 | 63 | 0d |  |  | Satish; Dan; Charles | 6h |
| 65 | 1.2.1.4 | Create initial task plan | 1d | 2008-01-30 | 2008-01-31 | 64 | 0d |  |  | Satish; Charles | 16h |
| 66 | 1.2.1.5 | NCICB review of task plan and high level items | 3d | 2008-01-31 | 2008-02-05 | 65 | 0d |  |  | Satish; Charles; Avinash | 72h |
| 67 | 1.2.1.6 | Revise task plan | 0.5d | 2008-02-05 | 2008-02-05 | 66 | 0d |  |  | Satish; Charles | 8h |
| 68 | 1.2.2 | **Create scope/requirement document** | 9d | 2008-02-06 | 2008-02-18 |  | 0d |  |  |  | 120h |
| 69 | 1.2.2.1 | Prepare list of requirements on Gforge | 1d | 2008-02-06 | 2008-02-06 | 67 | 0d |  |  | Satish | 8h |
| 70 | 1.2.2.2 | Draft scope document | 3d | 2008-02-07 | 2008-02-11 | 69 | 17.5d | 0d |  | Charles | 24h |
| 71 | 1.2.2.3 | Prepare risk list | 1d | 2008-02-12 | 2008-02-12 | 70 | 17.5d | 0d |  | Charles | 8h |
| 72 | 1.2.2.4 | NCICB review of scope document | 3d | 2008-02-13 | 2008-02-15 | 71 | 17.5d | 0d |  | Satish; Charles; Avinash | 72h |
| 73 | 1.2.2.5 | Revise scope document | 1d | 2008-02-18 | 2008-02-18 | 72 | 17.5d | 0d |  | Charles | 8h |
| 74 | 1.1.1.10 | Revise task plan | 0.5d | 2008-02-19 | 2008-02-19 | 73 | 17.5d |  |  | Satish; Charles | 8h |
| 75 | 1.2.2 | **Construction** | 20d? | 2008-02-07 | 2008-03-05 |  | 0d |  |  |  | 288h |
| 76 | 1.2.2.1 | **UML Features** | 20d? | 2008-02-07 | 2008-03-05 |  | 0d |  |  |  | 288h |
| 77 | 1.2.2.1.1 | Composition (One level) | 10d | 2008-02-07 | 2008-02-20 | 69 | 19d | 0d |  | Satish | 80h |
| 78 | 1.2.2.1.2 | Transient variables | 3d | 2008-02-21 | 2008-02-25 | 77 | 19d |  |  | Satish | 24h |
| 79 | 1.2.2.1.3 | Abstract classes | 3d | 2008-02-07 | 2008-02-11 | 69 | 0d |  |  | Dan | 24h |
| 80 | 1.2.2.1.4 | Interfaces | 10d | 2008-02-12 | 2008-02-25 | 79 | 0d |  |  | Dan | 80h |
| 81 | 1.2.2.1.5 | Build Junit test cases | 3d | 2008-02-26 | 2008-02-28 | 80 | 0d |  |  | Dan | 24h |
| 82 | 1.2.2.1.6 | Fix defects | 3d | 2008-02-29 | 2008-03-04 | 81 | 0d |  |  | Dan; Satish | 48h |
| 83 | 1.2.2.1.8 | QA | 1d? | 2008-03-05 | 2008-03-05 | 82 | 13d |  |  | QA | 8h |

| ID | WBS | Task | Type | Duration | Start | Finish | Predecessors | Total slack | Resources | Work |
| --- | --- | --- | --- | --- | --- | --- | --- | --- | --- | --- |
| 84 | 1.2.3 | **Transition** |  | 14d | 2008-03-05 | 2008-03-24 |  | 0d |  | 112h |
| 85 | 1.1.3.3 | Update documentation |  | 5d | 2008-03-05 | 2008-03-11 | 82 | 0d | Dan | 40h |
| 86 | 1.1.3.1 | Create release packaging |  | 1d | 2008-03-12 | 2008-03-12 | 85 | 0d | Satish | 8h |
| 87 | 1.1.3.2 | QA release packaging |  | 1d | 2008-03-13 | 2008-03-13 | 86 | 0d | QA | 8h |
| 88 | 1.2.5.4 | Prepare release notes |  | 1d | 2008-03-14 | 2008-03-14 | 87 | 0d | Dan | 8h |
| 89 | 1.2.5.5 | Update zope website |  | 1d | 2008-03-17 | 2008-03-17 | 88 | 0d | Dan | 8h |
| 90 | 1.2.5.6 | Push to production |  | 5d | 2008-03-18 | 2008-03-24 | 89 | 0d | Systems | 40h |
| 91 | 1.2.6 | 4.1.1 release complete | milestone | 0d | 2008-03-24 | 2008-03-24 | 90 | 0d |  |  |
