# SDK 4.0.1

Schedule from MS Project, 2007-11-05 to 2008-04-02, A marks actual dates.
NCI

## Calendars

- Standard: Mon-Fri 08:00-12:00, 13:00-17:00; Sat-Sun off. Exceptions (off unless hours are given): 2007-11-29 to 2007-11-30, 2007-12-25, 2008-01-01.

## Resources

| Resource |
| --- |
| Satish |
| Dan |
| Charles |
| Avinash |
| QA |
| CSM |
| Grid |
| Systems |

## Schedule

| ID | WBS | Task | Type | Duration | Start | Finish | Predecessors | Complete | Remaining | Total slack | Free slack | Constraint | Resources | Work | Actual work |
| --- | --- | --- | --- | --- | --- | --- | --- | --- | --- | --- | --- | --- | --- | --- | --- |
| 1 | 1 | **caCORE SDK** |  | 104d? | 2007-11-05 A | 2008-04-02 |  | 26% | 76.77d? | 0d |  |  |  | 1480h | 416h |
| 2 | 1.1 | **Release 4.1** |  | 104d? | 2007-11-05 A | 2008-04-02 |  | 26% | 76.77d? | 0d |  |  |  | 1480h | 416h |
| 3 | 1.1.1 | **Elaboration** |  | 74d? | 2007-11-05 A | 2008-02-20 |  | 65% | 26.12d? | 35d |  |  |  | 480h | 304h |
| 4 | 1.1.1.5 | NCICB review of task plan and high level items | milestone | 0d | 2008-01-09 A | 2008-01-09 A |  | 100% |  |  |  | start no earlier than 2008-01-09 | Satish; Charles; Avinash |  |  |
| 5 | 1.1.1.6 | Revise task plan |  | 0.5d | 2008-01-09 A | 2008-01-09 A | 4 | 100% |  |  |  |  | Satish; Charles | 8h | 8h |
| 6 | 1.1.1.3 | **HL7 Prototype** |  | 10d | 2008-01-09 A | 2008-01-23 A |  | 100% |  |  |  |  |  | 112h | 112h |
| 7 | 1.1.1.3.1 | Review HL7 Java Sig |  | 3d | 2008-01-09 A | 2008-01-14 A | 5 | 100% |  |  |  |  | Satish | 24h | 24h |
| 8 | 1.1.1.3.2 | Map selected HL7 data type |  | 2d | 2008-01-14 A | 2008-01-16 A | 7 | 100% |  |  |  |  | Satish | 16h | 16h |
| 9 | 1.1.1.3.3 | Design proposed workflow |  | 3d | 2008-01-16 A | 2008-01-21 A | 8 | 100% |  |  |  |  | Satish | 24h | 24h |
| 10 | 1.1.1.3.4 | Review proposed workflow |  | 2d | 2008-01-21 A | 2008-01-23 A | 9 | 100% |  |  |  |  | Satish; Charles; Avinash | 48h | 48h |
| 11 | 1.1.1.4 | **Installer GUI** |  | 5d | 2008-01-09 A | 2008-01-16 A |  | 100% |  |  |  |  |  | 40h | 40h |
| 12 | 1.1.1.4.1 | Review JSR 296, Spring Rich Client |  | 2d | 2008-01-09 A | 2008-01-11 A | 5 | 100% |  |  |  |  | Dan | 16h | 16h |
| 13 | 1.1.1.4.2 | Prototype the installer |  | 3d | 2008-01-11 A | 2008-01-16 A | 12 | 100% |  |  |  |  | Dan | 24h | 24h |
| 14 | 1.1.1.5 | **Defect Fixes** |  | 54.5d? | 2007-11-05 A | 2008-01-24 |  | 86% | 7.79d? | 54.5d |  |  |  | 56h | 48h |
| 15 | 1.1.1.5.1 | GF #11189 - Search Object drop down is not populated with the correct classnames |  | 1d | 2008-01-16 A | 2008-01-17 A | 13 | 100% |  |  |  |  | Dan | 8h | 8h |
| 16 | 1.1.1.5.2 | GF#9639 - Pagination does not work |  | 1d | 2008-01-17 A | 2008-01-18 A | 15 | 100% |  |  |  |  | Dan | 8h | 8h |
| 17 | 1.1.1.5.3 | GF#9392 - Uppercase association names generate error in WS |  | 1d | 2008-01-18 A | 2008-01-21 A | 16 | 100% |  |  |  |  | Dan | 8h | 8h |
| 18 | 1.1.1.5.4 | GF#8951 - GetHTML query syntax does not support slashes in the criteria |  | 1d | 2008-01-21 A | 2008-01-22 A | 17 | 100% |  |  |  |  | Dan | 8h | 8h |
| 19 | 1.1.1.5.5 | GF#4150 - WS does not handle inheritance properly |  | 1d | 2008-01-22 A | 2008-01-23 A | 18 | 100% |  |  |  |  | Dan | 8h | 8h |
| 20 | 1.1.1.5.6 | GF#4153 - WS does not support comma seperated nested search paths |  | 1d | 2008-01-23 A | 2008-01-24 A | 19 | 100% |  |  |  |  | Dan | 8h | 8h |
| 21 | 1.1.1.5.7 | Test defect fix |  | 1d? | 2007-11-05 | 2007-11-05 |  |  |  | 72d |  |  | QA | 8h |  |
| 22 | 1.1.1.6 | Architecture FTF Meeting |  | 6d | 2008-01-24 A | 2008-01-31 A |  | 100% |  |  |  | start no earlier than 2008-01-24 | Satish; Charles | 96h | 96h |
| 23 | 1.1.1.7 | **Create scope/requirement document** |  | 13d | 2008-02-01 | 2008-02-19 |  |  |  | 6d |  |  |  | 152h |  |
| 24 | 1.1.1.7.1 | Prepare list of requirements on Gforge |  | 5d | 2008-02-01 | 2008-02-07 | 22 |  |  | 2.5d | 0d |  | Charles | 40h |  |
| 25 | 1.1.1.7.2 | Draft scope document |  | 3d | 2008-02-08 | 2008-02-12 | 24 |  |  | 2.5d | 0d |  | Charles | 24h |  |
| 26 | 1.1.1.7.3 | Prepare risk list |  | 1d | 2008-02-13 | 2008-02-13 | 25 |  |  | 2.5d | 0d |  | Charles | 8h |  |
| 27 | 1.1.1.7.4 | NCICB review of scope document |  | 3d | 2008-02-14 | 2008-02-18 | 26 |  |  | 2.5d | 0d |  | Satish; Charles; Avinash | 72h |  |
| 28 | 1.1.1.7.5 | Revise scope document |  | 1d | 2008-02-19 | 2008-02-19 | 27 |  |  | 2.5d | 0d |  | Charles | 8h |  |
| 29 | 1.1.1.10 | Revise task plan |  | 1d | 2008-02-20 | 2008-02-20 | 28 |  |  | 2.5d | 0d |  | Satish; Charles | 16h |  |

| ID | WBS | Task | Duration | Start | Finish | Predecessors | Complete | Remaining | Total slack | Free slack | Constraint | Resources | Work | Actual work |
| --- | --- | --- | --- | --- | --- | --- | --- | --- | --- | --- | --- | --- | --- | --- |
| 30 | 1.1.2 | **Construction** | 95d? | 2007-11-05 A | 2008-03-20 |  | 14% | 81.7d? | 9d |  |  |  | 872h | 112h |
| 31 | 1.1.2.1 | **Iteration 1** | 40.5d | 2008-01-24 A | 2008-03-20 |  | 16% | 34.06d | 9d |  |  |  | 800h | 112h |
| 32 | 1.1.2.1.1 | **Abstract Class support - GF#2958** | 10d | 2008-01-24 A | 2008-02-07 |  | 90% | 1d | 0.5d |  |  |  | 80h | 72h |
| 33 | 1.1.2.1.1.1 | Modify Code Generator (Beans, HBM, XSD) | 2d | 2008-01-24 A | 2008-01-28 A | 20 | 100% |  |  |  |  | Dan | 16h | 16h |
| 34 | 1.1.2.1.1.2 | Fix UI Interface, query translators | 4d | 2008-01-28 A | 2008-02-01 A | 33 | 100% |  |  |  |  | Dan | 32h | 32h |
| 35 | 1.1.2.1.1.3 | Develop Junit | 2d | 2008-02-01 A | 2008-02-05 A | 34 | 100% |  |  |  |  | Dan | 16h | 16h |
| 36 | 1.1.2.1.1.4 | Fix Defects | 2d | 2008-02-05 A | 2008-02-07 | 35 | 50% | 1d | 0.5d | 0d |  | Dan | 16h | 8h |
| 37 | 1.1.2.1.2 | **Implicit inheritance - GF#11539** | 10d | 2008-02-07 | 2008-02-21 |  |  |  | 0.5d |  |  |  | 80h |  |
| 38 | 1.1.2.1.2.1 | Modify code generator (validator and transformers) | 5d | 2008-02-07 | 2008-02-14 | 36 |  |  | 0.5d | 0d |  | Dan | 40h |  |
| 39 | 1.1.2.1.2.2 | Fix query translators | 2d | 2008-02-14 | 2008-02-18 | 38 |  |  | 0.5d | 0d |  | Dan | 16h |  |
| 40 | 1.1.2.1.2.3 | Develop Junit | 2d | 2008-02-18 | 2008-02-20 | 39 |  |  | 0.5d | 0d |  | Dan | 16h |  |
| 41 | 1.1.2.1.2.4 | Fix Defects | 1d | 2008-02-20 | 2008-02-21 | 40 |  |  | 0.5d | 0d |  | Dan | 8h |  |
| 42 | 1.1.2.1.3 | **Marker Interfaces - GF#6185** | 10d | 2008-02-21 | 2008-03-06 |  |  |  | 0.5d |  |  |  | 80h |  |
| 43 | 1.1.2.1.3.1 | Modify code generator (validator and transformers) | 5d | 2008-02-21 | 2008-02-28 | 41 |  |  | 0.5d | 0d |  | Dan | 40h |  |
| 44 | 1.1.2.1.3.2 | Fix query translators | 2d | 2008-02-28 | 2008-03-03 | 43 |  |  | 0.5d | 0d |  | Dan | 16h |  |
| 45 | 1.1.2.1.3.3 | Develop Junit | 2d | 2008-03-03 | 2008-03-05 | 44 |  |  | 0.5d | 0d |  | Dan | 16h |  |
| 46 | 1.1.2.1.3.4 | Fix Defects | 1d | 2008-03-05 | 2008-03-06 | 45 |  |  | 0.5d | 0d |  | Dan | 8h |  |
| 47 | 1.1.2.1.4 | **Defect Fix** | 3d | 2008-03-06 | 2008-03-11 |  |  |  | 0.5d |  |  |  | 24h |  |
| 48 | 1.1.2.1.4.1 | GF#11191 - Generation of inefficient subqueries results in slow performance and timeouts | 3d | 2008-03-06 | 2008-03-11 | 46 |  |  | 0.5d | 0d |  | Dan | 24h |  |
| 49 | 1.1.2.1.5 | Improve codegen error messages | 2d | 2008-03-11 | 2008-03-13 | 48 |  |  | 0.5d |  |  | Dan | 16h |  |
| 50 | 1.1.2.1.6 | **HL7 Prototype with Grid service** | 20d | 2008-02-01 A | 2008-02-28 |  | 25% | 15d | 0d |  |  |  | 160h | 40h |
| 51 | 1.1.2.1.6.1 | Create Grid service for SDK's test model | 5d | 2008-02-01 A | 2008-02-07 A | 22 | 100% |  |  |  |  | Satish | 40h | 40h |
| 52 | 1.1.2.1.6.2 | Create SDK test model with HL7 data type | 1d | 2008-02-08 | 2008-02-08 | 51 |  |  | 0d |  |  | Satish | 8h |  |
| 53 | 1.1.2.1.6.3 | Manually create a SDK system with HL7 data type | 5d | 2008-02-11 | 2008-02-15 | 52 |  |  | 0d |  |  | Satish | 40h |  |
| 54 | 1.1.2.1.6.4 | Create a grid service with HL7 data type | 5d | 2008-02-18 | 2008-02-22 | 53 |  |  | 0d |  |  | Satish | 40h |  |
| 55 | 1.1.2.1.6.5 | Review design and technical approach | 4d | 2008-02-25 | 2008-02-28 | 54 |  |  | 0d |  |  | Satish | 32h |  |
| 56 | 1.1.2.1.7 | HL7 Training | 3d | 2008-03-04 | 2008-03-06 |  |  |  | 24d |  | start no earlier than 2008-03-04 | Satish | 24h |  |

| ID | WBS | Task | Type | Duration | Start | Finish | Predecessors | Total slack | Free slack | Resources | Work |
| --- | --- | --- | --- | --- | --- | --- | --- | --- | --- | --- | --- |
| 57 | 1.1.2.1.8 | **SDK Grid Integration** |  | 10d | 2008-02-29 | 2008-03-13 |  | 0d |  |  | 80h |
| 58 | 1.1.2.1.8.1 | Integrate CSM fix |  | 5d | 2008-02-29 | 2008-03-06 | 55 | 0d |  | Satish | 40h |
| 59 | 1.1.2.1.8.2 | Integrate SDK with caGrid |  | 5d | 2008-03-07 | 2008-03-13 | 58 | 0d |  | Satish | 40h |
| 60 | 1.1.2.1.9 | Code freeze | milestone | 0d | 2008-03-13 | 2008-03-13 | 36, 55, 41, 46, 59, 48, 49 | 0d |  |  |  |
| 61 | 1.1.1.8 | **QA Activities** |  | 21d | 2008-02-21 | 2008-03-20 |  | 6d |  |  | 256h |
| 62 | 1.1.1.8.1 | Prepare test plan/test cases |  | 5d | 2008-02-21 | 2008-02-27 | 29 | 6d | 0d | Satish; QA | 80h |
| 63 | 1.1.1.8.2 | Review existing test cases/test cases |  | 1d | 2008-02-28 | 2008-02-28 | 62 | 6d | 0d | Satish; QA | 16h |
| 64 | 1.1.1.8.3 | Review new test plan/test cases |  | 1d | 2008-02-29 | 2008-02-29 | 63 | 6d | 0d | Satish; QA | 16h |
| 65 | 1.1.1.8.4 | Revise test plan/test cases |  | 3d | 2008-03-03 | 2008-03-05 | 64 | 6d |  | QA | 24h |
| 66 | 1.1.2.1.10.5 | Test execution |  | 5d | 2008-03-14 | 2008-03-20 | 65, 60 | 9d |  | QA | 40h |
| 67 | 1.1.2.1.10.6 | Test support/Fix defects |  | 5d | 2008-03-14 | 2008-03-20 | 65, 60 | 0d |  | Satish; Dan | 80h |
| 68 | 1.1.2.2 | **Iteration 2** |  | 1d? | 2007-11-05 | 2007-11-05 |  | 108d |  |  | 24h |
| 69 | 1.1.2.2.1 | Installer GUI |  | 1d? | 2007-11-05 | 2007-11-05 |  | 108d |  | Dan | 8h |
| 70 | 1.1.2.2.2 | Freestyle search API |  | 1d? | 2007-11-05 | 2007-11-05 |  | 108d |  | Dan | 8h |
| 71 | 1.1.2.2.3 | HL7 Code Generation |  | 1d? | 2007-11-05 | 2007-11-05 |  | 108d |  | Satish | 8h |
| 72 | 1.1.2.2.4 | QA |  | 1d? | 2007-11-05 | 2007-11-05 |  | 108d |  |  |  |
| 73 | 1.1.2.3 | **Iteration 3** |  | 1d? | 2007-11-05 | 2007-11-05 |  | 108d |  |  | 48h |
| 74 | 1.1.2.3.1 | HL7 Serialization on grid |  | 1d? | 2007-11-05 | 2007-11-05 |  | 108d |  | Satish | 8h |
| 75 | 1.1.2.3.2 | GME Namespace |  | 1d? | 2007-11-05 | 2007-11-05 |  | 108d |  | Dan | 8h |
| 76 | 1.1.2.3.3 | Permissible values |  | 1d? | 2007-11-05 | 2007-11-05 |  | 108d |  | Dan | 8h |
| 77 | 1.1.2.3.4 | XSD Import statements |  | 1d? | 2007-11-05 | 2007-11-05 |  | 108d |  | Dan | 8h |
| 78 | 1.1.2.3.5 | Test cases for performance |  | 1d? | 2007-11-05 | 2007-11-05 |  | 108d |  | Satish | 8h |
| 79 | 1.1.2.3.6 | Grid SDK integration |  | 1d? | 2007-11-05 | 2007-11-05 |  | 108d |  | Satish | 8h |
| 80 | 1.1.2.3.7 | QA |  | 1d? | 2007-11-05 | 2007-11-05 |  | 108d |  |  |  |
| 81 | 1.1.2.4 | Integration Test |  | 1d? | 2007-11-05 | 2007-11-05 |  | 102d | 0d |  |  |

| ID | WBS | Task | Type | Duration | Start | Finish | Predecessors | Total slack | Free slack | Resources | Work |
| --- | --- | --- | --- | --- | --- | --- | --- | --- | --- | --- | --- |
| 82 | 1.1.3 | **Transition** |  | 103d | 2007-11-06 | 2008-04-02 |  | 0d |  |  | 128h |
| 83 | 1.1.2.1.4.2 | Update database scripts |  | 1d | 2007-11-06 | 2007-11-06 | 81 | 102d | 0d | Dan | 8h |
| 84 | 1.1.2.1.4.3 | QA database scripts |  | 1d | 2007-11-07 | 2007-11-07 | 83 | 106d |  | QA | 8h |
| 85 | 1.1.3.3 | Update documentation |  | 5d | 2007-11-07 | 2007-11-13 | 83 | 102d |  | Dan | 40h |
| 86 | 1.1.3.1 | Create release packaging |  | 1d | 2008-03-21 | 2008-03-21 | 67 | 0d |  | Satish | 8h |
| 87 | 1.1.3.2 | QA release packaging |  | 1d | 2008-03-24 | 2008-03-24 | 86 | 0d |  | QA | 8h |
| 88 | 1.1.3.4 | Prepare release notes |  | 1d | 2008-03-25 | 2008-03-25 | 87 | 0d |  | Dan | 8h |
| 89 | 1.1.3.5 | Update zope website |  | 1d | 2008-03-26 | 2008-03-26 | 88 | 0d |  | Dan | 8h |
| 90 | 1.1.3.6 | Push to production |  | 5d | 2008-03-27 | 2008-04-02 | 89 | 0d |  | Systems | 40h |
| 91 | 1.1.4 | 4.0.1 release complete | milestone | 0d | 2008-04-02 | 2008-04-02 | 90 | 0d |  |  |  |
