# Task Plan

Schedule from MS Project, 2008-09-17 to 2010-04-30, A marks actual dates.
Ekagra Software Technologies

## Calendars

- Standard: Mon-Fri 08:00-12:00, 13:00-17:00; Sat-Sun off.

## Resources

| Resource |
| --- |
| Satish |
| Dan |
| Santhosh |
| Vijay |
| Dave H. |
| QA |
| Bilal |
| Charles |
| 55 |
| 63 |
| Bronwyn |
| Kunal |
| Harsh |
| Ashwin |
| Kalpesh |
| Sichen |
| Dan K. |
| Doug H. |
| Steve L. |
| Systems |
| caGrid |
| Xiaoling |
| LSD |
| Prasad |
| Aynur |
| Scott |
| Ye |

## Schedule

| ID | WBS | Task | Type | Duration | Start | Finish | Predecessors | Complete | Remaining | Total slack | Constraint | Deadline | Resources | Work | Actual work |
| --- | --- | --- | --- | --- | --- | --- | --- | --- | --- | --- | --- | --- | --- | --- | --- |
| 1 | 1 | **Task Plan** |  | 423d? | 2008-09-17 A | 2010-04-30 |  | 85% | 64.35d? | 0d |  |  |  | 13834.6h | 10302.6h |
| 2 | 1.1 | **4.2 Release** |  | 320d | 2008-09-17 A | 2009-12-08 |  | 99% | 0.73d | 113d |  |  |  | 7498.6h | 7450.6h |
| 3 | 1.1.1 | **SDK 4.2** |  | 320d | 2008-09-17 A | 2009-12-08 A |  | 100% |  |  |  |  |  | 4901h | 4901h |
| 4 | 1.1.1.1 | Production support |  | 284d | 2008-09-17 A | 2009-11-02 A |  | 100% |  |  | finish no earlier than 2009-11-02 |  | Satish [25%] | 568h | 568h |
| 5 | 1.1.1.2 | **Inception** |  | 4d | 2008-11-03 A | 2008-11-06 A |  | 100% |  |  |  | 2008-07-26 |  | 32h | 32h |
| 6 | 1.1.1.2.1 | **Requirements** |  | 4d | 2008-11-03 A | 2008-11-06 A |  | 100% |  |  |  |  |  | 32h | 32h |
| 7 | 1.1.1.2.1.1 | Create scope candidate spreadsheet for 4.2 |  | 3d | 2008-11-03 A | 2008-11-05 A |  | 100% |  |  |  |  | Charles | 24h | 24h |
| 8 | 1.1.1.2.1.2 | Submit scope candidate spreadsheet for review | milestone | 0d | 2008-11-05 A | 2008-11-05 A | 7 | 100% |  |  |  |  | Charles |  |  |
| 9 | 1.1.1.2.1.3 | Review and provide feedback on candidate spreadsheet |  | 1d | 2008-11-06 A | 2008-11-06 A | 8 | 100% |  |  |  |  | Dave H. | 8h | 8h |
| 10 | 1.1.1.3 | **Elaboration** |  | 61d | 2008-11-07 A | 2009-01-30 A |  | 100% |  |  |  |  |  | 313h | 313h |
| 11 | 1.1.1.3.1 | **Iteration 1** |  | 10.5d | 2008-11-07 A | 2008-11-21 A |  | 100% |  |  |  |  |  | 153h | 153h |
| 12 | 1.1.1.3.1.1 | **Project Management** |  | 9.5d | 2008-11-07 A | 2008-11-20 A |  | 100% |  |  |  |  |  | 19h | 19h |
| 13 | 1.1.1.3.1.1.1 | Provide LOE on scope candidate list |  | 1d | 2008-11-07 A | 2008-11-07 A | 9 | 100% |  |  |  |  | Satish [25%] | 2h | 2h |
| 14 | 1.1.1.3.1.1.2 | Develop schedule based on LOE |  | 1d | 2008-11-10 A | 2008-11-10 A | 13 | 100% |  |  |  |  | Charles | 8h | 8h |
| 15 | 1.1.1.3.1.1.3 | Submit schedule for review |  | 1d | 2008-11-11 A | 2008-11-11 A | 14 | 100% |  |  |  |  | Charles | 8h | 8h |
| 16 | 1.1.1.3.1.1.4 | Revise schedule |  | 0.5d | 2008-11-20 A | 2008-11-20 A | 15, 23 | 100% |  |  |  |  | Satish [25%] | 1h | 1h |
| 17 | 1.1.1.3.1.2 | **Requirements** |  | 9d | 2008-11-07 A | 2008-11-19 A |  | 100% |  |  |  |  |  | 66h | 66h |
| 18 | 1.1.1.3.1.2.1 | **Create scope document** |  | 9d | 2008-11-07 A | 2008-11-19 A |  | 100% |  |  |  |  |  | 66h | 66h |
| 19 | 1.1.1.3.1.2.1.1 | Create draft scope document |  | 2d | 2008-11-07 A | 2008-11-10 A | 9 | 100% |  |  |  |  | Charles | 16h | 16h |
| 20 | 1.1.1.3.1.2.1.2 | Prepare risk list |  | 2d | 2008-11-11 A | 2008-11-12 A | 19 | 100% |  |  |  |  | Charles | 16h | 16h |
| 21 | 1.1.1.3.1.2.1.3 | Review scope document |  | 3d | 2008-11-13 A | 2008-11-17 A | 20 | 100% |  |  |  |  | Dave H. | 24h | 24h |
| 22 | 1.1.1.3.1.2.1.4 | Revise scope document |  | 1d | 2008-11-18 A | 2008-11-18 A | 21 | 100% |  |  |  |  | Satish [25%] | 2h | 2h |
| 23 | 1.1.1.3.1.2.1.5 | Sign off scope document |  | 1d | 2008-11-19 A | 2008-11-19 A | 22 | 100% |  |  |  |  | Dave H. | 8h | 8h |
| 24 | 1.1.1.3.1.3 | **Analysis and Design** |  | 10d | 2008-11-07 A | 2008-11-20 A |  | 100% |  |  |  |  |  | 68h | 68h |
| 25 | 1.1.1.3.1.3.1 | ISO 21090 Support |  | 2d | 2008-11-19 A | 2008-11-20 A | 22 | 100% |  |  |  |  | Satish [50%] | 8h | 8h |
| 26 | 1.1.1.3.1.3.2 | SDK Installer |  | 7.5d | 2008-11-07 A | 2008-11-18 A | 9 | 100% |  |  |  |  | Dan | 60h | 60h |
| 27 | 1.1.1.3.1.4 | Iteration complete |  | 1d | 2008-11-20 A | 2008-11-21 A | 16, 26, 23 | 100% |  |  |  |  |  |  |  |

| ID | WBS | Task | Type | Duration | Start | Finish | Predecessors | Complete | Resources | Work | Actual work | Text11 |
| --- | --- | --- | --- | --- | --- | --- | --- | --- | --- | --- | --- | --- |
| 28 | 1.1.1.3.2 | **Iteration 2** |  | 44d | 2008-12-02 A | 2009-01-30 A |  | 100% |  | 160h | 160h |  |
| 29 | 1.1.1.3.2.1 | **Analysis and Design** |  | 43d | 2008-12-02 A | 2009-01-29 A |  | 100% |  | 160h | 160h |  |
| 30 | 1.1.1.3.2.1.1 | **ISO 21090 Support** |  | 43d | 2008-12-02 A | 2009-01-29 A |  | 100% |  | 160h | 160h | caDSR, caAdapter, caGrid, COPPA |
| 31 | 1.1.1.3.2.1.1.1 | Research Java API |  | 20d | 2008-12-02 A | 2008-12-30 A | 27 | 100% | Satish [50%] | 80h | 80h |  |
| 32 | 1.1.1.3.2.1.1.2 | Research O/R mapping framework for datatype |  | 20d | 2009-01-02 A | 2009-01-29 A | 31 | 100% | Satish [50%] | 80h | 80h |  |
| 33 | 1.1.1.3.2.2 | Iteration complete |  | 1d | 2009-01-30 A | 2009-01-30 A | 32 | 100% |  |  |  |  |
| 34 | 1.1.1.4 | **Construction** |  | 192d | 2008-11-07 A | 2009-08-03 A |  | 100% |  | 2504h | 2504h |  |
| 35 | 1.1.1.4.1 | **Iteration 1** |  | 38d | 2008-11-21 A | 2009-01-14 A |  | 100% |  | 392h | 392h |  |
| 36 | 1.1.1.4.1.1 | **Implementation** |  | 21d | 2008-11-21 A | 2008-12-22 A |  | 100% |  | 160h | 160h |  |
| 37 | 1.1.1.4.1.1.1 | **Implement MySQL performance fix for EVS** |  | 6d | 2008-11-21 A | 2008-12-01 A |  | 100% |  | 32h | 32h | EVS |
| 38 | 1.1.1.4.1.1.1.1 | Investigate the generated queries |  | 4d | 2008-11-21 A | 2008-12-01 A | 27 | 100% | Dan | 32h | 32h |  |
| 39 | 1.1.1.4.1.1.2 | **Implement performance fix for caTissue** |  | 4d | 2008-12-01 A | 2008-12-05 A |  | 100% |  | 32h | 32h | caTissue |
| 40 | 1.1.1.4.1.1.2.1 | Receive artifacts for investigation from caTissue team | milestone | 0d | 2008-12-01 A | 2008-12-01 A | 38 | 100% | Dan |  |  |  |
| 41 | 1.1.1.4.1.1.2.2 | Investigate performance issue |  | 4d | 2008-12-01 A | 2008-12-05 A | 40 | 100% | Dan | 32h | 32h |  |
| 42 | 1.1.1.4.1.1.3 | **Implement fix for caGrid defects** |  | 3d | 2008-12-05 A | 2008-12-10 A |  | 100% |  | 24h | 24h |  |
| 43 | 1.1.1.4.1.1.3.1 | Implement fix for ApplicationServiceProvider |  | 1d | 2008-12-05 A | 2008-12-08 A | 41 | 100% | Dan | 8h | 8h |  |
| 44 | 1.1.1.4.1.1.3.2 | Implement fix for caGrid CQL |  | 2d | 2008-12-08 A | 2008-12-10 A | 43 | 100% | Dan | 16h | 16h |  |
| 45 | 1.1.1.4.1.1.4 | Implement fix for ACEGI security context |  | 1d | 2008-12-10 A | 2008-12-11 A | 44 | 100% | Dan | 8h | 8h |  |
| 46 | 1.1.1.4.1.1.5 | Implement fix for subclass and set ordering |  | 1d | 2008-12-10 A | 2008-12-11 A | 44 | 100% | Dan | 8h | 8h |  |
| 47 | 1.1.1.4.1.1.6 | PKGeneratorValidator.java generates a NullPointerException |  | 1d | 2008-12-11 A | 2008-12-12 A | 46 | 100% | Dan | 8h | 8h |  |
| 48 | 1.1.1.4.1.1.7 | Implement fix for hibernate property error in query |  | 2d | 2008-12-12 A | 2008-12-16 A | 47 | 100% | Dan | 16h | 16h |  |
| 49 | 1.1.1.4.1.1.8 | Implement writable API façade |  | 4d | 2008-12-16 A | 2008-12-22 A | 48 | 100% | Dan | 32h | 32h |  |
| 50 | 1.1.1.4.1.2 | **Test** |  | 22d | 2008-12-15 A | 2009-01-14 A |  | 100% |  | 232h | 232h | QA |
| 51 | 1.1.1.4.1.2.1 | Prepare test plan |  | 5d | 2008-12-15 A | 2008-12-22 A | 52SF | 100% | QA | 40h | 40h |  |
| 52 | 1.1.1.4.1.2.2 | Execute test plan |  | 10d | 2008-12-22 A | 2009-01-08 A | 36 | 100% | QA | 80h | 80h |  |
| 53 | 1.1.1.4.1.2.3 | Provide test support |  | 14d | 2008-12-22 A | 2009-01-14 A | 36 | 100% | Satish | 112h | 112h |  |
| 54 | 1.1.1.4.1.3 | Iteration complete / Release SDK 4.1.1 | milestone | 0d | 2009-01-09 A | 2009-01-09 A | 53 | 100% |  |  |  |  |

| ID | WBS | Task | Duration | Start | Finish | Predecessors | Complete | Resources | Work | Actual work | Text11 |
| --- | --- | --- | --- | --- | --- | --- | --- | --- | --- | --- | --- |
| 55 | 1.1.1.4.2 | **Iteration 2** | 61d | 2008-11-07 A | 2009-01-30 A |  | 100% |  | 360h | 360h |  |
| 56 | 1.1.1.4.2.1 | **Implementation** | 9.5d | 2009-01-09 A | 2009-01-22 A |  | 100% |  | 76h | 76h |  |
| 57 | 1.1.1.4.2.1.1 | **SDK Installer** | 9.5d | 2009-01-09 A | 2009-01-22 A |  | 100% |  | 76h | 76h |  |
| 58 | 1.1.1.4.2.1.1.1 | Implement tabs for installation | 7.5d | 2009-01-09 A | 2009-01-20 A | 54 | 100% | Dan | 60h | 60h |  |
| 59 | 1.1.1.4.2.1.1.2 | Review and check-in the code | 2d | 2009-01-21 A | 2009-01-22 A | 58 | 100% | Dan | 16h | 16h |  |
| 60 | 1.1.1.4.2.2 | **Software Configuration Management** | 45d | 2008-11-07 A | 2009-01-08 A |  | 100% |  | 160h | 160h |  |
| 61 | 1.1.1.4.2.2.1 | **BDA Activities** | 45d | 2008-11-07 A | 2009-01-08 A |  | 100% |  | 160h | 160h | Systems |
| 62 | 1.1.1.4.2.2.1.1 | Create directory structure and compilation scripts | 15d | 2008-11-07 A | 2008-12-01 A | 6 | 100% | Santhosh [50%] | 60h | 60h |  |
| 63 | 1.1.1.4.2.2.1.2 | Create code generation and Packaging scripts | 25d | 2008-12-02 A | 2009-01-08 A | 62 | 100% | Santhosh [50%] | 100h | 100h |  |
| 64 | 1.1.1.4.2.3 | **Test** | 8d | 2009-01-20 A | 2009-01-29 A |  | 100% |  | 124h | 124h |  |
| 65 | 1.1.1.4.2.3.1 | Prepare test plan | 3d | 2009-01-20 A | 2009-01-26 A | 66SF | 100% | QA | 24h | 24h |  |
| 66 | 1.1.1.4.2.3.2 | Execute test plan | 5d | 2009-01-23 A | 2009-01-29 A | 61, 57 | 100% | QA | 40h | 40h |  |
| 67 | 1.1.1.4.2.3.3 | Provide test support | 5d | 2009-01-23 A | 2009-01-29 A | 61, 57 | 100% | Santhosh [50%]; Dan | 60h | 60h |  |
| 68 | 1.1.1.4.2.4 | Iteration complete | 1d | 2009-01-30 A | 2009-01-30 A | 60, 64 | 100% |  |  |  |  |
| 69 | 1.1.1.4.3 | **Iteration 3** | 24d | 2009-02-02 A | 2009-03-05 A |  | 100% |  | 376h | 376h |  |
| 70 | 1.1.1.4.3.1 | **Implementation** | 12d | 2009-02-02 A | 2009-02-17 A |  | 100% |  | 96h | 96h |  |
| 71 | 1.1.1.4.3.1.1 | **Freestyle search research** | 5d | 2009-02-02 A | 2009-02-06 A |  | 100% |  | 40h | 40h |  |
| 72 | 1.1.1.4.3.1.1.1 | Research/Prototype | 5d | 2009-02-02 A | 2009-02-06 A | 68 | 100% | Dan | 40h | 40h |  |
| 73 | 1.1.1.4.3.1.2 | **Defect Fixes** | 2d | 2009-02-09 A | 2009-02-10 A |  | 100% |  | 16h | 16h |  |
| 74 | 1.1.1.4.3.1.2.1 | Installer defects | 2d | 2009-02-09 A | 2009-02-10 A | 72 | 100% | Dan | 16h | 16h |  |
| 75 | 1.1.1.4.3.1.3 | Test case development/integration | 5d | 2009-02-11 A | 2009-02-17 A | 74 | 100% | Dan | 40h | 40h |  |
| 76 | 1.1.1.4.3.2 | **Software Configuration Management** | 20d | 2009-02-02 A | 2009-02-27 A |  | 100% |  | 160h | 160h |  |
| 77 | 1.1.1.4.3.2.1 | **BDA Activities** | 20d | 2009-02-02 A | 2009-02-27 A |  | 100% |  | 160h | 160h |  |
| 78 | 1.1.1.4.3.2.1.1 | Create automated deployment scripts | 12d | 2009-02-02 A | 2009-02-17 A | 68 | 100% | Santhosh; Satish [50%] | 96h | 96h |  |
| 79 | 1.1.1.4.3.2.1.2 | Migrate code to SVN | 3d | 2009-02-18 A | 2009-02-20 A | 78 | 100% | Satish | 24h | 24h |  |
| 80 | 1.1.1.4.3.2.1.3 | Configure Hudson server | 5d | 2009-02-23 A | 2009-02-27 A | 79 | 100% | Santhosh | 40h | 40h |  |

| ID | WBS | Task | Type | Duration | Start | Finish | Predecessors | Complete | Constraint | Resources | Work | Actual work |
| --- | --- | --- | --- | --- | --- | --- | --- | --- | --- | --- | --- | --- |
| 81 | 1.1.1.4.3.3 | **Test** |  | 12d | 2009-02-18 A | 2009-03-05 A |  | 100% |  |  | 120h | 120h |
| 82 | 1.1.1.4.3.3.1 | Prepare test plan |  | 3d | 2009-02-18 A | 2009-03-02 A | 83SF | 100% |  | QA | 24h | 24h |
| 83 | 1.1.1.4.3.3.2 | Execute test plan |  | 4d | 2009-03-02 A | 2009-03-05 A | 71, 77 | 100% |  | QA | 32h | 32h |
| 84 | 1.1.1.4.3.3.3 | Provide test support |  | 4d | 2009-03-02 A | 2009-03-05 A | 71, 77 | 100% |  | Satish; Dan | 64h | 64h |
| 85 | 1.1.1.4.3.4 | Iteration complete | milestone | 0d | 2009-03-05 A | 2009-03-05 A | 81 | 100% |  |  |  |  |
| 86 | 1.1.1.4.4 | **Iteration 4** |  | 17d | 2009-03-06 A | 2009-03-31 A |  | 100% |  |  | 180h | 180h |
| 87 | 1.1.1.4.4.1 | **Implementation** |  | 17d | 2009-03-06 A | 2009-03-31 A |  | 100% |  |  | 180h | 180h |
| 88 | 1.1.1.4.4.1.1 | **BDA Activities** |  | 15d | 2009-03-06 A | 2009-03-26 A |  | 100% |  |  | 60h | 60h |
| 89 | 1.1.1.4.4.1.1.1 | Integrate Junits in the build process |  | 5d | 2009-03-06 A | 2009-03-12 A | 85 | 100% |  | Santhosh [50%] | 20h | 20h |
| 90 | 1.1.1.4.4.1.1.2 | Create database auto-deployment configuration |  | 5d | 2009-03-13 A | 2009-03-19 A | 89 | 100% |  | Santhosh [50%] | 20h | 20h |
| 91 | 1.1.1.4.4.1.1.3 | Configure hudson server for build and test cases |  | 5d | 2009-03-20 A | 2009-03-26 A | 90 | 100% |  | Santhosh [50%] | 20h | 20h |
| 92 | 1.1.1.4.4.1.2 | **SDK Workbench** |  | 15d | 2009-03-06 A | 2009-03-26 A |  | 100% |  |  | 120h | 120h |
| 93 | 1.1.1.4.4.1.2.1 | Implement deployment scenario workflows |  | 10d | 2009-03-06 A | 2009-03-19 A | 85 | 100% |  | Dan | 80h | 80h |
| 94 | 1.1.1.4.4.1.2.2 | Implement fix for the defects/comments received |  | 5d | 2009-03-20 A | 2009-03-26 A | 93 | 100% |  | Dan | 40h | 40h |
| 95 | 1.1.1.4.4.1.3 | Iteration complete | milestone | 0d | 2009-03-31 A | 2009-03-31 A | 92, 88 | 100% | start no earlier than 2009-03-31 |  |  |  |
| 96 | 1.1.1.4.5 | **Iteration 5** |  | 27d | 2009-03-25 A | 2009-04-30 A |  | 100% |  |  | 492h | 492h |
| 97 | 1.1.1.4.5.1 | **Test** |  | 19d | 2009-03-25 A | 2009-04-20 A |  | 100% |  |  | 384h | 384h |
| 98 | 1.1.1.4.5.1.1 | Prepare test plan |  | 3d | 2009-03-25 A | 2009-03-31 A | 99SF | 100% |  | QA | 24h | 24h |
| 99 | 1.1.1.4.5.1.2 | Execute test plan |  | 15d | 2009-03-31 A | 2009-04-20 A | 95 | 100% |  | QA | 120h | 120h |
| 100 | 1.1.1.4.5.1.3 | Provide test support |  | 15d | 2009-03-31 A | 2009-04-20 A | 95 | 100% |  | Santhosh; Dan | 240h | 240h |
| 101 | 1.1.1.4.5.2 | **BDA Activities** |  | 8d | 2009-04-21 A | 2009-04-30 A |  | 100% |  |  | 32h | 32h |
| 102 | 1.1.1.4.5.2.1 | Investigate dashboard software |  | 4d | 2009-04-21 A | 2009-04-24 A | 100 | 100% |  | Santhosh [50%] | 16h | 16h |
| 103 | 1.1.1.4.5.2.2 | Install and configure code quality tools |  | 4d | 2009-04-27 A | 2009-04-30 A | 102 | 100% |  | Santhosh [50%] | 16h | 16h |
| 104 | 1.1.1.4.5.3 | **SDK Workbench** |  | 6d | 2009-04-21 A | 2009-04-28 A |  | 100% |  |  | 48h | 48h |
| 105 | 1.1.1.4.5.3.1 | Implement remote deployment scenarios |  | 2d | 2009-04-21 A | 2009-04-22 A | 100 | 100% |  | Dan | 16h | 16h |
| 106 | 1.1.1.4.5.3.2 | Implement Grid security scenarios |  | 2d | 2009-04-23 A | 2009-04-24 A | 105 | 100% |  | Dan | 16h | 16h |
| 107 | 1.1.1.4.5.3.3 | Defect fixes |  | 2d | 2009-04-27 A | 2009-04-28 A | 106 | 100% |  | Dan | 16h | 16h |

| ID | WBS | Task | Type | Duration | Start | Finish | Predecessors | Complete | Constraint | Resources | Work | Actual work |
| --- | --- | --- | --- | --- | --- | --- | --- | --- | --- | --- | --- | --- |
| 108 | 1.1.1.4.5.4 | **Bootcamp support** |  | 7d | 2009-04-21 A | 2009-04-29 A |  | 100% |  |  | 28h | 28h |
| 109 | 1.1.1.4.5.4.1 | Provide presentation & material |  | 7d | 2009-04-21 A | 2009-04-29 A | 97 | 100% |  | Satish [50%] | 28h | 28h |
| 110 | 1.1.1.4.5.5 | Iteration complete | milestone | 0d | 2009-04-30 A | 2009-04-30 A | 97, 101, 104 | 100% |  |  |  |  |
| 111 | 1.1.1.4.6 | **Iteration 6** |  | 22d | 2009-05-01 A | 2009-06-01 A |  | 100% |  |  | 364h | 364h |
| 112 | 1.1.1.4.6.1 | Bootcamp preperation and presentation |  | 5d | 2009-05-01 A | 2009-05-07 A | 110 | 100% |  | Satish [50%] | 20h | 20h |
| 113 | 1.1.1.4.6.2 | Arch FTF preperation and presentation |  | 6d | 2009-05-08 A | 2009-05-15 A | 112 | 100% |  | Satish [50%] | 24h | 24h |
| 114 | 1.1.1.4.6.3 | **SDK Workbench** |  | 22d | 2009-05-01 A | 2009-06-01 A |  | 100% |  |  | 176h | 176h |
| 115 | 1.1.1.4.6.3.1 | BDAfication of SDK workbench |  | 10d | 2009-05-01 A | 2009-05-14 A | 110 | 100% |  | Dan | 80h | 80h |
| 116 | 1.1.1.4.6.3.2 | SVN reorganization |  | 1d | 2009-05-15 A | 2009-05-15 A | 115 | 100% |  | Dan | 8h | 8h |
| 117 | 1.1.1.4.6.3.3 | Implement SDK download workflow |  | 5d | 2009-05-18 A | 2009-05-22 A | 116 | 100% |  | Dan | 40h | 40h |
| 118 | 1.1.1.4.6.3.4 | Fix defects |  | 6d | 2009-05-25 A | 2009-06-01 A | 117 | 100% |  | Dan | 48h | 48h |
| 119 | 1.1.1.4.6.4 | **BDA Activities** |  | 18d | 2009-05-01 A | 2009-05-26 A |  | 100% |  |  | 144h | 144h |
| 120 | 1.1.1.4.6.4.1 | Code quality plugin installation |  | 5d | 2009-05-01 A | 2009-05-07 A | 110 | 100% |  | Santhosh | 40h | 40h |
| 121 | 1.1.1.4.6.4.2 | Fix test cases |  | 3d | 2009-05-08 A | 2009-05-12 A | 120 | 100% |  | Santhosh | 24h | 24h |
| 122 | 1.1.1.4.6.4.3 | QA support |  | 10d | 2009-05-13 A | 2009-05-26 A | 121 | 100% |  | Santhosh | 80h | 80h |
| 123 | 1.1.1.4.6.5 | Iteration complete | milestone | 0d | 2009-06-01 A | 2009-06-01 A | 119, 114 | 100% |  |  |  |  |
| 124 | 1.1.1.4.7 | **Iteration 7** |  | 45d | 2009-06-02 A | 2009-08-03 A |  | 100% |  |  | 340h | 340h |
| 125 | 1.1.1.4.7.1 | **Continuous Integration configuration** |  | 4d | 2009-06-02 A | 2009-06-05 A |  | 100% |  |  | 32h | 32h |
| 126 | 1.1.1.4.7.1.1 | Fix database scripts |  | 2d | 2009-06-02 A | 2009-06-03 A | 123 | 100% |  | Santhosh | 16h | 16h |
| 127 | 1.1.1.4.7.1.2 | Re-deploy hudson on DEV environment |  | 1d | 2009-06-04 A | 2009-06-04 A | 126 | 100% |  | Santhosh | 8h | 8h |
| 128 | 1.1.1.4.7.1.3 | Configure SDK workbench track in Hudson |  | 1d | 2009-06-05 A | 2009-06-05 A | 127 | 100% |  | Santhosh | 8h | 8h |
| 129 | 1.1.1.4.7.2 | **WebSSO presentation** |  | 5d | 2009-06-18 A | 2009-06-24 A |  | 100% |  |  | 24h | 24h |
| 130 | 1.1.1.4.7.2.1 | Prepare presentation |  | 1d | 2009-06-18 A | 2009-06-18 A | 131SF | 100% |  | Santhosh | 8h | 8h |
| 131 | 1.1.1.4.7.2.2 | Internal review |  | 1d | 2009-06-18 A | 2009-06-19 A | 132SF-1d | 100% |  | Santhosh | 8h | 8h |
| 132 | 1.1.1.4.7.2.3 | External review | milestone | 0d | 2009-06-22 A | 2009-06-22 A | 133SF-2d | 100% | start no earlier than 2009-06-19 | Steve L. |  |  |
| 133 | 1.1.1.4.7.2.4 | Present to Novartis |  | 1d | 2009-06-24 A | 2009-06-24 A |  | 100% | start no earlier than 2009-06-24 | Santhosh | 8h | 8h |

| ID | WBS | Task | Duration | Start | Finish | Predecessors | Complete | Constraint | Resources | Work | Actual work |
| --- | --- | --- | --- | --- | --- | --- | --- | --- | --- | --- | --- |
| 134 | 1.1.1.4.7.3 | **Testing** | 40d | 2009-06-08 A | 2009-07-31 A |  | 100% |  |  | 284h | 284h |
| 135 | 1.1.1.4.7.3.1 | Test BDA scripts | 8d | 2009-06-08 A | 2009-06-17 A | 128 | 100% |  | Satish [50%] | 32h | 32h |
| 136 | 1.1.1.4.7.3.2 | Test SDK workbench | 8d | 2009-06-18 A | 2009-06-29 A | 135 | 100% |  | Satish [50%] | 32h | 32h |
| 137 | 1.1.1.4.7.3.3 | Fix defects | 5d | 2009-06-30 A | 2009-07-06 A | 136 | 100% |  | Dan | 40h | 40h |
| 138 | 1.1.1.4.7.3.4 | QA Testing | 15d | 2009-07-13 A | 2009-07-31 A |  | 100% | start no earlier than 2009-07-13 | QA | 120h | 120h |
| 139 | 1.1.1.4.7.3.5 | Fix defects | 15d | 2009-07-13 A | 2009-07-31 A | 138SS | 100% | start no earlier than 2009-07-13 | Dan [50%] | 60h | 60h |
| 140 | 1.1.1.4.7.4 | Iteration complete/code freeze | 1d | 2009-08-03 A | 2009-08-03 A | 139 | 100% |  |  |  |  |
| 141 | 1.1.1.5 | **Transition** | 190.5d | 2008-12-01 A | 2009-08-24 A |  | 100% |  |  | 436h | 436h |
| 142 | 1.1.1.5.1 | **Annaul Meeting** | 167.5d | 2008-12-01 A | 2009-07-22 A |  | 100% |  |  | 168h | 168h |
| 143 | 1.1.1.5.1.1 | Prepare posters, video | 10.5d | 2008-12-01 A | 2008-12-15 A | 37 | 100% |  | Satish [50%]; Santhosh | 120h | 120h |
| 144 | 1.1.1.5.1.2 | Attend meeting | 3d | 2009-07-20 A | 2009-07-22 A |  | 100% | start no earlier than 2009-07-20 | Satish; Santhosh | 48h | 48h |
| 145 | 1.1.1.5.2 | **Deployment** | 28d | 2009-07-15 A | 2009-08-21 A |  | 100% |  |  | 80h | 80h |
| 146 | 1.1.1.5.2.1 | Review ARC with systems team | 1d | 2009-07-15 A | 2009-07-15 A |  | 100% | start no earlier than 2009-07-15 | Satish; Systems | 16h | 16h |
| 147 | 1.1.1.5.2.2 | Deploy on DEV | 1d | 2009-08-04 A | 2009-08-04 A | 140, 146 | 100% |  | Santhosh | 8h | 8h |
| 148 | 1.1.1.5.2.3 | Depoy on QA | 1d | 2009-08-07 A | 2009-08-07 A | 147FS+2d | 100% |  | Santhosh | 8h | 8h |
| 149 | 1.1.1.5.2.4 | Deploy on STAGE | 1d | 2009-08-13 A | 2009-08-13 A | 148FS+3d | 100% |  | Satish; Systems | 16h | 16h |
| 150 | 1.1.1.5.2.5 | App Scan | 1d | 2009-08-17 A | 2009-08-17 A | 149FS+1d | 100% |  | Satish; Systems | 16h | 16h |
| 151 | 1.1.1.5.2.6 | Deploy on PROD | 1d | 2009-08-21 A | 2009-08-21 A | 150FS+3d | 100% |  | Satish; Systems | 16h | 16h |
| 152 | 1.1.1.5.3 | **Documentation** | 31d | 2009-07-13 A | 2009-08-24 A |  | 100% |  |  | 188h | 188h |
| 153 | 1.1.1.5.3.1 | Prepare installation guide for workbench | 1d | 2009-07-13 A | 2009-07-13 A | 138SS | 100% |  | Dan | 8h | 8h |
| 154 | 1.1.1.5.3.2 | Develop Users guide for the workbench | 15d | 2009-07-14 A | 2009-08-03 A | 153 | 100% |  | Dan [50%] | 60h | 60h |
| 155 | 1.1.1.5.3.3 | Update developers guide | 4d | 2009-08-04 A | 2009-08-07 A | 154 | 100% |  | Dan | 32h | 32h |
| 156 | 1.1.1.5.3.4 | Prepare release packaging | 1d | 2009-07-14 A | 2009-07-14 A | 153 | 100% |  | Dan | 8h | 8h |
| 157 | 1.1.1.5.3.5 | Create workbench wiki site | 3d | 2009-08-04 A | 2009-08-06 A | 154, 143 | 100% |  | Satish [50%] | 12h | 12h |
| 158 | 1.1.1.5.3.6 | Update wiki | 2d | 2009-08-07 A | 2009-08-10 A | 157 | 100% |  | Satish [50%] | 8h | 8h |
| 159 | 1.1.1.5.3.7 | Update misc documents | 3d | 2009-08-11 A | 2009-08-13 A | 158, 144 | 100% |  | Satish [50%] | 12h | 12h |
| 160 | 1.1.1.5.3.8 | Prepare release notes | 2d | 2009-08-14 A | 2009-08-17 A | 144, 159 | 100% |  | Satish [50%] | 8h | 8h |
| 161 | 1.1.1.5.3.9 | Prepare training videos | 5d | 2009-08-18 A | 2009-08-24 A | 160 | 100% |  | Satish | 40h | 40h |

| ID | WBS | Task | Duration | Start | Finish | Predecessors | Complete | Remaining | Total slack | Constraint | Resources | Work | Actual work |
| --- | --- | --- | --- | --- | --- | --- | --- | --- | --- | --- | --- | --- | --- |
| 162 | 1.1.1.6 | **caGrid Integration Iteration** | 299d | 2008-10-14 A | 2009-12-04 A |  | 100% |  |  |  |  | 1032h | 1032h |
| 163 | 1.1.1.6.1 | Idenify gaps in SDK 4.2 and caGrid 1.3 | 5d | 2009-09-15 A | 2009-09-21 A |  | 100% |  |  | start no earlier than 2008-09-15 | Satish; caGrid | 80h | 80h |
| 164 | 1.1.1.6.2 | Implement the changes in SDK | 10d | 2009-09-22 A | 2009-10-05 A | 163 | 100% |  |  |  | Satish | 80h | 80h |
| 165 | 1.1.1.6.3 | Provide tag to the cagrid team for testing | 1d | 2009-10-06 A | 2009-10-06 A | 164 | 100% |  |  |  | Satish | 8h | 8h |
| 166 | 1.1.1.6.4 | Acceptance testing | 10d | 2009-10-07 A | 2009-10-20 A | 165 | 100% |  |  |  | caGrid | 80h | 80h |
| 167 | 1.1.1.6.5 | Fix defects | 3d | 2009-10-21 A | 2009-10-23 A | 166 | 100% |  |  |  | Satish | 24h | 24h |
| 168 | 1.1.1.6.6 | Acceptance testing | 25d | 2009-10-26 A | 2009-11-27 A | 167 | 100% |  |  |  | caGrid | 200h | 200h |
| 169 | 1.1.1.6.7 | **QA** | 30d | 2009-10-26 A | 2009-12-04 A |  | 100% |  |  |  |  | 480h | 480h |
| 170 | 1.1.1.6.7.1 | Perform testing | 30d | 2009-10-26 A | 2009-12-04 A | 167 | 100% |  |  |  | Xiaoling | 240h | 240h |
| 171 | 1.1.1.6.7.2 | Provide test support | 30d | 2009-10-26 A | 2009-12-04 A | 167 | 100% |  |  |  | Santhosh | 240h | 240h |
| 172 | 1.1.1.6.8 | **Bootcamp Support** | 7d | 2008-10-21 A | 2008-10-29 A |  | 100% |  |  |  |  | 56h | 56h |
| 173 | 1.1.1.6.8.1 | Participate in bootcamp coordination activities | 4d | 2008-10-21 A | 2008-10-24 A | 166 | 100% |  |  |  | Satish | 32h | 32h |
| 174 | 1.1.1.6.8.2 | Present in the bootcamp | 3d | 2008-10-27 A | 2008-10-29 A | 173 | 100% |  |  |  | Satish | 24h | 24h |
| 175 | 1.1.1.6.9 | Arch FTF Participation | 3d | 2008-10-14 A | 2008-10-16 A |  | 100% |  |  | start no earlier than 2008-10-14 | Santhosh | 24h | 24h |
| 176 | 1.1.1.7 | **Transition** | 2d | 2009-12-07 A | 2009-12-08 A |  | 100% |  |  |  |  | 16h | 16h |
| 177 | 1.1.1.7.1 | Download center and gforge, release notes update | 1d | 2009-12-07 A | 2009-12-07 A | 162, 170 | 100% |  |  |  | Satish; Dan | 16h | 16h |
| 178 | 1.1.1.7.2 | Release SDK 4.2 and caCORE workbench 1.0 | 1d | 2009-12-08 A | 2009-12-08 A | 177 | 100% |  |  |  |  |  |  |
| 179 | 1.1.2 | **CSM 4.2** | 207d | 2008-11-10 A | 2009-08-25 |  | 99% | 1.46d | 188d |  |  | 2597.6h | 2549.6h |
| 180 | 1.1.2.1 | Production support | 100d | 2008-11-17 A | 2009-04-10 A |  | 100% |  |  | start no earlier than 2008-11-17 | Vijay [25%] | 200h | 200h |
| 181 | 1.1.2.2 | **Inception** | 8d | 2008-11-10 A | 2008-11-19 A |  | 100% |  |  |  |  | 64h | 64h |
| 182 | 1.1.2.2.1 | **Requirements** | 8d | 2008-11-10 A | 2008-11-19 A |  | 100% |  |  |  |  | 64h | 64h |
| 183 | 1.1.2.2.1.1 | Create scope candidate spreadsheet for 4.2 | 3d | 2008-11-10 A | 2008-11-12 A |  | 100% |  |  | start no earlier than 2008-11-10 | Charles | 24h | 24h |
| 184 | 1.1.2.2.1.2 | Submit scope candidate spreadsheet for review | 3d | 2008-11-13 A | 2008-11-17 A | 183 | 100% |  |  |  | Charles | 24h | 24h |
| 185 | 1.1.2.2.1.3 | Review and provide feedback on candidate spreadsheet | 2d | 2008-11-18 A | 2008-11-19 A | 184 | 100% |  |  |  | Dave H. | 16h | 16h |

| ID | WBS | Task | Type | Duration | Start | Finish | Predecessors | Complete | Resources | Work | Actual work | Text11 |
| --- | --- | --- | --- | --- | --- | --- | --- | --- | --- | --- | --- | --- |
| 186 | 1.1.2.3 | **Elaboration** |  | 27d | 2008-11-18 A | 2008-12-24 A |  | 100% |  | 84h | 84h |  |
| 187 | 1.1.2.3.1 | **Iteration 1** |  | 27d | 2008-11-18 A | 2008-12-24 A |  | 100% |  | 84h | 84h |  |
| 188 | 1.1.2.3.1.1 | **Project Management** |  | 25d | 2008-11-20 A | 2008-12-24 A |  | 100% |  | 12h | 12h |  |
| 189 | 1.1.2.3.1.1.1 | Provide LOE on scope candidate list |  | 2d | 2008-11-20 A | 2008-12-02 A | 185 | 100% | Satish [25%] | 4h | 4h |  |
| 190 | 1.1.2.3.1.1.2 | Develop schedule based on LOE |  | 2d | 2008-12-03 A | 2008-12-04 A | 189 | 100% | Satish [25%] | 4h | 4h |  |
| 191 | 1.1.2.3.1.1.3 | Submit schedule for review | milestone | 0d | 2008-12-04 A | 2008-12-04 A | 190 | 100% | Dave H. |  |  |  |
| 192 | 1.1.2.3.1.1.4 | Revise schedule |  | 2d | 2008-12-23 A | 2008-12-24 A | 199 | 100% | Satish [25%] | 4h | 4h |  |
| 193 | 1.1.2.3.1.2 | **Requirements** |  | 12d | 2008-12-05 A | 2008-12-22 A |  | 100% |  | 48h | 48h |  |
| 194 | 1.1.2.3.1.2.1 | **Create scope document** |  | 12d | 2008-12-05 A | 2008-12-22 A |  | 100% |  | 48h | 48h |  |
| 195 | 1.1.2.3.1.2.1.1 | Create draft scope document |  | 4d | 2008-12-05 A | 2008-12-10 A | 190 | 100% | Satish [25%] | 8h | 8h |  |
| 196 | 1.1.2.3.1.2.1.2 | Prepare risk list |  | 2d | 2008-12-11 A | 2008-12-12 A | 195 | 100% | Satish [25%] | 4h | 4h |  |
| 197 | 1.1.2.3.1.2.1.3 | Review scope document |  | 3d | 2008-12-15 A | 2008-12-17 A | 196 | 100% | Dave H. | 24h | 24h |  |
| 198 | 1.1.2.3.1.2.1.4 | Revise scope document |  | 2d | 2008-12-18 A | 2008-12-19 A | 197 | 100% | Satish [25%] | 4h | 4h |  |
| 199 | 1.1.2.3.1.2.1.5 | Sign off scope document |  | 1d | 2008-12-22 A | 2008-12-22 A | 198 | 100% | Dave H. | 8h | 8h |  |
| 200 | 1.1.2.3.1.3 | **Documentation** |  | 3d | 2008-11-18 A | 2008-11-20 A |  | 100% |  | 24h | 24h |  |
| 201 | 1.1.2.3.1.3.1 | Create wiki FAQ |  | 2d | 2008-11-18 A | 2008-11-19 A | 184 | 100% | Vijay | 16h | 16h |  |
| 202 | 1.1.2.3.1.3.2 | Update Gforge trackers |  | 1d | 2008-11-20 A | 2008-11-20 A | 201 | 100% | Vijay | 8h | 8h |  |
| 203 | 1.1.2.3.1.4 | Iteration complete | milestone | 0d | 2008-12-24 A | 2008-12-24 A | 188, 193, 200 | 100% |  |  |  |  |
| 204 | 1.1.2.4 | **Construction** |  | 189d | 2008-11-21 A | 2009-08-12 A |  | 100% |  | 1985.6h | 1985.6h |  |
| 205 | 1.1.2.4.1 | **Iteration 1** |  | 28d | 2008-11-21 A | 2008-12-30 A |  | 100% |  | 206h | 206h |  |
| 206 | 1.1.2.4.1.1 | **Implementation** |  | 23d | 2008-11-21 A | 2008-12-23 A |  | 100% |  | 126h | 126h |  |
| 207 | 1.1.2.4.1.1.1 | Validating Username |  | 3d | 2008-11-21 A | 2008-11-25 A | 202 | 100% | Vijay [75%] | 18h | 18h | LSD |
| 208 | 1.1.2.4.1.1.2 | Validate the User details for the User registration |  | 3d | 2008-11-26 A | 2008-12-02 A | 207 | 100% | Vijay [75%] | 18h | 18h | LSD |
| 209 | 1.1.2.4.1.1.3 | Deployment support for CSM UPT 4.1 on DEV, QA, STAGE, PROD |  | 2d | 2008-12-03 A | 2008-12-04 A | 208 | 100% | Vijay [75%] | 12h | 12h |  |
| 210 | 1.1.2.4.1.1.4 | The getAccessibleGroups method is giving an session closed error |  | 2d | 2008-12-05 A | 2008-12-08 A | 209 | 100% | Vijay [75%] | 12h | 12h |  |
| 211 | 1.1.2.4.1.1.5 | Source code in JAR file |  | 1.5d | 2008-12-09 A | 2008-12-10 A | 210 | 100% | Vijay [75%] | 9h | 9h |  |
| 212 | 1.1.2.4.1.1.6 | Incomplete list of attributes shown for instance level security when creating filter |  | 1.5d | 2008-12-10 A | 2008-12-11 A | 211 | 100% | Vijay [75%] | 9h | 9h |  |
| 213 | 1.1.2.4.1.1.7 | CGMM + CLM Integration for Audit Logging |  | 4d | 2008-12-12 A | 2008-12-17 A | 212 | 100% | Vijay [75%] | 24h | 24h |  |
| 214 | 1.1.2.4.1.1.8 | Investigate - users created in csmupt application are shown in other applications |  | 1d | 2008-12-18 A | 2008-12-18 A | 213 | 100% | Vijay [75%] | 6h | 6h |  |
| 215 | 1.1.2.4.1.1.9 | Investigate removeGroupRoleFromProtectionGroup() does not remove any records |  | 2d | 2008-12-19 A | 2008-12-22 A | 214 | 100% | Vijay [75%] | 12h | 12h |  |
| 216 | 1.1.2.4.1.1.10 | Investigate assigning a group to a user doesn’t assign the group's associated PG/Role |  | 1d | 2008-12-23 A | 2008-12-23 A | 215 | 100% | Vijay [75%] | 6h | 6h |  |
| 217 | 1.1.2.4.1.1.11 | Implementation complete | milestone | 0d | 2008-12-23 A | 2008-12-23 A | 216 | 100% |  |  |  |  |

| ID | WBS | Task | Type | Duration | Start | Finish | Predecessors | Complete | Resources | Work | Actual work |
| --- | --- | --- | --- | --- | --- | --- | --- | --- | --- | --- | --- |
| 218 | 1.1.2.4.1.2 | **Test** |  | 8d | 2008-12-19 A | 2008-12-30 A |  | 100% |  | 80h | 80h |
| 219 | 1.1.2.4.1.2.1 | Prepare test plan |  | 3d | 2008-12-19 A | 2008-12-24 A | 220SF | 100% | QA | 24h | 24h |
| 220 | 1.1.2.4.1.2.2 | Execute test plan |  | 4d | 2008-12-24 A | 2008-12-30 A | 217 | 100% | QA | 32h | 32h |
| 221 | 1.1.2.4.1.2.3 | Provide test support |  | 4d | 2008-12-24 A | 2008-12-30 A | 217 | 100% | Vijay [75%] | 24h | 24h |
| 222 | 1.1.2.4.1.3 | Iteration complete | milestone | 0d | 2008-12-30 A | 2008-12-30 A | 218, 206 | 100% |  |  |  |
| 223 | 1.1.2.4.2 | **Iteration 2** |  | 21d | 2009-01-02 A | 2009-01-30 A |  | 100% |  | 206h | 206h |
| 224 | 1.1.2.4.2.1 | **Implementation** |  | 16d | 2009-01-02 A | 2009-01-23 A |  | 100% |  | 96h | 96h |
| 225 | 1.1.2.4.2.1.1 | **Backwards compatibility of UPT** |  | 16d | 2009-01-02 A | 2009-01-23 A |  | 100% |  | 96h | 96h |
| 226 | 1.1.2.4.2.1.1.1 | Analyze backwards compatibility changes |  | 6d | 2009-01-02 A | 2009-01-09 A | 222 | 100% | Vijay [75%] | 36h | 36h |
| 227 | 1.1.2.4.2.1.1.2 | Implement CSM schema version detection module |  | 4d | 2009-01-12 A | 2009-01-15 A | 226 | 100% | Vijay [75%] | 24h | 24h |
| 228 | 1.1.2.4.2.1.1.3 | Implement version forwarding changes |  | 4d | 2009-01-16 A | 2009-01-21 A | 227 | 100% | Vijay [75%] | 24h | 24h |
| 229 | 1.1.2.4.2.1.1.4 | Prepare build script for EAR file |  | 2d | 2009-01-22 A | 2009-01-23 A | 228 | 100% | Vijay [75%] | 12h | 12h |
| 230 | 1.1.2.4.2.2 | **Test** |  | 12d | 2009-01-15 A | 2009-01-30 A |  | 100% |  | 110h | 110h |
| 231 | 1.1.2.4.2.2.1 | Prepare test plan |  | 5d | 2009-01-15 A | 2009-01-26 A | 232SF | 100% | QA | 40h | 40h |
| 232 | 1.1.2.4.2.2.2 | Execute test plan |  | 5d | 2009-01-26 A | 2009-01-30 A | 224 | 100% | QA | 40h | 40h |
| 233 | 1.1.2.4.2.2.3 | Provide test support |  | 5d | 2009-01-26 A | 2009-01-30 A | 224 | 100% | Vijay [75%] | 30h | 30h |
| 234 | 1.1.2.4.2.3 | Iteration complete | milestone | 0d | 2009-01-30 A | 2009-01-30 A | 230 | 100% |  |  |  |
| 235 | 1.1.2.4.3 | **Iteration 3** |  | 23d | 2009-02-02 A | 2009-03-04 A |  | 100% |  | 196h | 196h |
| 236 | 1.1.2.4.3.1 | **Implementation** |  | 19d | 2009-02-02 A | 2009-02-26 A |  | 100% |  | 116h | 116h |
| 237 | 1.1.2.4.3.1.1 | **Defect Fix** |  | 1d | 2009-02-04 A | 2009-02-04 A |  | 100% |  | 8h | 8h |
| 238 | 1.1.2.4.3.1.1.1 | Last iteration defect fixes |  | 1d | 2009-02-04 A | 2009-02-04 A | 242 | 100% | Vijay | 8h | 8h |
| 239 | 1.1.2.4.3.1.2 | **PHI Security Research** |  | 2d | 2009-02-05 A | 2009-02-06 A |  | 100% |  | 12h | 12h |
| 240 | 1.1.2.4.3.1.2.1 | Investigate PHI based security requirements |  | 2d | 2009-02-05 A | 2009-02-06 A | 238 | 100% | Vijay [75%] | 12h | 12h |
| 241 | 1.1.2.4.3.1.3 | **caArray Container Managed security** |  | 19d | 2009-02-02 A | 2009-02-26 A |  | 100% |  | 96h | 96h |
| 242 | 1.1.2.4.3.1.3.1 | Research caArray change request |  | 2d | 2009-02-02 A | 2009-02-03 A | 234 | 100% | Vijay [75%] | 12h | 12h |
| 243 | 1.1.2.4.3.1.3.2 | Implement custom JAAS login module |  | 5d | 2009-02-09 A | 2009-02-13 A | 240 | 100% | Vijay [75%] | 30h | 30h |
| 244 | 1.1.2.4.3.1.3.3 | Implement custom authenticator with CGMM |  | 5d | 2009-02-16 A | 2009-02-20 A | 243 | 100% | Vijay [75%] | 30h | 30h |
| 245 | 1.1.2.4.3.1.3.4 | Modify CGMM UI |  | 4d | 2009-02-23 A | 2009-02-26 A | 244 | 100% | Vijay [75%] | 24h | 24h |
| 246 | 1.1.2.4.3.1.4 | Implementation complete | milestone | 0d | 2009-02-26 A | 2009-02-26 A | 239, 241, 237 | 100% | Vijay [75%] |  |  |

| ID | WBS | Task | Type | Duration | Start | Finish | Predecessors | Complete | Constraint | Resources | Work | Actual work |
| --- | --- | --- | --- | --- | --- | --- | --- | --- | --- | --- | --- | --- |
| 247 | 1.1.2.4.3.2 | **Test** |  | 7d | 2009-02-24 A | 2009-03-04 A |  | 100% |  |  | 80h | 80h |
| 248 | 1.1.2.4.3.2.1 | Prepare test plan |  | 3d | 2009-02-24 A | 2009-02-27 A | 249SF | 100% |  | QA | 24h | 24h |
| 249 | 1.1.2.4.3.2.2 | Execute test plan |  | 4d | 2009-02-27 A | 2009-03-04 A | 241 | 100% |  | QA | 32h | 32h |
| 250 | 1.1.2.4.3.2.3 | Provide test support |  | 4d | 2009-02-27 A | 2009-03-04 A | 241 | 100% |  | Vijay [75%] | 24h | 24h |
| 251 | 1.1.2.4.3.3 | Iteration complete | milestone | 0d | 2009-03-04 A | 2009-03-04 A | 236, 247 | 100% |  |  |  |  |
| 252 | 1.1.2.4.4 | **Iteration 4** |  | 22d | 2009-03-02 A | 2009-03-31 A |  | 100% |  |  | 132h | 132h |
| 253 | 1.1.2.4.4.1 | **Implementation** |  | 22d | 2009-03-02 A | 2009-03-31 A |  | 100% |  |  | 114h | 114h |
| 254 | 1.1.2.4.4.1.1 | App Scan hosting/request for CGMM |  | 1d | 2009-03-02 A | 2009-03-02 A |  | 100% | start no earlier than 2009-03-02 | Vijay [75%] | 6h | 6h |
| 255 | 1.1.2.4.4.1.2 | PHI Security research |  | 10d | 2009-03-03 A | 2009-03-16 A | 254 | 100% |  | Vijay [75%] | 60h | 60h |
| 256 | 1.1.2.4.4.1.3 | **caArray support** |  | 8d | 2009-03-20 A | 2009-03-31 A |  | 100% |  |  | 48h | 48h |
| 257 | 1.1.2.4.4.1.3.1 | Fix issues reported by caArray team |  | 8d | 2009-03-20 A | 2009-03-31 A | 259 | 100% |  | Vijay [75%] | 48h | 48h |
| 258 | 1.1.2.4.4.2 | **Documentation** |  | 3d | 2009-03-17 A | 2009-03-19 A |  | 100% |  |  | 18h | 18h |
| 259 | 1.1.2.4.4.2.1 | CGMM Documentation |  | 3d | 2009-03-17 A | 2009-03-19 A | 255 | 100% |  | Vijay [75%] | 18h | 18h |
| 260 | 1.1.2.4.4.3 | Iteration complete | milestone | 0d | 2009-03-31 A | 2009-03-31 A | 253, 258 | 100% |  |  |  |  |
| 261 | 1.1.2.4.5 | **Iteration 5** |  | 31d | 2009-03-23 A | 2009-05-04 A |  | 100% |  |  | 306h | 306h |
| 262 | 1.1.2.4.5.1 | **CGMM fix** |  | 7d | 2009-04-02 A | 2009-04-10 A |  | 100% |  |  | 42h | 42h |
| 263 | 1.1.2.4.5.1.1 | Workflow redirection instead of forwarding |  | 1d | 2009-04-02 A | 2009-04-02 A | 98 | 100% |  | Vijay [75%] | 6h | 6h |
| 264 | 1.1.2.4.5.1.2 | Configurable home page |  | 1d | 2009-04-03 A | 2009-04-03 A | 263 | 100% |  | Vijay [75%] | 6h | 6h |
| 265 | 1.1.2.4.5.1.3 | Email notification for new account |  | 2d | 2009-04-06 A | 2009-04-07 A | 264 | 100% |  | Vijay [75%] | 12h | 12h |
| 266 | 1.1.2.4.5.1.4 | Text instruction changes |  | 1d | 2009-04-08 A | 2009-04-08 A | 265 | 100% |  | Vijay [75%] | 6h | 6h |
| 267 | 1.1.2.4.5.1.5 | CGMM standalone mode changes |  | 1d | 2009-04-09 A | 2009-04-09 A | 266 | 100% |  | Vijay [75%] | 6h | 6h |
| 268 | 1.1.2.4.5.1.6 | Configurable graphics files |  | 1d | 2009-04-10 A | 2009-04-10 A | 267 | 100% |  | Vijay [75%] | 6h | 6h |
| 269 | 1.1.2.4.5.2 | **caArray Instance level security research** |  | 7d | 2009-04-13 A | 2009-04-21 A |  | 100% |  |  | 98h | 98h |
| 270 | 1.1.2.4.5.2.1 | Document existing issues and solution |  | 5d | 2009-04-13 A | 2009-04-17 A | 262 | 100% |  | Vijay [75%]; Kunal | 70h | 70h |
| 271 | 1.1.2.4.5.2.2 | Review document and solution |  | 2d | 2009-04-20 A | 2009-04-21 A | 270 | 100% |  | Vijay [75%]; Kunal | 28h | 28h |

| ID | WBS | Task | Type | Duration | Start | Finish | Predecessors | Complete | Resources | Work | Actual work |
| --- | --- | --- | --- | --- | --- | --- | --- | --- | --- | --- | --- |
| 272 | 1.1.2.4.5.3 | **Test** |  | 20d | 2009-03-23 A | 2009-04-17 A |  | 100% |  | 94h | 94h |
| 273 | 1.1.2.4.5.3.1 | Prepare test plan |  | 3d | 2009-03-23 A | 2009-04-13 A | 274SF | 100% | QA | 24h | 24h |
| 274 | 1.1.2.4.5.3.2 | Execute test plan |  | 5d | 2009-04-13 A | 2009-04-17 A | 262 | 100% | QA | 40h | 40h |
| 275 | 1.1.2.4.5.3.3 | Provide test support |  | 5d | 2009-04-13 A | 2009-04-17 A | 262 | 100% | Vijay [75%] | 30h | 30h |
| 276 | 1.1.2.4.5.4 | **Documentation** |  | 8d | 2009-04-22 A | 2009-05-01 A |  | 100% |  | 54h | 54h |
| 277 | 1.1.2.4.5.4.1 | Update CGMM user guide |  | 5d | 2009-04-22 A | 2009-04-28 A | 269 | 100% | Vijay [75%] | 30h | 30h |
| 278 | 1.1.2.4.5.4.2 | Complete documentation |  | 3d | 2009-04-29 A | 2009-05-01 A | 277 | 100% | Bronwyn | 24h | 24h |
| 279 | 1.1.2.4.5.5 | **Release Planning** |  | 4d | 2009-04-29 A | 2009-05-04 A |  | 100% |  | 18h | 18h |
| 280 | 1.1.2.4.5.5.1 | Prepare release notes |  | 1d | 2009-04-29 A | 2009-04-29 A | 277, 269 | 100% | Vijay [75%] | 6h | 6h |
| 281 | 1.1.2.4.5.5.2 | Prepare release bundles |  | 1d | 2009-04-30 A | 2009-04-30 A | 280 | 100% | Vijay [75%] | 6h | 6h |
| 282 | 1.1.2.4.5.5.3 | Update Gforge site |  | 1d | 2009-05-04 A | 2009-05-04 A | 281, 278 | 100% | Vijay [75%] | 6h | 6h |
| 283 | 1.1.2.4.5.6 | Iteration complete | milestone | 0d | 2009-05-04 A | 2009-05-04 A | 279 | 100% |  |  |  |
| 284 | 1.1.2.4.6 | **Iteration 6** |  | 20d | 2009-05-05 A | 2009-06-01 A |  | 100% |  | 198h | 198h |
| 285 | 1.1.2.4.6.1 | Release CGMM |  | 1d | 2009-05-05 A | 2009-05-05 A | 283 | 100% | Vijay [75%] | 6h | 6h |
| 286 | 1.1.2.4.6.2 | User support |  | 2d | 2009-05-06 A | 2009-05-07 A | 285 | 100% | Vijay [75%] | 12h | 12h |
| 287 | 1.1.2.4.6.3 | Arch FTF preperation and presentation |  | 4d | 2009-05-08 A | 2009-05-13 A | 286 | 100% | Vijay [75%] | 24h | 24h |
| 288 | 1.1.2.4.6.4 | caArray Instance level security research & discussion |  | 5d | 2009-05-14 A | 2009-05-20 A | 287 | 100% | Vijay [75%]; Kunal [50%]; Satish [50%] | 32h | 32h |
| 289 | 1.1.2.4.6.5 | **Scope preperation** |  | 13d | 2009-05-14 A | 2009-06-01 A |  | 100% |  | 124h | 124h |
| 290 | 1.1.2.4.6.5.1 | Discuss scope items |  | 3d | 2009-05-14 A | 2009-05-18 A | 287 | 100% | Satish [50%] | 12h | 12h |
| 291 | 1.1.2.4.6.5.2 | Prepare scope documents |  | 4d | 2009-05-19 A | 2009-05-22 A | 290 | 100% | Satish [50%] | 16h | 16h |
| 292 | 1.1.2.4.6.5.3 | Review document internally |  | 2d | 2009-05-25 A | 2009-05-26 A | 291 | 100% | Vijay; Harsh; Ashwin; Kalpesh | 64h | 64h |
| 293 | 1.1.2.4.6.5.4 | Submit for NCICB review |  | 4d | 2009-05-27 A | 2009-06-01 A | 292 | 100% | Sichen | 32h | 32h |
| 294 | 1.1.2.4.6.6 | Iteration complete | milestone | 0d | 2009-06-01 A | 2009-06-01 A | 288, 289 | 100% |  |  |  |
| 295 | 1.1.2.4.7 | **Iteration 7** |  | 52d | 2009-06-02 A | 2009-08-12 A |  | 100% |  | 741.6h | 741.6h |
| 296 | 1.1.2.4.7.1 | **BDA Effort** |  | 27d | 2009-06-08 A | 2009-07-14 A |  | 100% |  | 157.6h | 157.6h |
| 297 | 1.1.2.4.7.1.1 | Upgrade BDA Utilities to version 1.0 |  | 3d | 2009-06-08 A | 2009-06-10 A | 128 | 100% | Santhosh | 24h | 24h |
| 298 | 1.1.2.4.7.1.2 | BDAfication of UPT backwards compatibility version |  | 8d | 2009-06-11 A | 2009-06-22 A | 303, 297 | 100% | Vijay; Santhosh | 69.6h | 69.6h |
| 299 | 1.1.2.4.7.1.3 | BDAfication of CGMM |  | 8d | 2009-06-25 A | 2009-07-14 A | 129 | 100% | Santhosh | 64h | 64h |
| 300 | 1.1.2.4.7.2 | CSM Presentation |  | 3d | 2009-06-19 A | 2009-06-23 A | 298 | 100% | Vijay | 24h | 24h |

| ID | WBS | Task | Type | Duration | Start | Finish | Predecessors | Complete | Remaining | Total slack | Free slack | Constraint | Resources | Work | Actual work |
| --- | --- | --- | --- | --- | --- | --- | --- | --- | --- | --- | --- | --- | --- | --- | --- |
| 301 | 1.1.2.4.7.3 | **Instance level security enhancements research** |  | 21d | 2009-06-02 A | 2009-06-30 A |  | 100% |  |  |  |  |  | 136h | 136h |
| 302 | 1.1.2.4.7.3.1 | Install caArray in local environment |  | 3d | 2009-06-02 A | 2009-06-04 A | 294 | 100% |  |  |  |  | Vijay [75%]; Doug H. | 42h | 42h |
| 303 | 1.1.2.4.7.3.2 | Tune and execute queries |  | 3d | 2009-06-05 A | 2009-06-09 A | 302 | 100% |  |  |  |  | Vijay [25%] | 6h | 6h |
| 304 | 1.1.2.4.7.3.3 | Document benchmark results of the queries |  | 6d | 2009-06-10 A | 2009-06-17 A | 303 | 100% |  |  |  |  | Dan K. [50%]; Vijay | 72h | 72h |
| 305 | 1.1.2.4.7.3.4 | Prepare implementation plan |  | 2d | 2009-06-29 A | 2009-06-30 A | 304 | 100% |  |  |  |  | Satish | 16h | 16h |
| 306 | 1.1.2.4.7.4 | **Documentation** |  | 4d | 2009-06-24 A | 2009-06-29 A |  | 100% |  |  |  |  |  | 64h | 64h |
| 307 | 1.1.2.4.7.4.1 | Recommendation for UPT version |  | 4d | 2009-06-24 A | 2009-06-29 A | 300 | 100% |  |  |  |  | Vijay | 32h | 32h |
| 308 | 1.1.2.4.7.4.2 | Document CSM maintanance plan |  | 4d | 2009-06-24 A | 2009-06-29 A | 300 | 100% |  |  |  |  | Vijay | 32h | 32h |
| 309 | 1.1.2.4.7.5 | **Instance level security implementation** |  | 24d | 2009-06-30 A | 2009-07-31 A |  | 100% |  |  |  |  |  | 120h | 120h |
| 310 | 1.1.2.4.7.5.1 | Create refresh logic |  | 2d | 2009-06-30 A | 2009-07-07 A | 308, 321 | 100% |  |  |  |  | Vijay | 16h | 16h |
| 311 | 1.1.2.4.7.5.2 | Create test data generation program |  | 2d | 2009-07-07 A | 2009-07-09 A | 310 | 100% |  |  |  |  | Vijay | 16h | 16h |
| 312 | 1.1.2.4.7.5.3 | Enhance CSM API (Table and View management with filter create, delete, update actions) |  | 4d | 2009-07-09 A | 2009-07-15 A | 311 | 100% |  |  |  |  | Vijay | 32h | 32h |
| 313 | 1.1.2.4.7.5.4 | Enhance UPT (incorporate table/view management) |  | 4d | 2009-07-23 A | 2009-07-28 A | 312, 322 | 100% |  |  |  |  | Vijay | 32h | 32h |
| 314 | 1.1.2.4.7.5.5 | Fix defects |  | 3d | 2009-07-29 A | 2009-07-31 A | 313 | 100% |  |  |  |  | Vijay | 24h | 24h |
| 315 | 1.1.2.4.7.6 | **Testing** |  | 15d | 2009-07-23 A | 2009-08-12 A |  | 100% |  |  |  |  |  | 240h | 240h |
| 316 | 1.1.2.4.7.6.1 | QA Testing |  | 15d | 2009-07-23 A | 2009-08-12 A |  | 100% |  |  |  | start no earlier than 2009-07-23 | QA | 120h | 120h |
| 317 | 1.1.2.4.7.6.2 | Fix Defects |  | 15d | 2009-07-23 A | 2009-08-12 A | 316SS | 100% |  |  |  |  | Santhosh | 120h | 120h |
| 318 | 1.1.2.4.7.7 | Iteration complete/code freeze | milestone | 0d | 2009-08-12 A | 2009-08-12 A | 315 | 100% |  |  |  |  |  |  |  |
| 319 | 1.1.2.5 | **Transition** |  | 41d | 2009-06-30 A | 2009-08-25 |  | 90% | 4.24d | 188d |  |  |  | 264h | 216h |
| 320 | 1.1.2.5.1 | **Annual Meeting** |  | 17d | 2009-06-30 A | 2009-07-22 A |  | 100% |  |  |  |  |  | 64h | 64h |
| 321 | 1.1.2.5.1.1 | Prepare posters |  | 5d | 2009-06-30 A | 2009-07-06 A | 308 | 100% |  |  |  |  | Vijay | 40h | 40h |
| 322 | 1.1.2.5.1.2 | Attend annual meeting |  | 3d | 2009-07-20 A | 2009-07-22 A |  | 100% |  |  |  | finish no earlier than 2009-07-22 | Vijay | 24h | 24h |
| 323 | 1.1.2.5.2 | **Deployment** |  | 20d | 2009-07-29 A | 2009-08-25 |  | 50% | 10d | 188d |  |  |  | 80h | 32h |
| 324 | 1.1.2.5.2.1 | Review ARC and rollout plan |  | 1d | 2009-07-29 A | 2009-07-29 A |  | 100% |  |  |  | start no earlier than 2009-07-29 | Vijay; Systems | 16h | 16h |
| 325 | 1.1.2.5.2.2 | Deploy on DEV |  | 1d | 2009-08-03 A | 2009-08-03 A | 309 | 100% |  |  |  |  | Santhosh | 8h | 8h |
| 326 | 1.1.2.5.2.3 | Deploy on QA |  | 1d | 2009-08-13 A | 2009-08-13 A | 318 | 100% |  |  |  |  | Santhosh | 8h | 8h |
| 327 | 1.1.2.5.2.4 | Deploy on STAGE |  | 1d | 2009-08-18 | 2009-08-18 | 326FS+2d, 318 |  |  | 68d | 0d |  | Vijay; Systems | 16h |  |
| 328 | 1.1.2.5.2.5 | App Scan |  | 1d | 2009-08-20 | 2009-08-20 | 327FS+1d |  |  | 68d | 0d |  | Vijay; Systems | 16h |  |
| 329 | 1.1.2.5.2.6 | Deploy on PROD |  | 1d | 2009-08-25 | 2009-08-25 | 328FS+2d |  |  | 68d |  |  | Vijay; Systems | 16h |  |

| ID | WBS | Task | Type | Duration | Start | Finish | Predecessors | Complete | Constraint | Resources | Work | Actual work |
| --- | --- | --- | --- | --- | --- | --- | --- | --- | --- | --- | --- | --- |
| 330 | 1.1.2.5.3 | **Documentation** |  | 14d | 2009-08-03 A | 2009-08-20 A |  | 100% |  |  | 112h | 112h |
| 331 | 1.1.2.5.3.1 | Develop UPT installation & user guide for backwards compatible version |  | 5d | 2009-08-03 A | 2009-08-07 A | 309 | 100% | start no earlier than 2009-08-03 | Vijay | 40h | 40h |
| 332 | 1.1.2.5.3.2 | Update UPT users guide |  | 1d | 2009-08-10 A | 2009-08-10 A | 331 | 100% |  | Vijay | 8h | 8h |
| 333 | 1.1.2.5.3.3 | FAQ update on wiki |  | 2d | 2009-08-11 A | 2009-08-12 A | 332 | 100% |  | Vijay | 16h | 16h |
| 334 | 1.1.2.5.3.4 | Update CSM developers guide |  | 3d | 2009-08-13 A | 2009-08-17 A | 333 | 100% |  | Vijay | 24h | 24h |
| 335 | 1.1.2.5.3.5 | Wiki update |  | 2d | 2009-08-18 A | 2009-08-19 A | 334 | 100% |  | Vijay | 16h | 16h |
| 336 | 1.1.2.5.3.6 | Prepare release notes |  | 1d | 2009-08-20 A | 2009-08-20 A | 335 | 100% |  | Vijay | 8h | 8h |
| 337 | 1.1.2.5.4 | Download center & gforge update |  | 1d | 2009-08-21 A | 2009-08-21 A | 330 | 100% |  | Vijay | 8h | 8h |
| 338 | 1.1.2.5.5 | Release CSM 4.2 | milestone | 0d | 2009-08-25 A | 2009-08-25 A | 337 | 100% |  |  |  |  |
| 339 | 1.2 | **CSM 4.2.1** |  | 23.5d | 2008-10-06 A | 2008-11-06 A |  | 100% |  |  | 220h | 220h |
| 340 | 1.2.1 | **Production support** |  | 20d | 2008-10-06 A | 2008-10-31 A |  | 100% |  |  | 160h | 160h |
| 341 | 1.2.1.1 | EVS support |  | 2d | 2008-10-06 A | 2008-10-07 A |  | 100% | start no earlier than 2008-10-06 | Vijay | 16h | 16h |
| 342 | 1.2.1.2 | LSD support |  | 4d | 2008-10-08 A | 2008-10-13 A | 341 | 100% |  | Vijay | 32h | 32h |
| 343 | 1.2.1.3 | Arch FTF participation |  | 3d | 2008-10-14 A | 2008-10-16 A | 342 | 100% |  | Vijay | 24h | 24h |
| 344 | 1.2.1.4 | General support |  | 5d | 2008-10-17 A | 2008-10-23 A | 343 | 100% |  | Vijay | 40h | 40h |
| 345 | 1.2.1.5 | Emory support |  | 6d | 2008-10-24 A | 2008-10-31 A | 344 | 100% |  | Vijay | 48h | 48h |
| 346 | 1.2.2 | **4.2.1 Release** |  | 7.5d | 2008-10-28 A | 2008-11-06 A |  | 100% |  |  | 60h | 60h |
| 347 | 1.2.2.1 | Implement fix |  | 1d | 2008-10-28 A | 2008-10-28 A |  | 100% | start no earlier than 2008-10-28 | Vijay | 8h | 8h |
| 348 | 1.2.2.2 | Documentation update |  | 1d | 2008-10-29 A | 2008-10-29 A | 347 | 100% |  | Vijay | 8h | 8h |
| 349 | 1.2.2.3 | Release 4.2.1 to the LSD team | milestone | 0d | 2008-10-29 A | 2008-10-29 A | 348 | 100% |  | Vijay |  |  |
| 350 | 1.2.2.4 | Acceptance testing |  | 5d | 2008-10-30 A | 2008-11-05 A | 349 | 100% |  | LSD | 40h | 40h |
| 351 | 1.2.2.5 | Release 4.2.1 to the gforge |  | 0.5d | 2008-11-06 A | 2008-11-06 A | 350 | 100% |  | Vijay | 4h | 4h |
| 352 | 1.3 | **Workbench 0.1.1/SDK 4.2.1** |  | 47d | 2009-11-30 A | 2010-02-02 A |  | 100% |  |  | 832h | 832h |
| 353 | 1.3.1 | **Construction** |  | 45d | 2009-11-30 A | 2010-01-29 A |  | 100% |  |  | 800h | 800h |
| 354 | 1.3.1.1 | **Development** |  | 35d | 2009-11-30 A | 2010-01-15 A |  | 100% |  |  | 360h | 360h |
| 355 | 1.3.1.1.1 | Postgres support |  | 15d | 2009-11-30 A | 2009-12-18 A | 168 | 100% |  | Dan | 120h | 120h |
| 356 | 1.3.1.1.2 | Defect fixes |  | 10d | 2009-12-21 A | 2010-01-01 A | 355 | 100% |  | Dan; Santhosh | 160h | 160h |
| 357 | 1.3.1.1.3 | BDA Utils restructuring |  | 10d | 2010-01-04 A | 2010-01-15 A | 356 | 100% |  | Santhosh | 80h | 80h |

| ID | WBS | Task | Type | Duration | Start | Finish | Predecessors | Complete | Remaining | Total slack | Free slack | Constraint | Resources | Work | Actual work |
| --- | --- | --- | --- | --- | --- | --- | --- | --- | --- | --- | --- | --- | --- | --- | --- |
| 358 | 1.3.1.2 | **Testing** |  | 20d | 2010-01-04 A | 2010-01-29 A |  | 100% |  |  |  |  |  | 440h | 440h |
| 359 | 1.3.1.2.1 | Prepare test plan |  | 5d | 2010-01-04 A | 2010-01-08 A | 357 | 100% |  |  |  |  | Xiaoling | 40h | 40h |
| 360 | 1.3.1.2.2 | Perform functional test |  | 15d | 2010-01-11 A | 2010-01-29 A | 359 | 100% |  |  |  |  | Xiaoling | 120h | 120h |
| 361 | 1.3.1.2.3 | Provide test support |  | 15d | 2010-01-11 A | 2010-01-29 A | 360SS | 100% |  |  |  |  | Dan | 120h | 120h |
| 362 | 1.3.1.2.4 | Testing framework and code quality framework |  | 20d | 2010-01-04 A | 2010-01-29 A | 356 | 100% |  |  |  |  | Santhosh | 160h | 160h |
| 363 | 1.3.1.3 | Iteration complete | milestone | 0d | 2010-01-29 A | 2010-01-29 A | 354, 358 | 100% |  |  |  |  |  |  |  |
| 364 | 1.3.2 | **Transition** |  | 4d | 2010-01-28 A | 2010-02-02 A |  | 100% |  |  |  |  |  | 32h | 32h |
| 365 | 1.3.2.1 | Update documentation |  | 2d | 2010-01-28 A | 2010-01-29 A | 363FF | 100% |  |  |  |  | Dan | 16h | 16h |
| 366 | 1.3.2.2 | Prepare release notes |  | 1d | 2010-02-01 A | 2010-02-01 A | 365 | 100% |  |  |  |  | Dan | 8h | 8h |
| 367 | 1.3.2.3 | Update gforge site |  | 1d | 2010-02-02 A | 2010-02-02 A | 366 | 100% |  |  |  |  | Dan | 8h | 8h |
| 368 | 1.4 | **CLM 4.2.1** |  | 32d | 2010-01-25 A | 2010-03-09 |  | 48% | 16.7d | 48d |  |  |  | 184h | 88h |
| 369 | 1.4.1 | **Construction** |  | 30d | 2010-01-25 A | 2010-03-05 |  | 52% | 14.29d | 48d |  |  |  | 168h | 88h |
| 370 | 1.4.1.1 | Implement script changes for Oracle and Postgres support |  | 5d | 2010-01-25 A | 2010-01-29 A |  | 100% |  |  |  | start no earlier than 2010-01-25 | Vijay | 40h | 40h |
| 371 | 1.4.1.2 | Implement defect fix in CLM API |  | 3d | 2010-02-01 A | 2010-02-03 A | 370 | 100% |  |  |  |  | Vijay | 24h | 24h |
| 372 | 1.4.1.3 | Upgrade LLT to use new CLM API |  | 3d | 2010-02-04 A | 2010-02-08 A | 371 | 100% |  |  |  |  | Vijay | 24h | 24h |
| 373 | 1.4.1.4 | **Testing** |  | 5d | 2010-03-01 | 2010-03-05 |  |  |  | 48d |  |  |  | 80h |  |
| 374 | 1.4.1.4.1 | Execute test cases |  | 5d | 2010-03-01 | 2010-03-05 |  |  |  | 48d | 0d | start no earlier than 2010-03-01 | Aynur | 40h |  |
| 375 | 1.4.1.4.2 | Provide test support |  | 5d | 2010-03-01 | 2010-03-05 | 374SS |  |  | 33d | 0d |  | Vijay | 40h |  |
| 376 | 1.4.2 | **Transition** |  | 2d | 2010-03-08 | 2010-03-09 |  |  |  | 48d |  |  |  | 16h |  |
| 377 | 1.4.2.1 | Release CLM and LLT |  | 2d | 2010-03-08 | 2010-03-09 | 375 |  |  | 33d |  |  | Vijay | 16h |  |
| 378 | 1.5 | **Workbench 0.1.2/SDK 4.2.2** |  | 44d | 2010-02-01 A | 2010-04-01 |  | 14% | 37.62d | 31d |  |  |  | 552h | 80h |
| 379 | 1.5.1 | **Construction** |  | 35d | 2010-02-01 A | 2010-03-19 |  | 17% | 29.17d | 40d |  |  |  | 480h | 80h |
| 380 | 1.5.1.1 | **Development** |  | 35d | 2010-02-01 A | 2010-03-19 |  | 29% | 25d | 40d |  |  |  | 280h | 80h |
| 381 | 1.5.1.1.1 | Defect fixes |  | 10d | 2010-02-01 A | 2010-02-12 A | 363 | 100% |  |  |  |  | Santhosh | 80h | 80h |
| 382 | 1.5.1.1.2 | Implement changes needed for caGrid 1.4 integration |  | 10d | 2010-02-15 | 2010-02-26 | 381 |  |  | 2d | 0d |  | Santhosh | 80h |  |
| 383 | 1.5.1.1.3 | Code freeze/UAT |  | 10d | 2010-03-01 | 2010-03-12 | 382 |  |  | 25d | 0d |  | caGrid | 80h |  |
| 384 | 1.5.1.1.4 | Fix issues |  | 5d | 2010-03-15 | 2010-03-19 | 383 |  |  | 25d |  |  | Santhosh | 40h |  |

| ID | WBS | Task | Type | Duration | Start | Finish | Predecessors | Complete | Remaining | Total slack | Free slack | Constraint | Resources | Work | Actual work |
| --- | --- | --- | --- | --- | --- | --- | --- | --- | --- | --- | --- | --- | --- | --- | --- |
| 385 | 1.5.1.2 | **Testing** |  | 15d | 2010-03-01 | 2010-03-19 |  |  |  | 31d |  |  |  | 200h |  |
| 386 | 1.5.1.2.1 | Prepare test plan |  | 5d | 2010-03-01 | 2010-03-05 | 382 |  |  | 16d | 0d |  | Xiaoling | 40h |  |
| 387 | 1.5.1.2.2 | Perform functional test |  | 10d | 2010-03-08 | 2010-03-19 | 386 |  |  | 25d |  |  | Xiaoling | 80h |  |
| 388 | 1.5.1.2.3 | Provide test support |  | 10d | 2010-03-08 | 2010-03-19 | 386 |  |  | 16d | 0d |  | Santhosh | 80h |  |
| 389 | 1.5.2 | **Transition** |  | 9d | 2010-03-22 | 2010-04-01 |  |  |  | 31d |  |  |  | 72h |  |
| 390 | 1.5.2.1 | Update documentation |  | 3d | 2010-03-22 | 2010-03-24 | 388 |  |  | 16d | 0d |  | Santhosh | 24h |  |
| 391 | 1.5.2.2 | Prepare release notes |  | 1d | 2010-03-25 | 2010-03-25 | 390 |  |  | 16d | 0d |  | Santhosh | 8h |  |
| 392 | 1.5.2.3 | Perform release activities |  | 5d | 2010-03-26 | 2010-04-01 | 391 |  |  | 16d |  |  | Santhosh | 40h |  |
| 393 | 1.6 | **SDK/Workbench - ISO Datatype** |  | 52d | 2010-02-18 A | 2010-04-30 |  | 6% | 48.69d | 0d |  |  |  | 2136h | 56h |
| 394 | 1.6.1 | **Inception/Elaboration** |  | 8d | 2010-02-18 A | 2010-03-01 |  | 88% | 1d | 0d |  |  |  | 64h | 56h |
| 395 | 1.6.1.1 | Prepare short term scope document |  | 3d | 2010-02-18 A | 2010-02-22 A |  | 100% |  |  |  | start no earlier than 2010-02-18 | Satish | 24h | 24h |
| 396 | 1.6.1.2 | Prepare task plan |  | 1d | 2010-02-23 A | 2010-02-23 A | 395 | 100% |  |  |  |  | Satish | 8h | 8h |
| 397 | 1.6.1.3 | Planning the release activities |  | 2d | 2010-02-24 A | 2010-02-25 A | 396 | 100% |  |  |  |  | Satish | 16h | 16h |
| 398 | 1.6.1.4 | Prepare long term scope |  | 2d | 2010-02-26 A | 2010-03-01 | 397 | 50% | 1d | 0d |  |  | Satish | 16h | 8h |
| 399 | 1.6.2 | **Construction** |  | 34d | 2010-03-02 | 2010-04-16 |  |  |  | 0d |  |  |  | 1160h |  |
| 400 | 1.6.2.1 | Hibernate Usertype Framework |  | 4d | 2010-03-02 | 2010-03-05 | 398 |  |  | 0d |  |  | Satish | 32h |  |
| 401 | 1.6.2.2 | JAXB serialization framework |  | 4d | 2010-03-02 | 2010-03-05 | 398 |  |  | 35d |  |  | Prasad | 32h |  |
| 402 | 1.6.2.3 | SDK ISO datatype support enhancements |  | 4d | 2010-03-02 | 2010-03-05 | 398 |  |  | 0d |  |  | Santhosh | 32h |  |
| 403 | 1.6.2.4 | Hibernate Usertype implementation |  | 10d | 2010-03-08 | 2010-03-19 | 400, 402 |  |  | 0d |  |  | Santhosh; Satish | 160h |  |
| 404 | 1.6.2.5 | JAXB XML serialization implementation |  | 10d | 2010-03-08 | 2010-03-19 | 401 |  |  | 25d |  |  | Dan; Prasad | 160h |  |
| 405 | 1.6.2.6 | QBE Implementation |  | 10d | 2010-03-22 | 2010-04-02 | 403 |  |  | 15d |  |  | Vijay | 80h |  |
| 406 | 1.6.2.7 | Build script enhancement |  | 3d | 2010-04-05 | 2010-04-07 | 405 |  |  | 12d |  |  | Santhosh | 24h |  |
| 407 | 1.6.2.8 | Code generator enhancement |  | 10d | 2010-03-22 | 2010-04-02 | 403 |  |  | 20d |  |  | Satish; Santhosh; Dan | 240h |  |
| 408 | 1.6.2.9 | Generated system enhancement |  | 10d | 2010-03-22 | 2010-04-02 | 403 |  |  | 0d |  |  | Satish; Santhosh; Dan | 240h |  |
| 409 | 1.6.2.10 | Reference service project |  | 10d | 2010-04-05 | 2010-04-16 | 408 |  |  | 0d |  |  | Satish; Scott | 160h |  |
| 410 | 1.6.2.11 | Code baselined | milestone | 0d | 2010-04-16 | 2010-04-16 | 409 |  |  | 0d |  |  |  |  |  |

| ID | WBS | Task | Duration | Start | Finish | Predecessors | Complete | Remaining | Total slack | Constraint | Resources | Work | Actual work |
| --- | --- | --- | --- | --- | --- | --- | --- | --- | --- | --- | --- | --- | --- |
| 411 | 1.6.3 | **Testing** | 7d | 2010-04-19 | 2010-04-27 |  |  |  | 0d |  |  | 392h |  |
| 412 | 1.6.3.1 | QA Testing | 7d | 2010-04-19 | 2010-04-27 | 410 |  |  | 0d |  | Ye; Xiaoling | 112h |  |
| 413 | 1.6.3.2 | Test support | 7d | 2010-04-19 | 2010-04-27 | 412SS |  |  | 0d |  | Satish; Santhosh; Dan; Vijay; Prasad | 280h |  |
| 414 | 1.6.4 | **Transition** | 10d | 2010-04-19 | 2010-04-30 |  |  |  | 0d |  |  | 520h |  |
| 415 | 1.6.4.1 | Prepare user documentation | 10d | 2010-04-19 | 2010-04-30 | 410 |  |  | 0d |  | Satish; Santhosh; Dan; Vijay; Prasad | 400h |  |
| 416 | 1.6.4.2 | Release product | 3d | 2010-04-28 | 2010-04-30 | 413 |  |  | 0d |  | Satish; Santhosh; Dan; Vijay; Prasad | 120h |  |
| 417 | 1.7 | **5.0 Release** | 415d? | 2008-09-22 A | 2010-04-23 |  | 63% | 154.34d? | 5d |  |  | 2412h | 1576h |
| 418 | 1.7.1 | **Support** | 104d | 2009-10-06 A | 2010-02-26 A |  | 100% |  |  |  |  | 136h | 136h |
| 419 | 1.7.1.1 | **Management support** | 104d | 2009-10-06 A | 2010-02-26 A |  | 100% |  |  |  |  | 136h | 136h |
| 420 | 1.7.1.1.1 | Usability enhancement document | 2d | 2009-10-06 A | 2009-10-07 A |  | 100% |  |  | start no earlier than 2009-10-06 | Satish; Vijay | 32h | 32h |
| 421 | 1.7.1.1.2 | SOA based workbench presentation | 3d | 2009-10-29 A | 2009-11-02 A |  | 100% |  |  |  | Satish | 24h | 24h |
| 422 | 1.7.1.1.3 | CGMM Support for CTRP | 10d | 2010-02-15 A | 2010-02-26 A |  | 100% |  |  | start no earlier than 2010-02-15 | Vijay | 80h | 80h |
| 423 | 1.7.2 | **caCORE SDK 5.0** | 385d? | 2008-11-03 A | 2010-04-23 |  | 22% | 298.64d? | 5d |  |  | 832h | 192h |
| 424 | 1.7.2.1 | **Inception** | 14d | 2009-10-08 A | 2009-10-27 A |  | 100% |  |  |  |  | 112h | 112h |
| 425 | 1.7.2.1.1 | **Scope document preperation** | 14d | 2009-10-08 A | 2009-10-27 A |  | 100% |  |  |  |  | 112h | 112h |
| 426 | 1.7.2.1.1.1 | Prepare initial draft | 4d | 2009-10-08 A | 2009-10-13 A |  | 100% |  |  | start no earlier than 2009-10-08 | Satish | 32h | 32h |
| 427 | 1.7.2.1.1.2 | Internal review | 1d | 2009-10-14 A | 2009-10-14 A | 426 | 100% |  |  |  | Satish | 8h | 8h |
| 428 | 1.7.2.1.1.3 | Incorporate comments | 1d | 2009-10-15 A | 2009-10-15 A | 427 | 100% |  |  |  | Satish | 8h | 8h |
| 429 | 1.7.2.1.1.4 | Submit draft for NCICB review | 5d | 2009-10-16 A | 2009-10-22 A | 428 | 100% |  |  |  | Sichen | 40h | 40h |
| 430 | 1.7.2.1.1.5 | Update draft | 2d | 2009-10-23 A | 2009-10-26 A | 429 | 100% |  |  |  | Satish | 16h | 16h |
| 431 | 1.7.2.1.1.6 | Submit final version | 1d | 2009-10-27 A | 2009-10-27 A | 430 | 100% |  |  |  | Satish | 8h | 8h |
| 432 | 1.7.2.2 | **Elaboration** | 130d | 2009-10-26 A | 2010-04-23 |  | 11% | 115.56d | 15d |  |  | 720h | 80h |
| 433 | 1.7.2.2.1 | **Prototype** | 10d | 2009-10-26 A | 2009-11-06 A |  | 100% |  |  |  |  | 80h | 80h |
| 434 | 1.7.2.2.1.1 | Research Apache CXF | 10d | 2009-10-26 A | 2009-11-06 A |  | 100% |  |  | start no earlier than 2009-10-26 | Santhosh | 80h | 80h |

| ID | WBS | Task | Duration | Start | Finish | Predecessors | Complete | Remaining | Total slack | Free slack | Constraint | Resources | Work | Actual work |
| --- | --- | --- | --- | --- | --- | --- | --- | --- | --- | --- | --- | --- | --- | --- |
| 435 | 1.7.2.2.2 | **Research** | 40d | 2010-03-01 | 2010-04-23 |  |  |  | 15d |  |  |  | 640h |  |
| 436 | 1.7.2.2.2.1 | Research ISO 21079 Specification | 40d | 2010-03-01 | 2010-04-23 | 382 |  |  | 5d | 0d | start no earlier than 2008-11-17 | Satish | 320h |  |
| 437 | 1.7.2.2.2.2 | Prototype basic data types | 40d | 2010-03-01 | 2010-04-23 | 507, 436SS |  |  | 15d |  |  | Santhosh | 320h |  |
| 438 | 1.7.2.3 | **Construction** | 1d? | 2008-11-03 | 2008-11-03 |  |  |  | 399d |  |  |  |  |  |
| 439 | 1.7.2.3.1 | Iteration 1 | 1d? | 2008-11-03 | 2008-11-03 |  |  |  | 389d |  |  |  |  |  |
| 440 | 1.7.2.3.2 | Iteration 2 | 1d? | 2008-11-03 | 2008-11-03 |  |  |  | 389d |  |  |  |  |  |
| 441 | 1.7.2.3.3 | Iteration 3 | 1d? | 2008-11-03 | 2008-11-03 |  |  |  | 389d |  |  |  |  |  |
| 442 | 1.7.3 | **caCORE Workbench 0.2** | 271d? | 2008-11-03 A | 2009-11-16 |  | 80% | 55.2d? | 119d |  |  |  | 192h | 172h |
| 443 | 1.7.3.1 | **Inception** | 14d | 2009-10-28 A | 2009-11-16 A |  | 100% |  |  |  |  |  | 112h | 112h |
| 444 | 1.7.3.1.1 | **Scope document preperation** | 14d | 2009-10-28 A | 2009-11-16 A |  | 100% |  |  |  |  |  | 112h | 112h |
| 445 | 1.7.3.1.1.1 | Prepare initial draft | 4d | 2009-10-28 A | 2009-11-02 A | 429 | 100% |  |  |  |  | Satish | 32h | 32h |
| 446 | 1.7.3.1.1.2 | Internal review | 1d | 2009-11-03 A | 2009-11-03 A | 445 | 100% |  |  |  |  | Satish | 8h | 8h |
| 447 | 1.7.3.1.1.3 | Incorporate comments | 1d | 2009-11-04 A | 2009-11-04 A | 446 | 100% |  |  |  |  | Satish | 8h | 8h |
| 448 | 1.7.3.1.1.4 | Submit draft for NCICB review | 5d | 2009-11-05 A | 2009-11-11 A | 447 | 100% |  |  |  |  | Sichen | 40h | 40h |
| 449 | 1.7.3.1.1.5 | Update draft | 2d | 2009-11-12 A | 2009-11-13 A | 448 | 100% |  |  |  |  | Satish | 16h | 16h |
| 450 | 1.7.3.1.1.6 | Submit final version | 1d | 2009-11-16 A | 2009-11-16 A | 449 | 100% |  |  |  |  | Satish | 8h | 8h |
| 451 | 1.7.3.2 | **Elaboration** | 10d | 2009-10-29 A | 2009-11-11 |  | 75% | 2.5d | 132d |  |  |  | 80h | 60h |
| 452 | 1.7.3.2.1 | **Prototype** | 10d | 2009-10-29 A | 2009-11-11 |  | 75% | 2.5d | 132d |  |  |  | 80h | 60h |
| 453 | 1.7.3.2.1.1 | Research Eclipse plugin | 10d | 2009-10-29 A | 2009-11-11 |  | 75% | 2.5d | 122d |  |  | Dan | 80h | 60h |
| 454 | 1.7.3.3 | **Construction** | 1d? | 2008-11-03 | 2008-11-03 |  |  |  | 399d |  |  |  |  |  |
| 455 | 1.7.3.3.1 | Iteration 1 | 1d? | 2008-11-03 | 2008-11-03 |  |  |  | 389d |  |  |  |  |  |
| 456 | 1.7.3.3.2 | Iteration 2 | 1d? | 2008-11-03 | 2008-11-03 |  |  |  | 389d |  |  |  |  |  |
| 457 | 1.7.3.3.3 | Iteration 3 | 1d? | 2008-11-03 | 2008-11-03 |  |  |  | 389d |  |  |  |  |  |
| 458 | 1.7.4 | **XMI Handler 2.0** | 9d | 2009-11-12 | 2009-11-24 |  |  |  | 123d |  |  |  | 72h |  |
| 459 | 1.7.4.1 | **Inception** | 9d | 2009-11-12 | 2009-11-24 |  |  |  | 123d |  |  |  | 72h |  |
| 460 | 1.7.4.1.1 | **Scope document preperation** | 9d | 2009-11-12 | 2009-11-24 |  |  |  | 123d |  |  |  | 72h |  |
| 461 | 1.7.4.1.1.1 | Prepare initial draft | 2d | 2009-11-12 | 2009-11-13 | 448 |  |  | 113d | 0d |  | Satish | 16h |  |
| 462 | 1.7.4.1.1.2 | Internal review | 1d | 2009-11-16 | 2009-11-16 | 461 |  |  | 113d | 0d |  | Satish | 8h |  |
| 463 | 1.7.4.1.1.3 | Incorporate comments | 1d | 2009-11-17 | 2009-11-17 | 462 |  |  | 113d | 0d |  | Satish | 8h |  |
| 464 | 1.7.4.1.1.4 | Submit draft for NCICB review | 5d | 2009-11-18 | 2009-11-24 | 463 |  |  | 113d |  |  | Sichen | 40h |  |

| ID | WBS | Task | Duration | Start | Finish | Predecessors | Complete | Remaining | Total slack | Constraint | Resources | Work | Actual work |
| --- | --- | --- | --- | --- | --- | --- | --- | --- | --- | --- | --- | --- | --- |
| 465 | 1.7.5 | **CSM 5.0** | 67d | 2009-10-05 A | 2010-01-05 A |  | 100% |  |  |  |  | 576h | 576h |
| 466 | 1.7.5.1 | **Inception** | 54d | 2009-10-05 A | 2009-12-17 A |  | 100% |  |  |  |  | 200h | 200h |
| 467 | 1.7.5.1.1 | **Scope document preperation** | 54d | 2009-10-05 A | 2009-12-17 A |  | 100% |  |  |  |  | 200h | 200h |
| 468 | 1.7.5.1.1.1 | Prepare initial draft | 5d | 2009-10-05 A | 2009-10-09 A |  | 100% |  |  | start no earlier than 2009-10-05 | Satish; Vijay | 80h | 80h |
| 469 | 1.7.5.1.1.2 | Internal review | 1d | 2009-10-12 A | 2009-10-12 A | 468 | 100% |  |  |  | Vijay | 8h | 8h |
| 470 | 1.7.5.1.1.3 | Incorporate comments | 1d | 2009-10-13 A | 2009-10-13 A | 469 | 100% |  |  |  | Vijay | 8h | 8h |
| 471 | 1.7.5.1.1.4 | Submit draft for NCICB review | 10d | 2009-10-14 A | 2009-10-27 A | 470 | 100% |  |  |  | Sichen | 80h | 80h |
| 472 | 1.7.5.1.1.5 | Update draft | 2d | 2009-12-15 A | 2009-12-16 A |  | 100% |  |  | start no earlier than 2009-12-15 | Vijay | 16h | 16h |
| 473 | 1.7.5.1.1.6 | Submit final version | 1d | 2009-12-17 A | 2009-12-17 A | 472 | 100% |  |  |  | Satish | 8h | 8h |
| 474 | 1.7.5.2 | **Elaboration** | 47d | 2009-11-02 A | 2010-01-05 A |  | 100% |  |  |  |  | 376h | 376h |
| 475 | 1.7.5.2.1 | **Technology Research** | 30d | 2009-11-02 A | 2009-12-11 A |  | 100% |  |  |  |  | 240h | 240h |
| 476 | 1.7.5.2.1.1 | Research candidate technologies | 10d | 2009-11-02 A | 2009-11-13 A | 473 | 100% |  |  |  | Vijay | 80h | 80h |
| 477 | 1.7.5.2.1.2 | Prepare presentation | 2d | 2009-11-16 A | 2009-11-17 A | 476 | 100% |  |  |  | Vijay | 16h | 16h |
| 478 | 1.7.5.2.1.3 | Internal review | 1d | 2009-11-18 A | 2009-11-18 A | 477 | 100% |  |  |  | Vijay | 8h | 8h |
| 479 | 1.7.5.2.1.4 | Prototype candidate security framework | 15d | 2009-11-19 A | 2009-12-09 A | 478 | 100% |  |  |  | Vijay | 120h | 120h |
| 480 | 1.7.5.2.1.5 | Update presentation | 2d | 2009-12-10 A | 2009-12-11 A | 479 | 100% |  |  |  | Vijay | 16h | 16h |
| 481 | 1.7.5.2.2 | **Usability Enhancements** | 17d | 2009-12-14 A | 2010-01-05 A |  | 100% |  |  |  |  | 136h | 136h |
| 482 | 1.7.5.2.2.1 | Research improvement areas | 15d | 2009-12-14 A | 2010-01-01 A | 480 | 100% |  |  |  | Vijay | 120h | 120h |
| 483 | 1.7.5.2.2.2 | Prepare presentation | 2d | 2010-01-04 A | 2010-01-05 A | 482 | 100% |  |  |  | Vijay | 16h | 16h |
| 484 | 1.7.6 | **CLM 5.0** | 108d | 2009-10-28 A | 2010-03-26 |  | 71% | 31.07d | 35d |  |  | 412h | 308h |
| 485 | 1.7.6.1 | **Inception** | 15d | 2009-10-28 A | 2009-11-17 A |  | 100% |  |  |  |  | 160h | 160h |
| 486 | 1.7.6.1.1 | **Scope document preperation** | 15d | 2009-10-28 A | 2009-11-17 A |  | 100% |  |  |  |  | 160h | 160h |
| 487 | 1.7.6.1.1.1 | Prepare initial draft | 5d | 2009-10-28 A | 2009-11-03 A | 471 | 100% |  |  | start no earlier than 2009-10-05 | Satish; Vijay | 80h | 80h |
| 488 | 1.7.6.1.1.2 | Internal review | 1d | 2009-11-04 A | 2009-11-04 A | 487 | 100% |  |  |  | Vijay | 8h | 8h |
| 489 | 1.7.6.1.1.3 | Incorporate comments | 1d | 2009-11-05 A | 2009-11-05 A | 488 | 100% |  |  |  | Vijay | 8h | 8h |
| 490 | 1.7.6.1.1.4 | Submit draft for NCICB review | 5d | 2009-11-06 A | 2009-11-12 A | 489 | 100% |  |  |  | Sichen | 40h | 40h |
| 491 | 1.7.6.1.1.5 | Update draft | 2d | 2009-11-13 A | 2009-11-16 A | 490 | 100% |  |  |  | Vijay | 16h | 16h |
| 492 | 1.7.6.1.1.6 | Submit final version | 1d | 2009-11-17 A | 2009-11-17 A | 491 | 100% |  |  |  | Satish | 8h | 8h |

| ID | WBS | Task | Duration | Start | Finish | Predecessors | Complete | Remaining | Total slack | Free slack | Constraint | Resources | Work | Actual work |
| --- | --- | --- | --- | --- | --- | --- | --- | --- | --- | --- | --- | --- | --- | --- |
| 493 | 1.7.6.2 | **Elaboration** | 58d | 2010-01-06 A | 2010-03-26 |  | 64% | 21d | 35d |  |  |  | 252h | 148h |
| 494 | 1.7.6.2.1 | **Requirements analysis/Design** | 58d | 2010-01-06 A | 2010-03-26 |  | 64% | 21d | 35d |  |  |  | 252h | 148h |
| 495 | 1.7.6.2.1.1 | Prepare list of initial requirements | 4d | 2010-01-06 A | 2010-01-11 A |  | 100% |  |  |  | start no earlier than 2010-01-06 | Prasad [50%] | 16h | 16h |
| 496 | 1.7.6.2.1.2 | Prepare functional specifications | 14d | 2010-01-12 A | 2010-01-29 A | 495 | 100% |  |  |  |  | Prasad [50%] | 56h | 56h |
| 497 | 1.7.6.2.1.3 | Review Functional specification | 5d | 2010-02-01 A | 2010-02-05 A | 496 | 100% |  |  |  |  | Prasad [50%] | 20h | 20h |
| 498 | 1.7.6.2.1.4 | Update requirements and functional specification | 10d | 2010-02-08 A | 2010-02-19 A | 497 | 100% |  |  |  |  | Prasad [50%] | 40h | 40h |
| 499 | 1.7.6.2.1.5 | Prepare design specification | 20d | 2010-02-22 A | 2010-03-19 | 498 | 20% | 16d | 35d | 0d |  | Prasad [50%] | 80h | 16h |
| 500 | 1.7.6.2.1.6 | Review design specifications | 5d | 2010-03-22 | 2010-03-26 | 499 |  |  | 25d |  |  | Prasad | 40h |  |
| 501 | 1.7.7 | **CGMM 1.0** | 1d? | 2008-11-03 | 2008-11-03 |  |  |  | 399d |  |  |  |  |  |
| 502 | 1.7.7.1 | TBD | 1d? | 2008-11-03 | 2008-11-03 |  |  |  | 389d |  |  |  |  |  |
| 503 | 1.7.8 | **WebSSO 1.4** | 61d | 2008-09-22 A | 2008-12-15 A |  | 100% |  |  |  |  |  | 192h | 192h |
| 504 | 1.7.8.1 | **Inception** | 10d | 2008-09-22 A | 2008-10-03 A |  | 100% |  |  |  |  |  | 80h | 80h |
| 505 | 1.7.8.1.1 | Research and prototype | 10d | 2008-09-22 A | 2008-10-03 A |  | 100% |  |  |  | start no earlier than 2008-09-22 | Santhosh | 80h | 80h |
| 506 | 1.7.8.2 | **Construction** | 16d | 2008-11-24 A | 2008-12-15 A |  | 100% |  |  |  |  |  | 112h | 112h |
| 507 | 1.7.8.2.1 | Defect fixes | 4d | 2008-11-24 A | 2008-12-01 A |  | 100% |  |  |  | start no earlier than 2008-11-24 | Santhosh | 32h | 32h |
| 508 | 1.7.8.2.2 | Research/Support | 10d | 2008-12-02 A | 2008-12-15 A | 507 | 100% |  |  |  |  | Santhosh | 80h | 80h |
| 509 | 1.7.9 | **caFramework** | 1d? | 2008-11-03 | 2008-11-03 |  |  |  | 399d |  |  |  |  |  |
| 510 | 1.7.9.1 | TBD | 1d? | 2008-11-03 | 2008-11-03 |  |  |  | 389d |  |  |  |  |  |
