# Task Plan

Schedule from MS Project, 2008-09-17 to 2010-05-14, A marks actual dates.
Ekagra Software Technologies

## Calendars

- Standard: Mon-Fri 08:00-12:00, 13:00-17:00; Sat-Sun off.

## Resources

| Resource |
| --- |
| Satish |
| Dan |
| Santhosh |
| Vijay |
| Dave H. |
| QA |
| Bilal |
| Charles |
| 55 |
| 63 |
| Bronwyn |
| Kunal |
| Harsh |
| Ashwin |
| Kalpesh |
| Sichen |
| Dan K. |
| Doug H. |
| Steve L. |
| Systems |
| caGrid |
| Xiaoling |
| LSD |
| Prasad |
| Aynur |
| Scott |
| Ye |

## Schedule

| ID | WBS | Task | Type | Duration | Start | Finish | Predecessors | Complete | Remaining | Total slack | Constraint | Deadline | Resources | Work | Actual work |
| --- | --- | --- | --- | --- | --- | --- | --- | --- | --- | --- | --- | --- | --- | --- | --- |
| 2 | 1 | **4.2 Release** |  | 320d | 2008-09-17 A | 2009-12-08 |  | 99% | 0.73d | 113d |  |  |  | 7498.6h | 7450.6h |
| 3 | 1.1 | **SDK 4.2** |  | 320d | 2008-09-17 A | 2009-12-08 A |  | 100% |  |  |  |  |  | 4901h | 4901h |
| 4 | 1.1.1 | Production support |  | 284d | 2008-09-17 A | 2009-11-02 A |  | 100% |  |  | finish no earlier than 2009-11-02 |  | Satish [25%] | 568h | 568h |
| 5 | 1.1.2 | **Inception** |  | 4d | 2008-11-03 A | 2008-11-06 A |  | 100% |  |  |  | 2008-07-26 |  | 32h | 32h |
| 6 | 1.1.2.1 | **Requirements** |  | 4d | 2008-11-03 A | 2008-11-06 A |  | 100% |  |  |  |  |  | 32h | 32h |
| 7 | 1.1.2.1.1 | Create scope candidate spreadsheet for 4.2 |  | 3d | 2008-11-03 A | 2008-11-05 A |  | 100% |  |  |  |  | Charles | 24h | 24h |
| 8 | 1.1.2.1.2 | Submit scope candidate spreadsheet for review | milestone | 0d | 2008-11-05 A | 2008-11-05 A | 7 | 100% |  |  |  |  | Charles |  |  |
| 9 | 1.1.2.1.3 | Review and provide feedback on candidate spreadsheet |  | 1d | 2008-11-06 A | 2008-11-06 A | 8 | 100% |  |  |  |  | Dave H. | 8h | 8h |
| 10 | 1.1.3 | **Elaboration** |  | 61d | 2008-11-07 A | 2009-01-30 A |  | 100% |  |  |  |  |  | 313h | 313h |
| 11 | 1.1.3.1 | **Iteration 1** |  | 10.5d | 2008-11-07 A | 2008-11-21 A |  | 100% |  |  |  |  |  | 153h | 153h |
| 12 | 1.1.3.1.1 | **Project Management** |  | 9.5d | 2008-11-07 A | 2008-11-20 A |  | 100% |  |  |  |  |  | 19h | 19h |
| 13 | 1.1.3.1.1.1 | Provide LOE on scope candidate list |  | 1d | 2008-11-07 A | 2008-11-07 A | 9 | 100% |  |  |  |  | Satish [25%] | 2h | 2h |
| 14 | 1.1.3.1.1.2 | Develop schedule based on LOE |  | 1d | 2008-11-10 A | 2008-11-10 A | 13 | 100% |  |  |  |  | Charles | 8h | 8h |
| 15 | 1.1.3.1.1.3 | Submit schedule for review |  | 1d | 2008-11-11 A | 2008-11-11 A | 14 | 100% |  |  |  |  | Charles | 8h | 8h |
| 16 | 1.1.3.1.1.4 | Revise schedule |  | 0.5d | 2008-11-20 A | 2008-11-20 A | 15, 23 | 100% |  |  |  |  | Satish [25%] | 1h | 1h |
| 17 | 1.1.3.1.2 | **Requirements** |  | 9d | 2008-11-07 A | 2008-11-19 A |  | 100% |  |  |  |  |  | 66h | 66h |
| 18 | 1.1.3.1.2.1 | **Create scope document** |  | 9d | 2008-11-07 A | 2008-11-19 A |  | 100% |  |  |  |  |  | 66h | 66h |
| 19 | 1.1.3.1.2.1.1 | Create draft scope document |  | 2d | 2008-11-07 A | 2008-11-10 A | 9 | 100% |  |  |  |  | Charles | 16h | 16h |
| 20 | 1.1.3.1.2.1.2 | Prepare risk list |  | 2d | 2008-11-11 A | 2008-11-12 A | 19 | 100% |  |  |  |  | Charles | 16h | 16h |
| 21 | 1.1.3.1.2.1.3 | Review scope document |  | 3d | 2008-11-13 A | 2008-11-17 A | 20 | 100% |  |  |  |  | Dave H. | 24h | 24h |
| 22 | 1.1.3.1.2.1.4 | Revise scope document |  | 1d | 2008-11-18 A | 2008-11-18 A | 21 | 100% |  |  |  |  | Satish [25%] | 2h | 2h |
| 23 | 1.1.3.1.2.1.5 | Sign off scope document |  | 1d | 2008-11-19 A | 2008-11-19 A | 22 | 100% |  |  |  |  | Dave H. | 8h | 8h |
| 24 | 1.1.3.1.3 | **Analysis and Design** |  | 10d | 2008-11-07 A | 2008-11-20 A |  | 100% |  |  |  |  |  | 68h | 68h |
| 25 | 1.1.3.1.3.1 | ISO 21090 Support |  | 2d | 2008-11-19 A | 2008-11-20 A | 22 | 100% |  |  |  |  | Satish [50%] | 8h | 8h |
| 26 | 1.1.3.1.3.2 | SDK Installer |  | 7.5d | 2008-11-07 A | 2008-11-18 A | 9 | 100% |  |  |  |  | Dan | 60h | 60h |
| 27 | 1.1.3.1.4 | Iteration complete |  | 1d | 2008-11-20 A | 2008-11-21 A | 16, 26, 23 | 100% |  |  |  |  |  |  |  |

| ID | WBS | Task | Type | Duration | Start | Finish | Predecessors | Complete | Resources | Work | Actual work | Text11 |
| --- | --- | --- | --- | --- | --- | --- | --- | --- | --- | --- | --- | --- |
| 28 | 1.1.3.2 | **Iteration 2** |  | 44d | 2008-12-02 A | 2009-01-30 A |  | 100% |  | 160h | 160h |  |
| 29 | 1.1.3.2.1 | **Analysis and Design** |  | 43d | 2008-12-02 A | 2009-01-29 A |  | 100% |  | 160h | 160h |  |
| 30 | 1.1.3.2.1.1 | **ISO 21090 Support** |  | 43d | 2008-12-02 A | 2009-01-29 A |  | 100% |  | 160h | 160h | caDSR, caAdapter, caGrid, COPPA |
| 31 | 1.1.3.2.1.1.1 | Research Java API |  | 20d | 2008-12-02 A | 2008-12-30 A | 27 | 100% | Satish [50%] | 80h | 80h |  |
| 32 | 1.1.3.2.1.1.2 | Research O/R mapping framework for datatype |  | 20d | 2009-01-02 A | 2009-01-29 A | 31 | 100% | Satish [50%] | 80h | 80h |  |
| 33 | 1.1.3.2.2 | Iteration complete |  | 1d | 2009-01-30 A | 2009-01-30 A | 32 | 100% |  |  |  |  |
| 34 | 1.1.4 | **Construction** |  | 192d | 2008-11-07 A | 2009-08-03 A |  | 100% |  | 2504h | 2504h |  |
| 35 | 1.1.4.1 | **Iteration 1** |  | 38d | 2008-11-21 A | 2009-01-14 A |  | 100% |  | 392h | 392h |  |
| 36 | 1.1.4.1.1 | **Implementation** |  | 21d | 2008-11-21 A | 2008-12-22 A |  | 100% |  | 160h | 160h |  |
| 37 | 1.1.4.1.1.1 | **Implement MySQL performance fix for EVS** |  | 6d | 2008-11-21 A | 2008-12-01 A |  | 100% |  | 32h | 32h | EVS |
| 38 | 1.1.4.1.1.1.1 | Investigate the generated queries |  | 4d | 2008-11-21 A | 2008-12-01 A | 27 | 100% | Dan | 32h | 32h |  |
| 39 | 1.1.4.1.1.2 | **Implement performance fix for caTissue** |  | 4d | 2008-12-01 A | 2008-12-05 A |  | 100% |  | 32h | 32h | caTissue |
| 40 | 1.1.4.1.1.2.1 | Receive artifacts for investigation from caTissue team | milestone | 0d | 2008-12-01 A | 2008-12-01 A | 38 | 100% | Dan |  |  |  |
| 41 | 1.1.4.1.1.2.2 | Investigate performance issue |  | 4d | 2008-12-01 A | 2008-12-05 A | 40 | 100% | Dan | 32h | 32h |  |
| 42 | 1.1.4.1.1.3 | **Implement fix for caGrid defects** |  | 3d | 2008-12-05 A | 2008-12-10 A |  | 100% |  | 24h | 24h |  |
| 43 | 1.1.4.1.1.3.1 | Implement fix for ApplicationServiceProvider |  | 1d | 2008-12-05 A | 2008-12-08 A | 41 | 100% | Dan | 8h | 8h |  |
| 44 | 1.1.4.1.1.3.2 | Implement fix for caGrid CQL |  | 2d | 2008-12-08 A | 2008-12-10 A | 43 | 100% | Dan | 16h | 16h |  |
| 45 | 1.1.4.1.1.4 | Implement fix for ACEGI security context |  | 1d | 2008-12-10 A | 2008-12-11 A | 44 | 100% | Dan | 8h | 8h |  |
| 46 | 1.1.4.1.1.5 | Implement fix for subclass and set ordering |  | 1d | 2008-12-10 A | 2008-12-11 A | 44 | 100% | Dan | 8h | 8h |  |
| 47 | 1.1.4.1.1.6 | PKGeneratorValidator.java generates a NullPointerException |  | 1d | 2008-12-11 A | 2008-12-12 A | 46 | 100% | Dan | 8h | 8h |  |
| 48 | 1.1.4.1.1.7 | Implement fix for hibernate property error in query |  | 2d | 2008-12-12 A | 2008-12-16 A | 47 | 100% | Dan | 16h | 16h |  |
| 49 | 1.1.4.1.1.8 | Implement writable API façade |  | 4d | 2008-12-16 A | 2008-12-22 A | 48 | 100% | Dan | 32h | 32h |  |
| 50 | 1.1.4.1.2 | **Test** |  | 22d | 2008-12-15 A | 2009-01-14 A |  | 100% |  | 232h | 232h | QA |
| 51 | 1.1.4.1.2.1 | Prepare test plan |  | 5d | 2008-12-15 A | 2008-12-22 A | 52SF | 100% | QA | 40h | 40h |  |
| 52 | 1.1.4.1.2.2 | Execute test plan |  | 10d | 2008-12-22 A | 2009-01-08 A | 36 | 100% | QA | 80h | 80h |  |
| 53 | 1.1.4.1.2.3 | Provide test support |  | 14d | 2008-12-22 A | 2009-01-14 A | 36 | 100% | Satish | 112h | 112h |  |
| 54 | 1.1.4.1.3 | Iteration complete / Release SDK 4.1.1 | milestone | 0d | 2009-01-09 A | 2009-01-09 A | 53 | 100% |  |  |  |  |

| ID | WBS | Task | Duration | Start | Finish | Predecessors | Complete | Resources | Work | Actual work | Text11 |
| --- | --- | --- | --- | --- | --- | --- | --- | --- | --- | --- | --- |
| 55 | 1.1.4.2 | **Iteration 2** | 61d | 2008-11-07 A | 2009-01-30 A |  | 100% |  | 360h | 360h |  |
| 56 | 1.1.4.2.1 | **Implementation** | 9.5d | 2009-01-09 A | 2009-01-22 A |  | 100% |  | 76h | 76h |  |
| 57 | 1.1.4.2.1.1 | **SDK Installer** | 9.5d | 2009-01-09 A | 2009-01-22 A |  | 100% |  | 76h | 76h |  |
| 58 | 1.1.4.2.1.1.1 | Implement tabs for installation | 7.5d | 2009-01-09 A | 2009-01-20 A | 54 | 100% | Dan | 60h | 60h |  |
| 59 | 1.1.4.2.1.1.2 | Review and check-in the code | 2d | 2009-01-21 A | 2009-01-22 A | 58 | 100% | Dan | 16h | 16h |  |
| 60 | 1.1.4.2.2 | **Software Configuration Management** | 45d | 2008-11-07 A | 2009-01-08 A |  | 100% |  | 160h | 160h |  |
| 61 | 1.1.4.2.2.1 | **BDA Activities** | 45d | 2008-11-07 A | 2009-01-08 A |  | 100% |  | 160h | 160h | Systems |
| 62 | 1.1.4.2.2.1.1 | Create directory structure and compilation scripts | 15d | 2008-11-07 A | 2008-12-01 A | 6 | 100% | Santhosh [50%] | 60h | 60h |  |
| 63 | 1.1.4.2.2.1.2 | Create code generation and Packaging scripts | 25d | 2008-12-02 A | 2009-01-08 A | 62 | 100% | Santhosh [50%] | 100h | 100h |  |
| 64 | 1.1.4.2.3 | **Test** | 8d | 2009-01-20 A | 2009-01-29 A |  | 100% |  | 124h | 124h |  |
| 65 | 1.1.4.2.3.1 | Prepare test plan | 3d | 2009-01-20 A | 2009-01-26 A | 66SF | 100% | QA | 24h | 24h |  |
| 66 | 1.1.4.2.3.2 | Execute test plan | 5d | 2009-01-23 A | 2009-01-29 A | 61, 57 | 100% | QA | 40h | 40h |  |
| 67 | 1.1.4.2.3.3 | Provide test support | 5d | 2009-01-23 A | 2009-01-29 A | 61, 57 | 100% | Santhosh [50%]; Dan | 60h | 60h |  |
| 68 | 1.1.4.2.4 | Iteration complete | 1d | 2009-01-30 A | 2009-01-30 A | 60, 64 | 100% |  |  |  |  |
| 69 | 1.1.4.3 | **Iteration 3** | 24d | 2009-02-02 A | 2009-03-05 A |  | 100% |  | 376h | 376h |  |
| 70 | 1.1.4.3.1 | **Implementation** | 12d | 2009-02-02 A | 2009-02-17 A |  | 100% |  | 96h | 96h |  |
| 71 | 1.1.4.3.1.1 | **Freestyle search research** | 5d | 2009-02-02 A | 2009-02-06 A |  | 100% |  | 40h | 40h |  |
| 72 | 1.1.4.3.1.1.1 | Research/Prototype | 5d | 2009-02-02 A | 2009-02-06 A | 68 | 100% | Dan | 40h | 40h |  |
| 73 | 1.1.4.3.1.2 | **Defect Fixes** | 2d | 2009-02-09 A | 2009-02-10 A |  | 100% |  | 16h | 16h |  |
| 74 | 1.1.4.3.1.2.1 | Installer defects | 2d | 2009-02-09 A | 2009-02-10 A | 72 | 100% | Dan | 16h | 16h |  |
| 75 | 1.1.4.3.1.3 | Test case development/integration | 5d | 2009-02-11 A | 2009-02-17 A | 74 | 100% | Dan | 40h | 40h |  |
| 76 | 1.1.4.3.2 | **Software Configuration Management** | 20d | 2009-02-02 A | 2009-02-27 A |  | 100% |  | 160h | 160h |  |
| 77 | 1.1.4.3.2.1 | **BDA Activities** | 20d | 2009-02-02 A | 2009-02-27 A |  | 100% |  | 160h | 160h |  |
| 78 | 1.1.4.3.2.1.1 | Create automated deployment scripts | 12d | 2009-02-02 A | 2009-02-17 A | 68 | 100% | Santhosh; Satish [50%] | 96h | 96h |  |
| 79 | 1.1.4.3.2.1.2 | Migrate code to SVN | 3d | 2009-02-18 A | 2009-02-20 A | 78 | 100% | Satish | 24h | 24h |  |
| 80 | 1.1.4.3.2.1.3 | Configure Hudson server | 5d | 2009-02-23 A | 2009-02-27 A | 79 | 100% | Santhosh | 40h | 40h |  |

| ID | WBS | Task | Type | Duration | Start | Finish | Predecessors | Complete | Constraint | Resources | Work | Actual work |
| --- | --- | --- | --- | --- | --- | --- | --- | --- | --- | --- | --- | --- |
| 81 | 1.1.4.3.3 | **Test** |  | 12d | 2009-02-18 A | 2009-03-05 A |  | 100% |  |  | 120h | 120h |
| 82 | 1.1.4.3.3.1 | Prepare test plan |  | 3d | 2009-02-18 A | 2009-03-02 A | 83SF | 100% |  | QA | 24h | 24h |
| 83 | 1.1.4.3.3.2 | Execute test plan |  | 4d | 2009-03-02 A | 2009-03-05 A | 71, 77 | 100% |  | QA | 32h | 32h |
| 84 | 1.1.4.3.3.3 | Provide test support |  | 4d | 2009-03-02 A | 2009-03-05 A | 71, 77 | 100% |  | Satish; Dan | 64h | 64h |
| 85 | 1.1.4.3.4 | Iteration complete | milestone | 0d | 2009-03-05 A | 2009-03-05 A | 81 | 100% |  |  |  |  |
| 86 | 1.1.4.4 | **Iteration 4** |  | 17d | 2009-03-06 A | 2009-03-31 A |  | 100% |  |  | 180h | 180h |
| 87 | 1.1.4.4.1 | **Implementation** |  | 17d | 2009-03-06 A | 2009-03-31 A |  | 100% |  |  | 180h | 180h |
| 88 | 1.1.4.4.1.1 | **BDA Activities** |  | 15d | 2009-03-06 A | 2009-03-26 A |  | 100% |  |  | 60h | 60h |
| 89 | 1.1.4.4.1.1.1 | Integrate Junits in the build process |  | 5d | 2009-03-06 A | 2009-03-12 A | 85 | 100% |  | Santhosh [50%] | 20h | 20h |
| 90 | 1.1.4.4.1.1.2 | Create database auto-deployment configuration |  | 5d | 2009-03-13 A | 2009-03-19 A | 89 | 100% |  | Santhosh [50%] | 20h | 20h |
| 91 | 1.1.4.4.1.1.3 | Configure hudson server for build and test cases |  | 5d | 2009-03-20 A | 2009-03-26 A | 90 | 100% |  | Santhosh [50%] | 20h | 20h |
| 92 | 1.1.4.4.1.2 | **SDK Workbench** |  | 15d | 2009-03-06 A | 2009-03-26 A |  | 100% |  |  | 120h | 120h |
| 93 | 1.1.4.4.1.2.1 | Implement deployment scenario workflows |  | 10d | 2009-03-06 A | 2009-03-19 A | 85 | 100% |  | Dan | 80h | 80h |
| 94 | 1.1.4.4.1.2.2 | Implement fix for the defects/comments received |  | 5d | 2009-03-20 A | 2009-03-26 A | 93 | 100% |  | Dan | 40h | 40h |
| 95 | 1.1.4.4.1.3 | Iteration complete | milestone | 0d | 2009-03-31 A | 2009-03-31 A | 92, 88 | 100% | start no earlier than 2009-03-31 |  |  |  |
| 96 | 1.1.4.5 | **Iteration 5** |  | 27d | 2009-03-25 A | 2009-04-30 A |  | 100% |  |  | 492h | 492h |
| 97 | 1.1.4.5.1 | **Test** |  | 19d | 2009-03-25 A | 2009-04-20 A |  | 100% |  |  | 384h | 384h |
| 98 | 1.1.4.5.1.1 | Prepare test plan |  | 3d | 2009-03-25 A | 2009-03-31 A | 99SF | 100% |  | QA | 24h | 24h |
| 99 | 1.1.4.5.1.2 | Execute test plan |  | 15d | 2009-03-31 A | 2009-04-20 A | 95 | 100% |  | QA | 120h | 120h |
| 100 | 1.1.4.5.1.3 | Provide test support |  | 15d | 2009-03-31 A | 2009-04-20 A | 95 | 100% |  | Santhosh; Dan | 240h | 240h |
| 101 | 1.1.4.5.2 | **BDA Activities** |  | 8d | 2009-04-21 A | 2009-04-30 A |  | 100% |  |  | 32h | 32h |
| 102 | 1.1.4.5.2.1 | Investigate dashboard software |  | 4d | 2009-04-21 A | 2009-04-24 A | 100 | 100% |  | Santhosh [50%] | 16h | 16h |
| 103 | 1.1.4.5.2.2 | Install and configure code quality tools |  | 4d | 2009-04-27 A | 2009-04-30 A | 102 | 100% |  | Santhosh [50%] | 16h | 16h |
| 104 | 1.1.4.5.3 | **SDK Workbench** |  | 6d | 2009-04-21 A | 2009-04-28 A |  | 100% |  |  | 48h | 48h |
| 105 | 1.1.4.5.3.1 | Implement remote deployment scenarios |  | 2d | 2009-04-21 A | 2009-04-22 A | 100 | 100% |  | Dan | 16h | 16h |
| 106 | 1.1.4.5.3.2 | Implement Grid security scenarios |  | 2d | 2009-04-23 A | 2009-04-24 A | 105 | 100% |  | Dan | 16h | 16h |
| 107 | 1.1.4.5.3.3 | Defect fixes |  | 2d | 2009-04-27 A | 2009-04-28 A | 106 | 100% |  | Dan | 16h | 16h |

| ID | WBS | Task | Type | Duration | Start | Finish | Predecessors | Complete | Constraint | Resources | Work | Actual work |
| --- | --- | --- | --- | --- | --- | --- | --- | --- | --- | --- | --- | --- |
| 108 | 1.1.4.5.4 | **Bootcamp support** |  | 7d | 2009-04-21 A | 2009-04-29 A |  | 100% |  |  | 28h | 28h |
| 109 | 1.1.4.5.4.1 | Provide presentation & material |  | 7d | 2009-04-21 A | 2009-04-29 A | 97 | 100% |  | Satish [50%] | 28h | 28h |
| 110 | 1.1.4.5.5 | Iteration complete | milestone | 0d | 2009-04-30 A | 2009-04-30 A | 97, 101, 104 | 100% |  |  |  |  |
| 111 | 1.1.4.6 | **Iteration 6** |  | 22d | 2009-05-01 A | 2009-06-01 A |  | 100% |  |  | 364h | 364h |
| 112 | 1.1.4.6.1 | Bootcamp preperation and presentation |  | 5d | 2009-05-01 A | 2009-05-07 A | 110 | 100% |  | Satish [50%] | 20h | 20h |
| 113 | 1.1.4.6.2 | Arch FTF preperation and presentation |  | 6d | 2009-05-08 A | 2009-05-15 A | 112 | 100% |  | Satish [50%] | 24h | 24h |
| 114 | 1.1.4.6.3 | **SDK Workbench** |  | 22d | 2009-05-01 A | 2009-06-01 A |  | 100% |  |  | 176h | 176h |
| 115 | 1.1.4.6.3.1 | BDAfication of SDK workbench |  | 10d | 2009-05-01 A | 2009-05-14 A | 110 | 100% |  | Dan | 80h | 80h |
| 116 | 1.1.4.6.3.2 | SVN reorganization |  | 1d | 2009-05-15 A | 2009-05-15 A | 115 | 100% |  | Dan | 8h | 8h |
| 117 | 1.1.4.6.3.3 | Implement SDK download workflow |  | 5d | 2009-05-18 A | 2009-05-22 A | 116 | 100% |  | Dan | 40h | 40h |
| 118 | 1.1.4.6.3.4 | Fix defects |  | 6d | 2009-05-25 A | 2009-06-01 A | 117 | 100% |  | Dan | 48h | 48h |
| 119 | 1.1.4.6.4 | **BDA Activities** |  | 18d | 2009-05-01 A | 2009-05-26 A |  | 100% |  |  | 144h | 144h |
| 120 | 1.1.4.6.4.1 | Code quality plugin installation |  | 5d | 2009-05-01 A | 2009-05-07 A | 110 | 100% |  | Santhosh | 40h | 40h |
| 121 | 1.1.4.6.4.2 | Fix test cases |  | 3d | 2009-05-08 A | 2009-05-12 A | 120 | 100% |  | Santhosh | 24h | 24h |
| 122 | 1.1.4.6.4.3 | QA support |  | 10d | 2009-05-13 A | 2009-05-26 A | 121 | 100% |  | Santhosh | 80h | 80h |
| 123 | 1.1.4.6.5 | Iteration complete | milestone | 0d | 2009-06-01 A | 2009-06-01 A | 119, 114 | 100% |  |  |  |  |
| 124 | 1.1.4.7 | **Iteration 7** |  | 45d | 2009-06-02 A | 2009-08-03 A |  | 100% |  |  | 340h | 340h |
| 125 | 1.1.4.7.1 | **Continuous Integration configuration** |  | 4d | 2009-06-02 A | 2009-06-05 A |  | 100% |  |  | 32h | 32h |
| 126 | 1.1.4.7.1.1 | Fix database scripts |  | 2d | 2009-06-02 A | 2009-06-03 A | 123 | 100% |  | Santhosh | 16h | 16h |
| 127 | 1.1.4.7.1.2 | Re-deploy hudson on DEV environment |  | 1d | 2009-06-04 A | 2009-06-04 A | 126 | 100% |  | Santhosh | 8h | 8h |
| 128 | 1.1.4.7.1.3 | Configure SDK workbench track in Hudson |  | 1d | 2009-06-05 A | 2009-06-05 A | 127 | 100% |  | Santhosh | 8h | 8h |
| 129 | 1.1.4.7.2 | **WebSSO presentation** |  | 5d | 2009-06-18 A | 2009-06-24 A |  | 100% |  |  | 24h | 24h |
| 130 | 1.1.4.7.2.1 | Prepare presentation |  | 1d | 2009-06-18 A | 2009-06-18 A | 131SF | 100% |  | Santhosh | 8h | 8h |
| 131 | 1.1.4.7.2.2 | Internal review |  | 1d | 2009-06-18 A | 2009-06-19 A | 132SF-1d | 100% |  | Santhosh | 8h | 8h |
| 132 | 1.1.4.7.2.3 | External review | milestone | 0d | 2009-06-22 A | 2009-06-22 A | 133SF-2d | 100% | start no earlier than 2009-06-19 | Steve L. |  |  |
| 133 | 1.1.4.7.2.4 | Present to Novartis |  | 1d | 2009-06-24 A | 2009-06-24 A |  | 100% | start no earlier than 2009-06-24 | Santhosh | 8h | 8h |

| ID | WBS | Task | Duration | Start | Finish | Predecessors | Complete | Constraint | Resources | Work | Actual work |
| --- | --- | --- | --- | --- | --- | --- | --- | --- | --- | --- | --- |
| 134 | 1.1.4.7.3 | **Testing** | 40d | 2009-06-08 A | 2009-07-31 A |  | 100% |  |  | 284h | 284h |
| 135 | 1.1.4.7.3.1 | Test BDA scripts | 8d | 2009-06-08 A | 2009-06-17 A | 128 | 100% |  | Satish [50%] | 32h | 32h |
| 136 | 1.1.4.7.3.2 | Test SDK workbench | 8d | 2009-06-18 A | 2009-06-29 A | 135 | 100% |  | Satish [50%] | 32h | 32h |
| 137 | 1.1.4.7.3.3 | Fix defects | 5d | 2009-06-30 A | 2009-07-06 A | 136 | 100% |  | Dan | 40h | 40h |
| 138 | 1.1.4.7.3.4 | QA Testing | 15d | 2009-07-13 A | 2009-07-31 A |  | 100% | start no earlier than 2009-07-13 | QA | 120h | 120h |
| 139 | 1.1.4.7.3.5 | Fix defects | 15d | 2009-07-13 A | 2009-07-31 A | 138SS | 100% | start no earlier than 2009-07-13 | Dan [50%] | 60h | 60h |
| 140 | 1.1.4.7.4 | Iteration complete/code freeze | 1d | 2009-08-03 A | 2009-08-03 A | 139 | 100% |  |  |  |  |
| 141 | 1.1.5 | **Transition** | 190.5d | 2008-12-01 A | 2009-08-24 A |  | 100% |  |  | 436h | 436h |
| 142 | 1.1.5.1 | **Annaul Meeting** | 167.5d | 2008-12-01 A | 2009-07-22 A |  | 100% |  |  | 168h | 168h |
| 143 | 1.1.5.1.1 | Prepare posters, video | 10.5d | 2008-12-01 A | 2008-12-15 A | 37 | 100% |  | Satish [50%]; Santhosh | 120h | 120h |
| 144 | 1.1.5.1.2 | Attend meeting | 3d | 2009-07-20 A | 2009-07-22 A |  | 100% | start no earlier than 2009-07-20 | Satish; Santhosh | 48h | 48h |
| 145 | 1.1.5.2 | **Deployment** | 28d | 2009-07-15 A | 2009-08-21 A |  | 100% |  |  | 80h | 80h |
| 146 | 1.1.5.2.1 | Review ARC with systems team | 1d | 2009-07-15 A | 2009-07-15 A |  | 100% | start no earlier than 2009-07-15 | Satish; Systems | 16h | 16h |
| 147 | 1.1.5.2.2 | Deploy on DEV | 1d | 2009-08-04 A | 2009-08-04 A | 140, 146 | 100% |  | Santhosh | 8h | 8h |
| 148 | 1.1.5.2.3 | Depoy on QA | 1d | 2009-08-07 A | 2009-08-07 A | 147FS+2d | 100% |  | Santhosh | 8h | 8h |
| 149 | 1.1.5.2.4 | Deploy on STAGE | 1d | 2009-08-13 A | 2009-08-13 A | 148FS+3d | 100% |  | Satish; Systems | 16h | 16h |
| 150 | 1.1.5.2.5 | App Scan | 1d | 2009-08-17 A | 2009-08-17 A | 149FS+1d | 100% |  | Satish; Systems | 16h | 16h |
| 151 | 1.1.5.2.6 | Deploy on PROD | 1d | 2009-08-21 A | 2009-08-21 A | 150FS+3d | 100% |  | Satish; Systems | 16h | 16h |
| 152 | 1.1.5.3 | **Documentation** | 31d | 2009-07-13 A | 2009-08-24 A |  | 100% |  |  | 188h | 188h |
| 153 | 1.1.5.3.1 | Prepare installation guide for workbench | 1d | 2009-07-13 A | 2009-07-13 A | 138SS | 100% |  | Dan | 8h | 8h |
| 154 | 1.1.5.3.2 | Develop Users guide for the workbench | 15d | 2009-07-14 A | 2009-08-03 A | 153 | 100% |  | Dan [50%] | 60h | 60h |
| 155 | 1.1.5.3.3 | Update developers guide | 4d | 2009-08-04 A | 2009-08-07 A | 154 | 100% |  | Dan | 32h | 32h |
| 156 | 1.1.5.3.4 | Prepare release packaging | 1d | 2009-07-14 A | 2009-07-14 A | 153 | 100% |  | Dan | 8h | 8h |
| 157 | 1.1.5.3.5 | Create workbench wiki site | 3d | 2009-08-04 A | 2009-08-06 A | 154, 143 | 100% |  | Satish [50%] | 12h | 12h |
| 158 | 1.1.5.3.6 | Update wiki | 2d | 2009-08-07 A | 2009-08-10 A | 157 | 100% |  | Satish [50%] | 8h | 8h |
| 159 | 1.1.5.3.7 | Update misc documents | 3d | 2009-08-11 A | 2009-08-13 A | 158, 144 | 100% |  | Satish [50%] | 12h | 12h |
| 160 | 1.1.5.3.8 | Prepare release notes | 2d | 2009-08-14 A | 2009-08-17 A | 144, 159 | 100% |  | Satish [50%] | 8h | 8h |
| 161 | 1.1.5.3.9 | Prepare training videos | 5d | 2009-08-18 A | 2009-08-24 A | 160 | 100% |  | Satish | 40h | 40h |

| ID | WBS | Task | Duration | Start | Finish | Predecessors | Complete | Remaining | Total slack | Constraint | Resources | Work | Actual work |
| --- | --- | --- | --- | --- | --- | --- | --- | --- | --- | --- | --- | --- | --- |
| 162 | 1.1.6 | **caGrid Integration Iteration** | 299d | 2008-10-14 A | 2009-12-04 A |  | 100% |  |  |  |  | 1032h | 1032h |
| 163 | 1.1.6.1 | Idenify gaps in SDK 4.2 and caGrid 1.3 | 5d | 2009-09-15 A | 2009-09-21 A |  | 100% |  |  | start no earlier than 2008-09-15 | Satish; caGrid | 80h | 80h |
| 164 | 1.1.6.2 | Implement the changes in SDK | 10d | 2009-09-22 A | 2009-10-05 A | 163 | 100% |  |  |  | Satish | 80h | 80h |
| 165 | 1.1.6.3 | Provide tag to the cagrid team for testing | 1d | 2009-10-06 A | 2009-10-06 A | 164 | 100% |  |  |  | Satish | 8h | 8h |
| 166 | 1.1.6.4 | Acceptance testing | 10d | 2009-10-07 A | 2009-10-20 A | 165 | 100% |  |  |  | caGrid | 80h | 80h |
| 167 | 1.1.6.5 | Fix defects | 3d | 2009-10-21 A | 2009-10-23 A | 166 | 100% |  |  |  | Satish | 24h | 24h |
| 168 | 1.1.6.6 | Acceptance testing | 25d | 2009-10-26 A | 2009-11-27 A | 167 | 100% |  |  |  | caGrid | 200h | 200h |
| 169 | 1.1.6.7 | **QA** | 30d | 2009-10-26 A | 2009-12-04 A |  | 100% |  |  |  |  | 480h | 480h |
| 170 | 1.1.6.7.1 | Perform testing | 30d | 2009-10-26 A | 2009-12-04 A | 167 | 100% |  |  |  | Xiaoling | 240h | 240h |
| 171 | 1.1.6.7.2 | Provide test support | 30d | 2009-10-26 A | 2009-12-04 A | 167 | 100% |  |  |  | Santhosh | 240h | 240h |
| 172 | 1.1.6.8 | **Bootcamp Support** | 7d | 2008-10-21 A | 2008-10-29 A |  | 100% |  |  |  |  | 56h | 56h |
| 173 | 1.1.6.8.1 | Participate in bootcamp coordination activities | 4d | 2008-10-21 A | 2008-10-24 A | 166 | 100% |  |  |  | Satish | 32h | 32h |
| 174 | 1.1.6.8.2 | Present in the bootcamp | 3d | 2008-10-27 A | 2008-10-29 A | 173 | 100% |  |  |  | Satish | 24h | 24h |
| 175 | 1.1.6.9 | Arch FTF Participation | 3d | 2008-10-14 A | 2008-10-16 A |  | 100% |  |  | start no earlier than 2008-10-14 | Santhosh | 24h | 24h |
| 176 | 1.1.7 | **Transition** | 2d | 2009-12-07 A | 2009-12-08 A |  | 100% |  |  |  |  | 16h | 16h |
| 177 | 1.1.7.1 | Download center and gforge, release notes update | 1d | 2009-12-07 A | 2009-12-07 A | 162, 170 | 100% |  |  |  | Satish; Dan | 16h | 16h |
| 178 | 1.1.7.2 | Release SDK 4.2 and caCORE workbench 1.0 | 1d | 2009-12-08 A | 2009-12-08 A | 177 | 100% |  |  |  |  |  |  |
| 179 | 1.2 | **CSM 4.2** | 207d | 2008-11-10 A | 2009-08-25 |  | 99% | 1.46d | 188d |  |  | 2597.6h | 2549.6h |
| 180 | 1.2.1 | Production support | 100d | 2008-11-17 A | 2009-04-10 A |  | 100% |  |  | start no earlier than 2008-11-17 | Vijay [25%] | 200h | 200h |
| 181 | 1.2.2 | **Inception** | 8d | 2008-11-10 A | 2008-11-19 A |  | 100% |  |  |  |  | 64h | 64h |
| 182 | 1.2.2.1 | **Requirements** | 8d | 2008-11-10 A | 2008-11-19 A |  | 100% |  |  |  |  | 64h | 64h |
| 183 | 1.2.2.1.1 | Create scope candidate spreadsheet for 4.2 | 3d | 2008-11-10 A | 2008-11-12 A |  | 100% |  |  | start no earlier than 2008-11-10 | Charles | 24h | 24h |
| 184 | 1.2.2.1.2 | Submit scope candidate spreadsheet for review | 3d | 2008-11-13 A | 2008-11-17 A | 183 | 100% |  |  |  | Charles | 24h | 24h |
| 185 | 1.2.2.1.3 | Review and provide feedback on candidate spreadsheet | 2d | 2008-11-18 A | 2008-11-19 A | 184 | 100% |  |  |  | Dave H. | 16h | 16h |

| ID | WBS | Task | Type | Duration | Start | Finish | Predecessors | Complete | Resources | Work | Actual work | Text11 |
| --- | --- | --- | --- | --- | --- | --- | --- | --- | --- | --- | --- | --- |
| 186 | 1.2.3 | **Elaboration** |  | 27d | 2008-11-18 A | 2008-12-24 A |  | 100% |  | 84h | 84h |  |
| 187 | 1.2.3.1 | **Iteration 1** |  | 27d | 2008-11-18 A | 2008-12-24 A |  | 100% |  | 84h | 84h |  |
| 188 | 1.2.3.1.1 | **Project Management** |  | 25d | 2008-11-20 A | 2008-12-24 A |  | 100% |  | 12h | 12h |  |
| 189 | 1.2.3.1.1.1 | Provide LOE on scope candidate list |  | 2d | 2008-11-20 A | 2008-12-02 A | 185 | 100% | Satish [25%] | 4h | 4h |  |
| 190 | 1.2.3.1.1.2 | Develop schedule based on LOE |  | 2d | 2008-12-03 A | 2008-12-04 A | 189 | 100% | Satish [25%] | 4h | 4h |  |
| 191 | 1.2.3.1.1.3 | Submit schedule for review | milestone | 0d | 2008-12-04 A | 2008-12-04 A | 190 | 100% | Dave H. |  |  |  |
| 192 | 1.2.3.1.1.4 | Revise schedule |  | 2d | 2008-12-23 A | 2008-12-24 A | 199 | 100% | Satish [25%] | 4h | 4h |  |
| 193 | 1.2.3.1.2 | **Requirements** |  | 12d | 2008-12-05 A | 2008-12-22 A |  | 100% |  | 48h | 48h |  |
| 194 | 1.2.3.1.2.1 | **Create scope document** |  | 12d | 2008-12-05 A | 2008-12-22 A |  | 100% |  | 48h | 48h |  |
| 195 | 1.2.3.1.2.1.1 | Create draft scope document |  | 4d | 2008-12-05 A | 2008-12-10 A | 190 | 100% | Satish [25%] | 8h | 8h |  |
| 196 | 1.2.3.1.2.1.2 | Prepare risk list |  | 2d | 2008-12-11 A | 2008-12-12 A | 195 | 100% | Satish [25%] | 4h | 4h |  |
| 197 | 1.2.3.1.2.1.3 | Review scope document |  | 3d | 2008-12-15 A | 2008-12-17 A | 196 | 100% | Dave H. | 24h | 24h |  |
| 198 | 1.2.3.1.2.1.4 | Revise scope document |  | 2d | 2008-12-18 A | 2008-12-19 A | 197 | 100% | Satish [25%] | 4h | 4h |  |
| 199 | 1.2.3.1.2.1.5 | Sign off scope document |  | 1d | 2008-12-22 A | 2008-12-22 A | 198 | 100% | Dave H. | 8h | 8h |  |
| 200 | 1.2.3.1.3 | **Documentation** |  | 3d | 2008-11-18 A | 2008-11-20 A |  | 100% |  | 24h | 24h |  |
| 201 | 1.2.3.1.3.1 | Create wiki FAQ |  | 2d | 2008-11-18 A | 2008-11-19 A | 184 | 100% | Vijay | 16h | 16h |  |
| 202 | 1.2.3.1.3.2 | Update Gforge trackers |  | 1d | 2008-11-20 A | 2008-11-20 A | 201 | 100% | Vijay | 8h | 8h |  |
| 203 | 1.2.3.1.4 | Iteration complete | milestone | 0d | 2008-12-24 A | 2008-12-24 A | 188, 193, 200 | 100% |  |  |  |  |
| 204 | 1.2.4 | **Construction** |  | 189d | 2008-11-21 A | 2009-08-12 A |  | 100% |  | 1985.6h | 1985.6h |  |
| 205 | 1.2.4.1 | **Iteration 1** |  | 28d | 2008-11-21 A | 2008-12-30 A |  | 100% |  | 206h | 206h |  |
| 206 | 1.2.4.1.1 | **Implementation** |  | 23d | 2008-11-21 A | 2008-12-23 A |  | 100% |  | 126h | 126h |  |
| 207 | 1.2.4.1.1.1 | Validating Username |  | 3d | 2008-11-21 A | 2008-11-25 A | 202 | 100% | Vijay [75%] | 18h | 18h | LSD |
| 208 | 1.2.4.1.1.2 | Validate the User details for the User registration |  | 3d | 2008-11-26 A | 2008-12-02 A | 207 | 100% | Vijay [75%] | 18h | 18h | LSD |
| 209 | 1.2.4.1.1.3 | Deployment support for CSM UPT 4.1 on DEV, QA, STAGE, PROD |  | 2d | 2008-12-03 A | 2008-12-04 A | 208 | 100% | Vijay [75%] | 12h | 12h |  |
| 210 | 1.2.4.1.1.4 | The getAccessibleGroups method is giving an session closed error |  | 2d | 2008-12-05 A | 2008-12-08 A | 209 | 100% | Vijay [75%] | 12h | 12h |  |
| 211 | 1.2.4.1.1.5 | Source code in JAR file |  | 1.5d | 2008-12-09 A | 2008-12-10 A | 210 | 100% | Vijay [75%] | 9h | 9h |  |
| 212 | 1.2.4.1.1.6 | Incomplete list of attributes shown for instance level security when creating filter |  | 1.5d | 2008-12-10 A | 2008-12-11 A | 211 | 100% | Vijay [75%] | 9h | 9h |  |
| 213 | 1.2.4.1.1.7 | CGMM + CLM Integration for Audit Logging |  | 4d | 2008-12-12 A | 2008-12-17 A | 212 | 100% | Vijay [75%] | 24h | 24h |  |
| 214 | 1.2.4.1.1.8 | Investigate - users created in csmupt application are shown in other applications |  | 1d | 2008-12-18 A | 2008-12-18 A | 213 | 100% | Vijay [75%] | 6h | 6h |  |
| 215 | 1.2.4.1.1.9 | Investigate removeGroupRoleFromProtectionGroup() does not remove any records |  | 2d | 2008-12-19 A | 2008-12-22 A | 214 | 100% | Vijay [75%] | 12h | 12h |  |
| 216 | 1.2.4.1.1.10 | Investigate assigning a group to a user doesn’t assign the group's associated PG/Role |  | 1d | 2008-12-23 A | 2008-12-23 A | 215 | 100% | Vijay [75%] | 6h | 6h |  |
| 217 | 1.2.4.1.1.11 | Implementation complete | milestone | 0d | 2008-12-23 A | 2008-12-23 A | 216 | 100% |  |  |  |  |

| ID | WBS | Task | Type | Duration | Start | Finish | Predecessors | Complete | Resources | Work | Actual work |
| --- | --- | --- | --- | --- | --- | --- | --- | --- | --- | --- | --- |
| 218 | 1.2.4.1.2 | **Test** |  | 8d | 2008-12-19 A | 2008-12-30 A |  | 100% |  | 80h | 80h |
| 219 | 1.2.4.1.2.1 | Prepare test plan |  | 3d | 2008-12-19 A | 2008-12-24 A | 220SF | 100% | QA | 24h | 24h |
| 220 | 1.2.4.1.2.2 | Execute test plan |  | 4d | 2008-12-24 A | 2008-12-30 A | 217 | 100% | QA | 32h | 32h |
| 221 | 1.2.4.1.2.3 | Provide test support |  | 4d | 2008-12-24 A | 2008-12-30 A | 217 | 100% | Vijay [75%] | 24h | 24h |
| 222 | 1.2.4.1.3 | Iteration complete | milestone | 0d | 2008-12-30 A | 2008-12-30 A | 218, 206 | 100% |  |  |  |
| 223 | 1.2.4.2 | **Iteration 2** |  | 21d | 2009-01-02 A | 2009-01-30 A |  | 100% |  | 206h | 206h |
| 224 | 1.2.4.2.1 | **Implementation** |  | 16d | 2009-01-02 A | 2009-01-23 A |  | 100% |  | 96h | 96h |
| 225 | 1.2.4.2.1.1 | **Backwards compatibility of UPT** |  | 16d | 2009-01-02 A | 2009-01-23 A |  | 100% |  | 96h | 96h |
| 226 | 1.2.4.2.1.1.1 | Analyze backwards compatibility changes |  | 6d | 2009-01-02 A | 2009-01-09 A | 222 | 100% | Vijay [75%] | 36h | 36h |
| 227 | 1.2.4.2.1.1.2 | Implement CSM schema version detection module |  | 4d | 2009-01-12 A | 2009-01-15 A | 226 | 100% | Vijay [75%] | 24h | 24h |
| 228 | 1.2.4.2.1.1.3 | Implement version forwarding changes |  | 4d | 2009-01-16 A | 2009-01-21 A | 227 | 100% | Vijay [75%] | 24h | 24h |
| 229 | 1.2.4.2.1.1.4 | Prepare build script for EAR file |  | 2d | 2009-01-22 A | 2009-01-23 A | 228 | 100% | Vijay [75%] | 12h | 12h |
| 230 | 1.2.4.2.2 | **Test** |  | 12d | 2009-01-15 A | 2009-01-30 A |  | 100% |  | 110h | 110h |
| 231 | 1.2.4.2.2.1 | Prepare test plan |  | 5d | 2009-01-15 A | 2009-01-26 A | 232SF | 100% | QA | 40h | 40h |
| 232 | 1.2.4.2.2.2 | Execute test plan |  | 5d | 2009-01-26 A | 2009-01-30 A | 224 | 100% | QA | 40h | 40h |
| 233 | 1.2.4.2.2.3 | Provide test support |  | 5d | 2009-01-26 A | 2009-01-30 A | 224 | 100% | Vijay [75%] | 30h | 30h |
| 234 | 1.2.4.2.3 | Iteration complete | milestone | 0d | 2009-01-30 A | 2009-01-30 A | 230 | 100% |  |  |  |
| 235 | 1.2.4.3 | **Iteration 3** |  | 23d | 2009-02-02 A | 2009-03-04 A |  | 100% |  | 196h | 196h |
| 236 | 1.2.4.3.1 | **Implementation** |  | 19d | 2009-02-02 A | 2009-02-26 A |  | 100% |  | 116h | 116h |
| 237 | 1.2.4.3.1.1 | **Defect Fix** |  | 1d | 2009-02-04 A | 2009-02-04 A |  | 100% |  | 8h | 8h |
| 238 | 1.2.4.3.1.1.1 | Last iteration defect fixes |  | 1d | 2009-02-04 A | 2009-02-04 A | 242 | 100% | Vijay | 8h | 8h |
| 239 | 1.2.4.3.1.2 | **PHI Security Research** |  | 2d | 2009-02-05 A | 2009-02-06 A |  | 100% |  | 12h | 12h |
| 240 | 1.2.4.3.1.2.1 | Investigate PHI based security requirements |  | 2d | 2009-02-05 A | 2009-02-06 A | 238 | 100% | Vijay [75%] | 12h | 12h |
| 241 | 1.2.4.3.1.3 | **caArray Container Managed security** |  | 19d | 2009-02-02 A | 2009-02-26 A |  | 100% |  | 96h | 96h |
| 242 | 1.2.4.3.1.3.1 | Research caArray change request |  | 2d | 2009-02-02 A | 2009-02-03 A | 234 | 100% | Vijay [75%] | 12h | 12h |
| 243 | 1.2.4.3.1.3.2 | Implement custom JAAS login module |  | 5d | 2009-02-09 A | 2009-02-13 A | 240 | 100% | Vijay [75%] | 30h | 30h |
| 244 | 1.2.4.3.1.3.3 | Implement custom authenticator with CGMM |  | 5d | 2009-02-16 A | 2009-02-20 A | 243 | 100% | Vijay [75%] | 30h | 30h |
| 245 | 1.2.4.3.1.3.4 | Modify CGMM UI |  | 4d | 2009-02-23 A | 2009-02-26 A | 244 | 100% | Vijay [75%] | 24h | 24h |
| 246 | 1.2.4.3.1.4 | Implementation complete | milestone | 0d | 2009-02-26 A | 2009-02-26 A | 239, 241, 237 | 100% | Vijay [75%] |  |  |

| ID | WBS | Task | Type | Duration | Start | Finish | Predecessors | Complete | Constraint | Resources | Work | Actual work |
| --- | --- | --- | --- | --- | --- | --- | --- | --- | --- | --- | --- | --- |
| 247 | 1.2.4.3.2 | **Test** |  | 7d | 2009-02-24 A | 2009-03-04 A |  | 100% |  |  | 80h | 80h |
| 248 | 1.2.4.3.2.1 | Prepare test plan |  | 3d | 2009-02-24 A | 2009-02-27 A | 249SF | 100% |  | QA | 24h | 24h |
| 249 | 1.2.4.3.2.2 | Execute test plan |  | 4d | 2009-02-27 A | 2009-03-04 A | 241 | 100% |  | QA | 32h | 32h |
| 250 | 1.2.4.3.2.3 | Provide test support |  | 4d | 2009-02-27 A | 2009-03-04 A | 241 | 100% |  | Vijay [75%] | 24h | 24h |
| 251 | 1.2.4.3.3 | Iteration complete | milestone | 0d | 2009-03-04 A | 2009-03-04 A | 236, 247 | 100% |  |  |  |  |
| 252 | 1.2.4.4 | **Iteration 4** |  | 22d | 2009-03-02 A | 2009-03-31 A |  | 100% |  |  | 132h | 132h |
| 253 | 1.2.4.4.1 | **Implementation** |  | 22d | 2009-03-02 A | 2009-03-31 A |  | 100% |  |  | 114h | 114h |
| 254 | 1.2.4.4.1.1 | App Scan hosting/request for CGMM |  | 1d | 2009-03-02 A | 2009-03-02 A |  | 100% | start no earlier than 2009-03-02 | Vijay [75%] | 6h | 6h |
| 255 | 1.2.4.4.1.2 | PHI Security research |  | 10d | 2009-03-03 A | 2009-03-16 A | 254 | 100% |  | Vijay [75%] | 60h | 60h |
| 256 | 1.2.4.4.1.3 | **caArray support** |  | 8d | 2009-03-20 A | 2009-03-31 A |  | 100% |  |  | 48h | 48h |
| 257 | 1.2.4.4.1.3.1 | Fix issues reported by caArray team |  | 8d | 2009-03-20 A | 2009-03-31 A | 259 | 100% |  | Vijay [75%] | 48h | 48h |
| 258 | 1.2.4.4.2 | **Documentation** |  | 3d | 2009-03-17 A | 2009-03-19 A |  | 100% |  |  | 18h | 18h |
| 259 | 1.2.4.4.2.1 | CGMM Documentation |  | 3d | 2009-03-17 A | 2009-03-19 A | 255 | 100% |  | Vijay [75%] | 18h | 18h |
| 260 | 1.2.4.4.3 | Iteration complete | milestone | 0d | 2009-03-31 A | 2009-03-31 A | 253, 258 | 100% |  |  |  |  |
| 261 | 1.2.4.5 | **Iteration 5** |  | 31d | 2009-03-23 A | 2009-05-04 A |  | 100% |  |  | 306h | 306h |
| 262 | 1.2.4.5.1 | **CGMM fix** |  | 7d | 2009-04-02 A | 2009-04-10 A |  | 100% |  |  | 42h | 42h |
| 263 | 1.2.4.5.1.1 | Workflow redirection instead of forwarding |  | 1d | 2009-04-02 A | 2009-04-02 A | 98 | 100% |  | Vijay [75%] | 6h | 6h |
| 264 | 1.2.4.5.1.2 | Configurable home page |  | 1d | 2009-04-03 A | 2009-04-03 A | 263 | 100% |  | Vijay [75%] | 6h | 6h |
| 265 | 1.2.4.5.1.3 | Email notification for new account |  | 2d | 2009-04-06 A | 2009-04-07 A | 264 | 100% |  | Vijay [75%] | 12h | 12h |
| 266 | 1.2.4.5.1.4 | Text instruction changes |  | 1d | 2009-04-08 A | 2009-04-08 A | 265 | 100% |  | Vijay [75%] | 6h | 6h |
| 267 | 1.2.4.5.1.5 | CGMM standalone mode changes |  | 1d | 2009-04-09 A | 2009-04-09 A | 266 | 100% |  | Vijay [75%] | 6h | 6h |
| 268 | 1.2.4.5.1.6 | Configurable graphics files |  | 1d | 2009-04-10 A | 2009-04-10 A | 267 | 100% |  | Vijay [75%] | 6h | 6h |
| 269 | 1.2.4.5.2 | **caArray Instance level security research** |  | 7d | 2009-04-13 A | 2009-04-21 A |  | 100% |  |  | 98h | 98h |
| 270 | 1.2.4.5.2.1 | Document existing issues and solution |  | 5d | 2009-04-13 A | 2009-04-17 A | 262 | 100% |  | Vijay [75%]; Kunal | 70h | 70h |
| 271 | 1.2.4.5.2.2 | Review document and solution |  | 2d | 2009-04-20 A | 2009-04-21 A | 270 | 100% |  | Vijay [75%]; Kunal | 28h | 28h |

| ID | WBS | Task | Type | Duration | Start | Finish | Predecessors | Complete | Resources | Work | Actual work |
| --- | --- | --- | --- | --- | --- | --- | --- | --- | --- | --- | --- |
| 272 | 1.2.4.5.3 | **Test** |  | 20d | 2009-03-23 A | 2009-04-17 A |  | 100% |  | 94h | 94h |
| 273 | 1.2.4.5.3.1 | Prepare test plan |  | 3d | 2009-03-23 A | 2009-04-13 A | 274SF | 100% | QA | 24h | 24h |
| 274 | 1.2.4.5.3.2 | Execute test plan |  | 5d | 2009-04-13 A | 2009-04-17 A | 262 | 100% | QA | 40h | 40h |
| 275 | 1.2.4.5.3.3 | Provide test support |  | 5d | 2009-04-13 A | 2009-04-17 A | 262 | 100% | Vijay [75%] | 30h | 30h |
| 276 | 1.2.4.5.4 | **Documentation** |  | 8d | 2009-04-22 A | 2009-05-01 A |  | 100% |  | 54h | 54h |
| 277 | 1.2.4.5.4.1 | Update CGMM user guide |  | 5d | 2009-04-22 A | 2009-04-28 A | 269 | 100% | Vijay [75%] | 30h | 30h |
| 278 | 1.2.4.5.4.2 | Complete documentation |  | 3d | 2009-04-29 A | 2009-05-01 A | 277 | 100% | Bronwyn | 24h | 24h |
| 279 | 1.2.4.5.5 | **Release Planning** |  | 4d | 2009-04-29 A | 2009-05-04 A |  | 100% |  | 18h | 18h |
| 280 | 1.2.4.5.5.1 | Prepare release notes |  | 1d | 2009-04-29 A | 2009-04-29 A | 277, 269 | 100% | Vijay [75%] | 6h | 6h |
| 281 | 1.2.4.5.5.2 | Prepare release bundles |  | 1d | 2009-04-30 A | 2009-04-30 A | 280 | 100% | Vijay [75%] | 6h | 6h |
| 282 | 1.2.4.5.5.3 | Update Gforge site |  | 1d | 2009-05-04 A | 2009-05-04 A | 281, 278 | 100% | Vijay [75%] | 6h | 6h |
| 283 | 1.2.4.5.6 | Iteration complete | milestone | 0d | 2009-05-04 A | 2009-05-04 A | 279 | 100% |  |  |  |
| 284 | 1.2.4.6 | **Iteration 6** |  | 20d | 2009-05-05 A | 2009-06-01 A |  | 100% |  | 198h | 198h |
| 285 | 1.2.4.6.1 | Release CGMM |  | 1d | 2009-05-05 A | 2009-05-05 A | 283 | 100% | Vijay [75%] | 6h | 6h |
| 286 | 1.2.4.6.2 | User support |  | 2d | 2009-05-06 A | 2009-05-07 A | 285 | 100% | Vijay [75%] | 12h | 12h |
| 287 | 1.2.4.6.3 | Arch FTF preperation and presentation |  | 4d | 2009-05-08 A | 2009-05-13 A | 286 | 100% | Vijay [75%] | 24h | 24h |
| 288 | 1.2.4.6.4 | caArray Instance level security research & discussion |  | 5d | 2009-05-14 A | 2009-05-20 A | 287 | 100% | Vijay [75%]; Kunal [50%]; Satish [50%] | 32h | 32h |
| 289 | 1.2.4.6.5 | **Scope preperation** |  | 13d | 2009-05-14 A | 2009-06-01 A |  | 100% |  | 124h | 124h |
| 290 | 1.2.4.6.5.1 | Discuss scope items |  | 3d | 2009-05-14 A | 2009-05-18 A | 287 | 100% | Satish [50%] | 12h | 12h |
| 291 | 1.2.4.6.5.2 | Prepare scope documents |  | 4d | 2009-05-19 A | 2009-05-22 A | 290 | 100% | Satish [50%] | 16h | 16h |
| 292 | 1.2.4.6.5.3 | Review document internally |  | 2d | 2009-05-25 A | 2009-05-26 A | 291 | 100% | Vijay; Harsh; Ashwin; Kalpesh | 64h | 64h |
| 293 | 1.2.4.6.5.4 | Submit for NCICB review |  | 4d | 2009-05-27 A | 2009-06-01 A | 292 | 100% | Sichen | 32h | 32h |
| 294 | 1.2.4.6.6 | Iteration complete | milestone | 0d | 2009-06-01 A | 2009-06-01 A | 288, 289 | 100% |  |  |  |
| 295 | 1.2.4.7 | **Iteration 7** |  | 52d | 2009-06-02 A | 2009-08-12 A |  | 100% |  | 741.6h | 741.6h |
| 296 | 1.2.4.7.1 | **BDA Effort** |  | 27d | 2009-06-08 A | 2009-07-14 A |  | 100% |  | 157.6h | 157.6h |
| 297 | 1.2.4.7.1.1 | Upgrade BDA Utilities to version 1.0 |  | 3d | 2009-06-08 A | 2009-06-10 A | 128 | 100% | Santhosh | 24h | 24h |
| 298 | 1.2.4.7.1.2 | BDAfication of UPT backwards compatibility version |  | 8d | 2009-06-11 A | 2009-06-22 A | 303, 297 | 100% | Vijay; Santhosh | 69.6h | 69.6h |
| 299 | 1.2.4.7.1.3 | BDAfication of CGMM |  | 8d | 2009-06-25 A | 2009-07-14 A | 129 | 100% | Santhosh | 64h | 64h |
| 300 | 1.2.4.7.2 | CSM Presentation |  | 3d | 2009-06-19 A | 2009-06-23 A | 298 | 100% | Vijay | 24h | 24h |

| ID | WBS | Task | Type | Duration | Start | Finish | Predecessors | Complete | Remaining | Total slack | Free slack | Constraint | Resources | Work | Actual work |
| --- | --- | --- | --- | --- | --- | --- | --- | --- | --- | --- | --- | --- | --- | --- | --- |
| 301 | 1.2.4.7.3 | **Instance level security enhancements research** |  | 21d | 2009-06-02 A | 2009-06-30 A |  | 100% |  |  |  |  |  | 136h | 136h |
| 302 | 1.2.4.7.3.1 | Install caArray in local environment |  | 3d | 2009-06-02 A | 2009-06-04 A | 294 | 100% |  |  |  |  | Vijay [75%]; Doug H. | 42h | 42h |
| 303 | 1.2.4.7.3.2 | Tune and execute queries |  | 3d | 2009-06-05 A | 2009-06-09 A | 302 | 100% |  |  |  |  | Vijay [25%] | 6h | 6h |
| 304 | 1.2.4.7.3.3 | Document benchmark results of the queries |  | 6d | 2009-06-10 A | 2009-06-17 A | 303 | 100% |  |  |  |  | Dan K. [50%]; Vijay | 72h | 72h |
| 305 | 1.2.4.7.3.4 | Prepare implementation plan |  | 2d | 2009-06-29 A | 2009-06-30 A | 304 | 100% |  |  |  |  | Satish | 16h | 16h |
| 306 | 1.2.4.7.4 | **Documentation** |  | 4d | 2009-06-24 A | 2009-06-29 A |  | 100% |  |  |  |  |  | 64h | 64h |
| 307 | 1.2.4.7.4.1 | Recommendation for UPT version |  | 4d | 2009-06-24 A | 2009-06-29 A | 300 | 100% |  |  |  |  | Vijay | 32h | 32h |
| 308 | 1.2.4.7.4.2 | Document CSM maintanance plan |  | 4d | 2009-06-24 A | 2009-06-29 A | 300 | 100% |  |  |  |  | Vijay | 32h | 32h |
| 309 | 1.2.4.7.5 | **Instance level security implementation** |  | 24d | 2009-06-30 A | 2009-07-31 A |  | 100% |  |  |  |  |  | 120h | 120h |
| 310 | 1.2.4.7.5.1 | Create refresh logic |  | 2d | 2009-06-30 A | 2009-07-07 A | 308, 321 | 100% |  |  |  |  | Vijay | 16h | 16h |
| 311 | 1.2.4.7.5.2 | Create test data generation program |  | 2d | 2009-07-07 A | 2009-07-09 A | 310 | 100% |  |  |  |  | Vijay | 16h | 16h |
| 312 | 1.2.4.7.5.3 | Enhance CSM API (Table and View management with filter create, delete, update actions) |  | 4d | 2009-07-09 A | 2009-07-15 A | 311 | 100% |  |  |  |  | Vijay | 32h | 32h |
| 313 | 1.2.4.7.5.4 | Enhance UPT (incorporate table/view management) |  | 4d | 2009-07-23 A | 2009-07-28 A | 312, 322 | 100% |  |  |  |  | Vijay | 32h | 32h |
| 314 | 1.2.4.7.5.5 | Fix defects |  | 3d | 2009-07-29 A | 2009-07-31 A | 313 | 100% |  |  |  |  | Vijay | 24h | 24h |
| 315 | 1.2.4.7.6 | **Testing** |  | 15d | 2009-07-23 A | 2009-08-12 A |  | 100% |  |  |  |  |  | 240h | 240h |
| 316 | 1.2.4.7.6.1 | QA Testing |  | 15d | 2009-07-23 A | 2009-08-12 A |  | 100% |  |  |  | start no earlier than 2009-07-23 | QA | 120h | 120h |
| 317 | 1.2.4.7.6.2 | Fix Defects |  | 15d | 2009-07-23 A | 2009-08-12 A | 316SS | 100% |  |  |  |  | Santhosh | 120h | 120h |
| 318 | 1.2.4.7.7 | Iteration complete/code freeze | milestone | 0d | 2009-08-12 A | 2009-08-12 A | 315 | 100% |  |  |  |  |  |  |  |
| 319 | 1.2.5 | **Transition** |  | 41d | 2009-06-30 A | 2009-08-25 |  | 90% | 4.24d | 188d |  |  |  | 264h | 216h |
| 320 | 1.2.5.1 | **Annual Meeting** |  | 17d | 2009-06-30 A | 2009-07-22 A |  | 100% |  |  |  |  |  | 64h | 64h |
| 321 | 1.2.5.1.1 | Prepare posters |  | 5d | 2009-06-30 A | 2009-07-06 A | 308 | 100% |  |  |  |  | Vijay | 40h | 40h |
| 322 | 1.2.5.1.2 | Attend annual meeting |  | 3d | 2009-07-20 A | 2009-07-22 A |  | 100% |  |  |  | finish no earlier than 2009-07-22 | Vijay | 24h | 24h |
| 323 | 1.2.5.2 | **Deployment** |  | 20d | 2009-07-29 A | 2009-08-25 |  | 50% | 10d | 188d |  |  |  | 80h | 32h |
| 324 | 1.2.5.2.1 | Review ARC and rollout plan |  | 1d | 2009-07-29 A | 2009-07-29 A |  | 100% |  |  |  | start no earlier than 2009-07-29 | Vijay; Systems | 16h | 16h |
| 325 | 1.2.5.2.2 | Deploy on DEV |  | 1d | 2009-08-03 A | 2009-08-03 A | 309 | 100% |  |  |  |  | Santhosh | 8h | 8h |
| 326 | 1.2.5.2.3 | Deploy on QA |  | 1d | 2009-08-13 A | 2009-08-13 A | 318 | 100% |  |  |  |  | Santhosh | 8h | 8h |
| 327 | 1.2.5.2.4 | Deploy on STAGE |  | 1d | 2009-08-18 | 2009-08-18 | 326FS+2d, 318 |  |  | 188d | 0d |  | Vijay; Systems | 16h |  |
| 328 | 1.2.5.2.5 | App Scan |  | 1d | 2009-08-20 | 2009-08-20 | 327FS+1d |  |  | 188d | 0d |  | Vijay; Systems | 16h |  |
| 329 | 1.2.5.2.6 | Deploy on PROD |  | 1d | 2009-08-25 | 2009-08-25 | 328FS+2d |  |  | 188d |  |  | Vijay; Systems | 16h |  |

| ID | WBS | Task | Type | Duration | Start | Finish | Predecessors | Complete | Constraint | Resources | Work | Actual work |
| --- | --- | --- | --- | --- | --- | --- | --- | --- | --- | --- | --- | --- |
| 330 | 1.2.5.3 | **Documentation** |  | 14d | 2009-08-03 A | 2009-08-20 A |  | 100% |  |  | 112h | 112h |
| 331 | 1.2.5.3.1 | Develop UPT installation & user guide for backwards compatible version |  | 5d | 2009-08-03 A | 2009-08-07 A | 309 | 100% | start no earlier than 2009-08-03 | Vijay | 40h | 40h |
| 332 | 1.2.5.3.2 | Update UPT users guide |  | 1d | 2009-08-10 A | 2009-08-10 A | 331 | 100% |  | Vijay | 8h | 8h |
| 333 | 1.2.5.3.3 | FAQ update on wiki |  | 2d | 2009-08-11 A | 2009-08-12 A | 332 | 100% |  | Vijay | 16h | 16h |
| 334 | 1.2.5.3.4 | Update CSM developers guide |  | 3d | 2009-08-13 A | 2009-08-17 A | 333 | 100% |  | Vijay | 24h | 24h |
| 335 | 1.2.5.3.5 | Wiki update |  | 2d | 2009-08-18 A | 2009-08-19 A | 334 | 100% |  | Vijay | 16h | 16h |
| 336 | 1.2.5.3.6 | Prepare release notes |  | 1d | 2009-08-20 A | 2009-08-20 A | 335 | 100% |  | Vijay | 8h | 8h |
| 337 | 1.2.5.4 | Download center & gforge update |  | 1d | 2009-08-21 A | 2009-08-21 A | 330 | 100% |  | Vijay | 8h | 8h |
| 338 | 1.2.5.5 | Release CSM 4.2 | milestone | 0d | 2009-08-25 A | 2009-08-25 A | 337 | 100% |  |  |  |  |
| 340 | 2 | **CSM 4.2.1** |  | 23.5d | 2008-10-06 A | 2008-11-06 A |  | 100% |  |  | 220h | 220h |
| 341 | 2.1 | **Production support** |  | 20d | 2008-10-06 A | 2008-10-31 A |  | 100% |  |  | 160h | 160h |
| 342 | 2.1.1 | EVS support |  | 2d | 2008-10-06 A | 2008-10-07 A |  | 100% | start no earlier than 2008-10-06 | Vijay | 16h | 16h |
| 343 | 2.1.2 | LSD support |  | 4d | 2008-10-08 A | 2008-10-13 A | 342 | 100% |  | Vijay | 32h | 32h |
| 344 | 2.1.3 | Arch FTF participation |  | 3d | 2008-10-14 A | 2008-10-16 A | 343 | 100% |  | Vijay | 24h | 24h |
| 345 | 2.1.4 | General support |  | 5d | 2008-10-17 A | 2008-10-23 A | 344 | 100% |  | Vijay | 40h | 40h |
| 346 | 2.1.5 | Emory support |  | 6d | 2008-10-24 A | 2008-10-31 A | 345 | 100% |  | Vijay | 48h | 48h |
| 347 | 2.2 | **4.2.1 Release** |  | 7.5d | 2008-10-28 A | 2008-11-06 A |  | 100% |  |  | 60h | 60h |
| 348 | 2.2.1 | Implement fix |  | 1d | 2008-10-28 A | 2008-10-28 A |  | 100% | start no earlier than 2008-10-28 | Vijay | 8h | 8h |
| 349 | 2.2.2 | Documentation update |  | 1d | 2008-10-29 A | 2008-10-29 A | 348 | 100% |  | Vijay | 8h | 8h |
| 350 | 2.2.3 | Release 4.2.1 to the LSD team | milestone | 0d | 2008-10-29 A | 2008-10-29 A | 349 | 100% |  | Vijay |  |  |
| 351 | 2.2.4 | Acceptance testing |  | 5d | 2008-10-30 A | 2008-11-05 A | 350 | 100% |  | LSD | 40h | 40h |
| 352 | 2.2.5 | Release 4.2.1 to the gforge |  | 0.5d | 2008-11-06 A | 2008-11-06 A | 351 | 100% |  | Vijay | 4h | 4h |
| 354 | 3 | **Workbench 0.1.1/SDK 4.2.1** |  | 47d | 2009-11-30 A | 2010-02-02 A |  | 100% |  |  | 832h | 832h |
| 355 | 3.1 | **Construction** |  | 45d | 2009-11-30 A | 2010-01-29 A |  | 100% |  |  | 800h | 800h |
| 356 | 3.1.1 | **Development** |  | 35d | 2009-11-30 A | 2010-01-15 A |  | 100% |  |  | 360h | 360h |
| 357 | 3.1.1.1 | Postgres support |  | 15d | 2009-11-30 A | 2009-12-18 A | 168 | 100% |  | Dan | 120h | 120h |
| 358 | 3.1.1.2 | Defect fixes |  | 10d | 2009-12-21 A | 2010-01-01 A | 357 | 100% |  | Dan; Santhosh | 160h | 160h |
| 359 | 3.1.1.3 | BDA Utils restructuring |  | 10d | 2010-01-04 A | 2010-01-15 A | 358 | 100% |  | Santhosh | 80h | 80h |

| ID | WBS | Task | Type | Duration | Start | Finish | Predecessors | Complete | Remaining | Total slack | Free slack | Constraint | Resources | Work | Actual work |
| --- | --- | --- | --- | --- | --- | --- | --- | --- | --- | --- | --- | --- | --- | --- | --- |
| 360 | 3.1.2 | **Testing** |  | 20d | 2010-01-04 A | 2010-01-29 A |  | 100% |  |  |  |  |  | 440h | 440h |
| 361 | 3.1.2.1 | Prepare test plan |  | 5d | 2010-01-04 A | 2010-01-08 A | 359 | 100% |  |  |  |  | Xiaoling | 40h | 40h |
| 362 | 3.1.2.2 | Perform functional test |  | 15d | 2010-01-11 A | 2010-01-29 A | 361 | 100% |  |  |  |  | Xiaoling | 120h | 120h |
| 363 | 3.1.2.3 | Provide test support |  | 15d | 2010-01-11 A | 2010-01-29 A | 362SS | 100% |  |  |  |  | Dan | 120h | 120h |
| 364 | 3.1.2.4 | Testing framework and code quality framework |  | 20d | 2010-01-04 A | 2010-01-29 A | 358 | 100% |  |  |  |  | Santhosh | 160h | 160h |
| 365 | 3.1.3 | Iteration complete | milestone | 0d | 2010-01-29 A | 2010-01-29 A | 356, 360 | 100% |  |  |  |  |  |  |  |
| 366 | 3.2 | **Transition** |  | 4d | 2010-01-28 A | 2010-02-02 A |  | 100% |  |  |  |  |  | 32h | 32h |
| 367 | 3.2.1 | Update documentation |  | 2d | 2010-01-28 A | 2010-01-29 A | 365FF | 100% |  |  |  |  | Dan | 16h | 16h |
| 368 | 3.2.2 | Prepare release notes |  | 1d | 2010-02-01 A | 2010-02-01 A | 367 | 100% |  |  |  |  | Dan | 8h | 8h |
| 369 | 3.2.3 | Update gforge site |  | 1d | 2010-02-02 A | 2010-02-02 A | 368 | 100% |  |  |  |  | Dan | 8h | 8h |
| 371 | 4 | **CLM 4.2.1** |  | 32d | 2010-01-25 A | 2010-03-09 |  | 48% | 16.7d | 48d |  |  |  | 184h | 88h |
| 372 | 4.1 | **Construction** |  | 30d | 2010-01-25 A | 2010-03-05 |  | 52% | 14.29d | 48d |  |  |  | 168h | 88h |
| 373 | 4.1.1 | Implement script changes for Oracle and Postgres support |  | 5d | 2010-01-25 A | 2010-01-29 A |  | 100% |  |  |  | start no earlier than 2010-01-25 | Vijay | 40h | 40h |
| 374 | 4.1.2 | Implement defect fix in CLM API |  | 3d | 2010-02-01 A | 2010-02-03 A | 373 | 100% |  |  |  |  | Vijay | 24h | 24h |
| 375 | 4.1.3 | Upgrade LLT to use new CLM API |  | 3d | 2010-02-04 A | 2010-02-08 A | 374 | 100% |  |  |  |  | Vijay | 24h | 24h |
| 376 | 4.1.4 | **Testing** |  | 5d | 2010-03-01 | 2010-03-05 |  |  |  | 48d |  |  |  | 80h |  |
| 377 | 4.1.4.1 | Execute test cases |  | 5d | 2010-03-01 | 2010-03-05 |  |  |  | 48d | 0d | start no earlier than 2010-03-01 | Aynur | 40h |  |
| 378 | 4.1.4.2 | Provide test support |  | 5d | 2010-03-01 | 2010-03-05 | 377SS |  |  | 48d | 0d |  | Vijay | 40h |  |
| 379 | 4.2 | **Transition** |  | 2d | 2010-03-08 | 2010-03-09 |  |  |  | 48d |  |  |  | 16h |  |
| 380 | 4.2.1 | Release CLM and LLT |  | 2d | 2010-03-08 | 2010-03-09 | 378 |  |  | 48d |  |  | Vijay | 16h |  |
| 382 | 5 | **CGMM 0.7** |  | 23d | 2010-03-02 | 2010-04-01 |  |  |  | 31d |  |  |  | 144h |  |
| 383 | 5.1 | **Construction** |  | 4d | 2010-03-02 | 2010-03-05 |  |  |  | 45d |  |  |  | 32h |  |
| 384 | 5.1.1 | Upgrade to caGrid 1.3 jars |  | 2d | 2010-03-02 | 2010-03-03 |  |  |  | 45d | 0d | start no earlier than 2010-03-02 | Vijay | 16h |  |
| 385 | 5.1.2 | Update BDA build script |  | 2d | 2010-03-04 | 2010-03-05 | 384 |  |  | 45d | 0d |  | Vijay | 16h |  |

| ID | WBS | Task | Duration | Start | Finish | Predecessors | Complete | Remaining | Total slack | Free slack | Constraint | Resources | Work | Actual work |
| --- | --- | --- | --- | --- | --- | --- | --- | --- | --- | --- | --- | --- | --- | --- |
| 386 | 5.2 | **Testing** | 5d | 2010-03-08 | 2010-03-12 |  |  |  | 45d |  |  |  | 80h |  |
| 387 | 5.2.1 | Execute test cases | 5d | 2010-03-08 | 2010-03-12 | 385 |  |  | 45d |  |  | Vijay | 40h |  |
| 388 | 5.2.2 | Provide test support | 5d | 2010-03-08 | 2010-03-12 | 385 |  |  | 45d |  |  | Vijay | 40h |  |
| 389 | 5.3 | **Transition** | 4d | 2010-03-29 | 2010-04-01 |  |  |  | 31d |  |  |  | 32h |  |
| 390 | 5.3.1 | Update Documentation | 2d | 2010-03-29 | 2010-03-30 |  |  |  | 31d | 0d | start no earlier than 2010-03-29 | Vijay | 16h |  |
| 391 | 5.3.2 | Release CGMM | 2d | 2010-03-31 | 2010-04-01 | 390 |  |  | 31d |  |  | Vijay | 16h |  |
| 392 | 6 | **Workbench 0.1.2/SDK 4.2.2** | 44d | 2010-02-01 A | 2010-04-01 |  | 14% | 37.62d | 31d |  |  |  | 552h | 80h |
| 393 | 6.1 | **Construction** | 35d | 2010-02-01 A | 2010-03-19 |  | 17% | 29.17d | 40d |  |  |  | 480h | 80h |
| 394 | 6.1.1 | **Development** | 35d | 2010-02-01 A | 2010-03-19 |  | 29% | 25d | 40d |  |  |  | 280h | 80h |
| 395 | 6.1.1.1 | Defect fixes | 10d | 2010-02-01 A | 2010-02-12 A | 365 | 100% |  |  |  |  | Santhosh | 80h | 80h |
| 396 | 6.1.1.2 | Implement changes needed for caGrid 1.4 integration | 10d | 2010-02-15 | 2010-02-26 | 395 |  |  | 15d | 0d |  | Santhosh | 80h |  |
| 397 | 6.1.1.3 | Code freeze/UAT | 10d | 2010-03-01 | 2010-03-12 | 396 |  |  | 40d | 0d |  | caGrid | 80h |  |
| 398 | 6.1.1.4 | Fix issues | 5d | 2010-03-15 | 2010-03-19 | 397 |  |  | 40d |  |  | Santhosh | 40h |  |
| 399 | 6.1.2 | **Testing** | 15d | 2010-03-01 | 2010-03-19 |  |  |  | 31d |  |  |  | 200h |  |
| 400 | 6.1.2.1 | Prepare test plan | 5d | 2010-03-01 | 2010-03-05 | 396 |  |  | 31d | 0d |  | Xiaoling | 40h |  |
| 401 | 6.1.2.2 | Perform functional test | 10d | 2010-03-08 | 2010-03-19 | 400 |  |  | 40d |  |  | Xiaoling | 80h |  |
| 402 | 6.1.2.3 | Provide test support | 10d | 2010-03-08 | 2010-03-19 | 400 |  |  | 31d | 0d |  | Santhosh | 80h |  |
| 403 | 6.2 | **Transition** | 9d | 2010-03-22 | 2010-04-01 |  |  |  | 31d |  |  |  | 72h |  |
| 404 | 6.2.1 | Update documentation | 3d | 2010-03-22 | 2010-03-24 | 402 |  |  | 31d | 0d |  | Santhosh | 24h |  |
| 405 | 6.2.2 | Prepare release notes | 1d | 2010-03-25 | 2010-03-25 | 404 |  |  | 31d | 0d |  | Santhosh | 8h |  |
| 406 | 6.2.3 | Perform release activities | 5d | 2010-03-26 | 2010-04-01 | 405 |  |  | 31d |  |  | Santhosh | 40h |  |
| 408 | 7 | **SDK/Workbench - ISO Datatype** | 52d | 2010-02-18 A | 2010-04-30 |  | 6% | 48.69d | 10d |  |  |  | 2136h | 56h |
| 409 | 7.1 | **Inception/Elaboration** | 8d | 2010-02-18 A | 2010-03-01 |  | 88% | 1d | 10d |  |  |  | 64h | 56h |
| 410 | 7.1.1 | Prepare short term scope document | 3d | 2010-02-18 A | 2010-02-22 A |  | 100% |  |  |  | start no earlier than 2010-02-18 | Satish | 24h | 24h |
| 411 | 7.1.2 | Prepare task plan | 1d | 2010-02-23 A | 2010-02-23 A |  | 100% |  |  |  |  |  | 8h | 8h |
| 412 | 7.1.3 | Planning the release activities | 2d | 2010-02-24 A | 2010-02-25 A |  | 100% |  |  |  |  |  | 16h | 16h |
| 413 | 7.1.4 | Prepare long term scope | 2d | 2010-02-26 A | 2010-03-01 |  | 50% | 1d | 10d | 0d |  | Satish | 16h | 8h |

| ID | WBS | Task | Type | Duration | Start | Finish | Predecessors | Complete | Remaining | Total slack | Free slack | Constraint | Resources | Work | Actual work |
| --- | --- | --- | --- | --- | --- | --- | --- | --- | --- | --- | --- | --- | --- | --- | --- |
| 414 | 7.2 | **Construction** |  | 34d | 2010-03-02 | 2010-04-16 |  |  |  | 10d |  |  |  | 1160h |  |
| 415 | 7.2.1 | Hibernate Usertype Framework |  | 4d | 2010-03-02 | 2010-03-05 | 413 |  |  | 10d | 0d |  | Satish | 32h |  |
| 416 | 7.2.2 | JAXB serialization framework |  | 4d | 2010-03-02 | 2010-03-05 | 413 |  |  | 40d | 0d |  | Prasad | 32h |  |
| 417 | 7.2.3 | SDK ISO datatype support enhancements |  | 4d | 2010-03-02 | 2010-03-05 | 413 |  |  | 10d | 0d |  | Santhosh | 32h |  |
| 418 | 7.2.4 | Hibernate Usertype implementation |  | 10d | 2010-03-08 | 2010-03-19 | 415, 417 |  |  | 10d | 0d |  | Santhosh; Satish | 160h |  |
| 419 | 7.2.5 | JAXB XML serialization implementation |  | 10d | 2010-03-08 | 2010-03-19 | 416 |  |  | 40d |  |  | Dan; Prasad | 160h |  |
| 420 | 7.2.6 | QBE Implementation |  | 10d | 2010-03-22 | 2010-04-02 | 418 |  |  | 27d | 0d |  | Vijay | 80h |  |
| 421 | 7.2.7 | Build script enhancement |  | 3d | 2010-04-05 | 2010-04-07 | 420 |  |  | 27d |  |  | Santhosh | 24h |  |
| 422 | 7.2.8 | Code generator enhancement |  | 10d | 2010-03-22 | 2010-04-02 | 418 |  |  | 30d |  |  | Satish; Santhosh; Dan | 240h |  |
| 423 | 7.2.9 | Generated system enhancement |  | 10d | 2010-03-22 | 2010-04-02 | 418 |  |  | 10d | 0d |  | Satish; Santhosh; Dan | 240h |  |
| 424 | 7.2.10 | Reference service project |  | 10d | 2010-04-05 | 2010-04-16 | 423 |  |  | 10d | 0d |  | Satish; Scott | 160h |  |
| 425 | 7.2.11 | Code baselined | milestone | 0d | 2010-04-16 | 2010-04-16 | 424 |  |  | 10d | 0d |  |  |  |  |
| 426 | 7.3 | **Testing** |  | 7d | 2010-04-19 | 2010-04-27 |  |  |  | 10d |  |  |  | 392h |  |
| 427 | 7.3.1 | QA Testing |  | 7d | 2010-04-19 | 2010-04-27 | 425 |  |  | 10d | 0d |  | Ye; Xiaoling | 112h |  |
| 428 | 7.3.2 | Test support |  | 7d | 2010-04-19 | 2010-04-27 | 427SS |  |  | 10d | 0d |  | Satish; Santhosh; Dan; Vijay; Prasad | 280h |  |
| 429 | 7.4 | **Transition** |  | 10d | 2010-04-19 | 2010-04-30 |  |  |  | 10d |  |  |  | 520h |  |
| 430 | 7.4.1 | Prepare user documentation |  | 10d | 2010-04-19 | 2010-04-30 | 425 |  |  | 10d |  |  | Satish; Santhosh; Dan; Vijay; Prasad | 400h |  |
| 431 | 7.4.2 | Release product |  | 3d | 2010-04-28 | 2010-04-30 | 428 |  |  | 10d |  |  | Satish; Santhosh; Dan; Vijay; Prasad | 120h |  |
| 434 | 8 | **5.0 Release** |  | 430d? | 2008-09-22 A | 2010-05-14 |  | 62% | 162.76d? | 0d |  |  |  | 2580h | 1576h |
| 435 | 8.1 | **Support** |  | 20d | 2009-10-06 A | 2009-11-02 A |  | 100% |  |  |  |  |  | 56h | 56h |
| 436 | 8.1.1 | **Management support** |  | 20d | 2009-10-06 A | 2009-11-02 A |  | 100% |  |  |  |  |  | 56h | 56h |
| 437 | 8.1.1.1 | Usability enhancement document |  | 2d | 2009-10-06 A | 2009-10-07 A |  | 100% |  |  |  | start no earlier than 2009-10-06 | Satish; Vijay | 32h | 32h |
| 438 | 8.1.1.2 | SOA based workbench presentation |  | 3d | 2009-10-29 A | 2009-11-02 A |  | 100% |  |  |  |  | Satish | 24h | 24h |
| 440 | 8.2 | **caCORE SDK 5.0** |  | 400d? | 2008-11-03 A | 2010-05-14 |  | 36% | 256.72d? | 0d |  |  |  | 512h | 192h |
| 441 | 8.2.1 | **Inception** |  | 14d | 2009-10-08 A | 2009-10-27 A |  | 100% |  |  |  |  |  | 112h | 112h |
| 442 | 8.2.1.1 | **Scope document preperation** |  | 14d | 2009-10-08 A | 2009-10-27 A |  | 100% |  |  |  |  |  | 112h | 112h |
| 443 | 8.2.1.1.1 | Prepare initial draft |  | 4d | 2009-10-08 A | 2009-10-13 A |  | 100% |  |  |  | start no earlier than 2009-10-08 | Satish | 32h | 32h |
| 444 | 8.2.1.1.2 | Internal review |  | 1d | 2009-10-14 A | 2009-10-14 A | 443 | 100% |  |  |  |  | Satish | 8h | 8h |
| 445 | 8.2.1.1.3 | Incorporate comments |  | 1d | 2009-10-15 A | 2009-10-15 A | 444 | 100% |  |  |  |  | Satish | 8h | 8h |
| 446 | 8.2.1.1.4 | Submit draft for NCICB review |  | 5d | 2009-10-16 A | 2009-10-22 A | 445 | 100% |  |  |  |  | Sichen | 40h | 40h |
| 447 | 8.2.1.1.5 | Update draft |  | 2d | 2009-10-23 A | 2009-10-26 A | 446 | 100% |  |  |  |  | Satish | 16h | 16h |
| 448 | 8.2.1.1.6 | Submit final version |  | 1d | 2009-10-27 A | 2009-10-27 A | 447 | 100% |  |  |  |  | Satish | 8h | 8h |

| ID | WBS | Task | Duration | Start | Finish | Predecessors | Complete | Remaining | Total slack | Constraint | Resources | Work | Actual work |
| --- | --- | --- | --- | --- | --- | --- | --- | --- | --- | --- | --- | --- | --- |
| 449 | 8.2.2 | **Elaboration** | 145d | 2009-10-26 A | 2010-05-14 |  | 20% | 116d | 0d |  |  | 400h | 80h |
| 450 | 8.2.2.1 | **Prototype** | 10d | 2009-10-26 A | 2009-11-06 A |  | 100% |  |  |  |  | 80h | 80h |
| 451 | 8.2.2.1.1 | Research Apache CXF | 10d | 2009-10-26 A | 2009-11-06 A |  | 100% |  |  | start no earlier than 2009-10-26 | Santhosh | 80h | 80h |
| 452 | 8.2.2.2 | **Research** | 40d | 2010-03-22 | 2010-05-14 |  |  |  | 0d |  |  | 320h |  |
| 454 | 8.2.2.2.1 | Prototype basic data types | 40d | 2010-03-22 | 2010-05-14 | 529, 528SS |  |  | 0d |  | Santhosh | 320h |  |
| 455 | 8.2.3 | **Construction** | 1d? | 2008-11-03 | 2008-11-03 |  |  |  | 399d |  |  |  |  |
| 456 | 8.2.3.1 | Iteration 1 | 1d? | 2008-11-03 | 2008-11-03 |  |  |  | 399d |  |  |  |  |
| 457 | 8.2.3.2 | Iteration 2 | 1d? | 2008-11-03 | 2008-11-03 |  |  |  | 399d |  |  |  |  |
| 458 | 8.2.3.3 | Iteration 3 | 1d? | 2008-11-03 | 2008-11-03 |  |  |  | 399d |  |  |  |  |
| 459 | 8.3 | **caCORE Workbench 0.2** | 271d? | 2008-11-03 A | 2009-11-16 |  | 80% | 55.2d? | 129d |  |  | 192h | 172h |
| 460 | 8.3.1 | **Inception** | 14d | 2009-10-28 A | 2009-11-16 A |  | 100% |  |  |  |  | 112h | 112h |
| 461 | 8.3.1.1 | **Scope document preperation** | 14d | 2009-10-28 A | 2009-11-16 A |  | 100% |  |  |  |  | 112h | 112h |
| 462 | 8.3.1.1.1 | Prepare initial draft | 4d | 2009-10-28 A | 2009-11-02 A | 446 | 100% |  |  |  | Satish | 32h | 32h |
| 463 | 8.3.1.1.2 | Internal review | 1d | 2009-11-03 A | 2009-11-03 A | 462 | 100% |  |  |  | Satish | 8h | 8h |
| 464 | 8.3.1.1.3 | Incorporate comments | 1d | 2009-11-04 A | 2009-11-04 A | 463 | 100% |  |  |  | Satish | 8h | 8h |
| 465 | 8.3.1.1.4 | Submit draft for NCICB review | 5d | 2009-11-05 A | 2009-11-11 A | 464 | 100% |  |  |  | Sichen | 40h | 40h |
| 466 | 8.3.1.1.5 | Update draft | 2d | 2009-11-12 A | 2009-11-13 A | 465 | 100% |  |  |  | Satish | 16h | 16h |
| 467 | 8.3.1.1.6 | Submit final version | 1d | 2009-11-16 A | 2009-11-16 A | 466 | 100% |  |  |  | Satish | 8h | 8h |
| 468 | 8.3.2 | **Elaboration** | 10d | 2009-10-29 A | 2009-11-11 |  | 75% | 2.5d | 132d |  |  | 80h | 60h |
| 469 | 8.3.2.1 | **Prototype** | 10d | 2009-10-29 A | 2009-11-11 |  | 75% | 2.5d | 132d |  |  | 80h | 60h |
| 470 | 8.3.2.1.1 | Research Eclipse plugin | 10d | 2009-10-29 A | 2009-11-11 |  | 75% | 2.5d | 132d |  | Dan | 80h | 60h |
| 471 | 8.3.3 | **Construction** | 1d? | 2008-11-03 | 2008-11-03 |  |  |  | 399d |  |  |  |  |
| 472 | 8.3.3.1 | Iteration 1 | 1d? | 2008-11-03 | 2008-11-03 |  |  |  | 399d |  |  |  |  |
| 473 | 8.3.3.2 | Iteration 2 | 1d? | 2008-11-03 | 2008-11-03 |  |  |  | 399d |  |  |  |  |
| 474 | 8.3.3.3 | Iteration 3 | 1d? | 2008-11-03 | 2008-11-03 |  |  |  | 399d |  |  |  |  |

| ID | WBS | Task | Duration | Start | Finish | Predecessors | Complete | Total slack | Free slack | Constraint | Resources | Work | Actual work |
| --- | --- | --- | --- | --- | --- | --- | --- | --- | --- | --- | --- | --- | --- |
| 475 | 8.4 | **XMI Handler 2.0** | 9d | 2009-11-12 | 2009-11-24 |  |  | 123d |  |  |  | 72h |  |
| 476 | 8.4.1 | **Inception** | 9d | 2009-11-12 | 2009-11-24 |  |  | 123d |  |  |  | 72h |  |
| 477 | 8.4.1.1 | **Scope document preperation** | 9d | 2009-11-12 | 2009-11-24 |  |  | 123d |  |  |  | 72h |  |
| 478 | 8.4.1.1.1 | Prepare initial draft | 2d | 2009-11-12 | 2009-11-13 | 465 |  | 123d | 0d |  | Satish | 16h |  |
| 479 | 8.4.1.1.2 | Internal review | 1d | 2009-11-16 | 2009-11-16 | 478 |  | 123d | 0d |  | Satish | 8h |  |
| 480 | 8.4.1.1.3 | Incorporate comments | 1d | 2009-11-17 | 2009-11-17 | 479 |  | 123d | 0d |  | Satish | 8h |  |
| 481 | 8.4.1.1.4 | Submit draft for NCICB review | 5d | 2009-11-18 | 2009-11-24 | 480 |  | 123d |  |  | Sichen | 40h |  |
| 482 | 8.5 | **CSM 5.0** | 67d | 2009-10-05 A | 2010-01-05 A |  | 100% |  |  |  |  | 576h | 576h |
| 483 | 8.5.1 | **Inception** | 54d | 2009-10-05 A | 2009-12-17 A |  | 100% |  |  |  |  | 200h | 200h |
| 484 | 8.5.1.1 | **Scope document preperation** | 54d | 2009-10-05 A | 2009-12-17 A |  | 100% |  |  |  |  | 200h | 200h |
| 485 | 8.5.1.1.1 | Prepare initial draft | 5d | 2009-10-05 A | 2009-10-09 A |  | 100% |  |  | start no earlier than 2009-10-05 | Satish; Vijay | 80h | 80h |
| 486 | 8.5.1.1.2 | Internal review | 1d | 2009-10-12 A | 2009-10-12 A | 485 | 100% |  |  |  | Vijay | 8h | 8h |
| 487 | 8.5.1.1.3 | Incorporate comments | 1d | 2009-10-13 A | 2009-10-13 A | 486 | 100% |  |  |  | Vijay | 8h | 8h |
| 488 | 8.5.1.1.4 | Submit draft for NCICB review | 10d | 2009-10-14 A | 2009-10-27 A | 487 | 100% |  |  |  | Sichen | 80h | 80h |
| 489 | 8.5.1.1.5 | Update draft | 2d | 2009-12-15 A | 2009-12-16 A |  | 100% |  |  | start no earlier than 2009-12-15 | Vijay | 16h | 16h |
| 490 | 8.5.1.1.6 | Submit final version | 1d | 2009-12-17 A | 2009-12-17 A | 489 | 100% |  |  |  | Satish | 8h | 8h |
| 491 | 8.5.2 | **Elaboration** | 47d | 2009-11-02 A | 2010-01-05 A |  | 100% |  |  |  |  | 376h | 376h |
| 492 | 8.5.2.1 | **Technology Research** | 30d | 2009-11-02 A | 2009-12-11 A |  | 100% |  |  |  |  | 240h | 240h |
| 493 | 8.5.2.1.1 | Research candidate technologies | 10d | 2009-11-02 A | 2009-11-13 A | 490 | 100% |  |  |  | Vijay | 80h | 80h |
| 494 | 8.5.2.1.2 | Prepare presentation | 2d | 2009-11-16 A | 2009-11-17 A | 493 | 100% |  |  |  | Vijay | 16h | 16h |
| 495 | 8.5.2.1.3 | Internal review | 1d | 2009-11-18 A | 2009-11-18 A | 494 | 100% |  |  |  | Vijay | 8h | 8h |
| 496 | 8.5.2.1.4 | Prototype candidate security framework | 15d | 2009-11-19 A | 2009-12-09 A | 495 | 100% |  |  |  | Vijay | 120h | 120h |
| 497 | 8.5.2.1.5 | Update presentation | 2d | 2009-12-10 A | 2009-12-11 A | 496 | 100% |  |  |  | Vijay | 16h | 16h |
| 498 | 8.5.2.2 | **Usability Enhancements** | 17d | 2009-12-14 A | 2010-01-05 A |  | 100% |  |  |  |  | 136h | 136h |
| 499 | 8.5.2.2.1 | Research improvement areas | 15d | 2009-12-14 A | 2010-01-01 A | 497 | 100% |  |  |  | Vijay | 120h | 120h |
| 500 | 8.5.2.2.2 | Prepare presentation | 2d | 2010-01-04 A | 2010-01-05 A | 499 | 100% |  |  |  | Vijay | 16h | 16h |

| ID | WBS | Task | Duration | Start | Finish | Predecessors | Complete | Remaining | Total slack | Constraint | Resources | Work | Actual work |
| --- | --- | --- | --- | --- | --- | --- | --- | --- | --- | --- | --- | --- | --- |
| 501 | 8.6 | **CLM 5.0** | 108d | 2009-10-28 A | 2010-03-26 |  | 91% | 10.19d | 35d |  |  | 332h | 292h |
| 502 | 8.6.1 | **Inception** | 15d | 2009-10-28 A | 2009-11-17 A |  | 100% |  |  |  |  | 160h | 160h |
| 503 | 8.6.1.1 | **Scope document preperation** | 15d | 2009-10-28 A | 2009-11-17 A |  | 100% |  |  |  |  | 160h | 160h |
| 504 | 8.6.1.1.1 | Prepare initial draft | 5d | 2009-10-28 A | 2009-11-03 A | 488 | 100% |  |  | start no earlier than 2009-10-05 | Satish; Vijay | 80h | 80h |
| 505 | 8.6.1.1.2 | Internal review | 1d | 2009-11-04 A | 2009-11-04 A | 504 | 100% |  |  |  | Vijay | 8h | 8h |
| 506 | 8.6.1.1.3 | Incorporate comments | 1d | 2009-11-05 A | 2009-11-05 A | 505 | 100% |  |  |  | Vijay | 8h | 8h |
| 507 | 8.6.1.1.4 | Submit draft for NCICB review | 5d | 2009-11-06 A | 2009-11-12 A | 506 | 100% |  |  |  | Sichen | 40h | 40h |
| 508 | 8.6.1.1.5 | Update draft | 2d | 2009-11-13 A | 2009-11-16 A | 507 | 100% |  |  |  | Vijay | 16h | 16h |
| 509 | 8.6.1.1.6 | Submit final version | 1d | 2009-11-17 A | 2009-11-17 A | 508 | 100% |  |  |  | Satish | 8h | 8h |
| 510 | 8.6.2 | **Elaboration** | 58d | 2010-01-06 A | 2010-03-26 |  | 87% | 7.63d | 35d |  |  | 172h | 132h |
| 511 | 8.6.2.1 | **Requirements analysis/Design** | 58d | 2010-01-06 A | 2010-03-26 |  | 87% | 7.63d | 35d |  |  | 172h | 132h |
| 512 | 8.6.2.1.1 | Prepare list of initial requirements | 4d | 2010-01-06 A | 2010-01-11 A |  | 100% |  |  | start no earlier than 2010-01-06 | Prasad [50%] | 16h | 16h |
| 513 | 8.6.2.1.2 | Prepare functional specifications | 14d | 2010-01-12 A | 2010-01-29 A | 512 | 100% |  |  |  | Prasad [50%] | 56h | 56h |
| 514 | 8.6.2.1.3 | Review Functional specification | 5d | 2010-02-01 A | 2010-02-05 A | 513 | 100% |  |  |  | Prasad [50%] | 20h | 20h |
| 515 | 8.6.2.1.4 | Update requirements and functional specification | 10d | 2010-02-08 A | 2010-02-19 A | 514 | 100% |  |  |  | Prasad [50%] | 40h | 40h |
| 516 | 8.6.2.1.5 | Review design specifications | 5d | 2010-03-22 | 2010-03-26 | 531 |  |  | 35d |  | Prasad | 40h |  |
| 518 | 8.7 | **CGMM 1.0** | 373d? | 2008-09-22 A | 2010-02-24 |  | 91% | 33.91d? | 12d |  |  | 160h | 160h |
| 520 | 8.7.1 | **WebSSO 1.4** | 373d? | 2008-09-22 A | 2010-02-24 |  | 95% | 17.76d? | 12d |  |  | 160h | 160h |
| 521 | 8.7.1.1 | **Inception** | 10d | 2008-09-22 A | 2008-10-03 A |  | 100% |  |  |  |  | 80h | 80h |
| 522 | 8.7.1.1.1 | Research and prototype | 10d | 2008-09-22 A | 2008-10-03 A |  | 100% |  |  | start no earlier than 2008-09-22 | Santhosh | 80h | 80h |
| 523 | 8.7.1.2 | **TBD** | 322d? | 2008-12-02 A | 2010-02-24 |  | 91% | 29.27d? | 12d |  |  | 80h | 80h |
| 525 | 8.7.1.2.1 | Research/Support | 10d | 2008-12-02 A | 2008-12-15 A | 529 | 100% |  |  |  | Santhosh | 80h | 80h |
| 526 | 8.8 | **caFramework** | 385d? | 2008-11-03 | 2010-04-23 |  |  |  | 15d |  |  | 320h |  |
| 527 | 8.8.1 | TBD | 1d? | 2008-11-03 | 2008-11-03 |  |  |  | 399d |  |  |  |  |
| 528 | 8.8.2 | Research ISO 21079 Specification | 40d | 2010-03-01 | 2010-04-23 | 396 |  |  | 15d | start no earlier than 2008-11-17 | Satish | 320h |  |

| ID | WBS | Task | Duration | Start | Finish | Predecessors | Complete | Remaining | Total slack | Constraint | Resources | Work | Actual work |
| --- | --- | --- | --- | --- | --- | --- | --- | --- | --- | --- | --- | --- | --- |
| 529 | 8.9 | **Defect fixes** | 25d | 2010-02-15 A | 2010-03-19 |  | 47% | 13.33d | 0d |  | Santhosh | 360h | 128h |
| 530 | 8.9.1 | **Construction** | 25d | 2010-02-15 A | 2010-03-19 |  | 47% | 13.33d | 0d |  |  | 160h | 96h |
| 531 | 8.9.1.1 | Prepare design specification | 20d | 2010-02-22 A | 2010-03-19 | 515 | 20% | 16d | 0d |  | Prasad [50%] | 80h | 16h |
| 532 | 8.9.1.2 | CGMM Support for CTRP | 10d | 2010-02-15 A | 2010-02-26 A |  | 100% |  |  | start no earlier than 2010-02-15 | Vijay | 80h | 80h |
